Activity ID,Activity Name,Original Duration,wbs_id,pred_list,pred_details,succ_list,succ_details,start_date,end_date,Duration
HC-GN-0010,Issue ICR-Planning Package,8,P2543-R01-Oct24..1.PM.2,ML1002,ML1002: FS 4,"HC-GN-0190, HC-GN-0070, HC-GN-0020","HC-GN-0190: FS, HC-GN-0070: SS, HC-GN-0020: FS",2023-07-31 00:00:00,2023-08-10 00:00:00,10
HC-GN-0020,Receive Company Comments-Planning Package,7,P2543-R01-Oct24..1.PM.2,HC-GN-0010,HC-GN-0010: FS,HC-GN-0030,HC-GN-0030: FS,2023-08-06 00:00:00,2023-08-16 00:00:00,10
HC-GN-0030,Re-Issue for Approval-Planning Package,4,P2543-R01-Oct24..1.PM.2,HC-GN-0020,HC-GN-0020: FS,HC-GN-0040,HC-GN-0040: FS,2023-08-20 00:00:00,2023-08-25 00:00:00,5
HC-GN-0040,Obtain Company Approval-Planning Package,5,P2543-R01-Oct24..1.PM.2,HC-GN-0030,HC-GN-0030: FS,HC-GN-0050,HC-GN-0050: FS,2023-08-26 00:00:00,2023-09-04 00:00:00,9
HC-GN-0050,Final Issue for Design/ Construction-Planning Package,43,P2543-R01-Oct24..1.PM.2,HC-GN-0040,HC-GN-0040: FS,"HE-WS-0030, ML1002-A02, CAB-5300","HE-WS-0030: FS, ML1002-A02: FS, CAB-5300: FS",2023-08-28 00:00:00,2023-10-26 00:00:00,59
HC-GN-0070,"Issue ICR-Project Procedure (PEP, Numbering Procedure etc.)",21,P2543-R01-Oct24..1.PM.3,HC-GN-0010,HC-GN-0010: SS,HC-GN-0080,HC-GN-0080: FS,2023-07-24 00:00:00,2023-08-22 00:00:00,29
HC-GN-0080,"Receive Company Comments-Project Procedure (PEP, Numbering Procedure etc.)",36,P2543-R01-Oct24..1.PM.3,HC-GN-0070,HC-GN-0070: FS,HC-GN-0090,HC-GN-0090: FS,2023-08-21 00:00:00,2023-10-10 00:00:00,50
HC-GN-0090,"Re-Issue for Approval-Project Procedure (PEP, Numbering Procedure etc.)",127,P2543-R01-Oct24..1.PM.3,HC-GN-0080,HC-GN-0080: FS,HC-GN-0100,HC-GN-0100: FS,2023-09-10 00:00:00,2024-03-08 00:00:00,180
HC-GN-0100,"Obtain Company Approval-Project Procedure (PEP, Numbering Procedure etc.)",125,P2543-R01-Oct24..1.PM.3,HC-GN-0090,HC-GN-0090: FS,"ML1003-A03, HC-GN-0110","ML1003-A03: FF, HC-GN-0110: FS",2023-09-20 00:00:00,2024-03-17 00:00:00,179
HC-GN-0110,"Final Issue for Design/ Construction-Project Procedure (PEP, Numbering Procedure)",14,P2543-R01-Oct24..1.PM.3,HC-GN-0100,HC-GN-0100: FS,"HE-WS-0030, ML1001-A01, CAB-5300","HE-WS-0030: FS, ML1001-A01: FS, CAB-5300: FS",2024-03-18 00:00:00,2024-04-13 00:00:00,26
HE-WS-0070,Lesson Learned Workshop,0,P2543-R01-Oct24..1.PM.12,ML1002,ML1002: SS 45,HE-WS-0010,HE-WS-0010: FS 15,2023-08-31 00:00:00,2023-08-31 00:00:00,1
HE-WS-0010,Project Risk Review Workshop,0,P2543-R01-Oct24..1.PM.12,"HE-SS-0020, HE-WS-0070","HE-SS-0020: FS 15, HE-WS-0070: FS 15","HE-WS-0050, HE-RR-0010, C-COM-790, CAB-5290","HE-WS-0050: FS, HE-RR-0010: FS, C-COM-790: FS, CAB-5290: FS",2023-09-28 00:00:00,2023-09-28 00:00:00,1
HE-WS-0030,Design Review Workshop,1,P2543-R01-Oct24..1.PM.12,"HC-GN-0110, ML1002-A02, HE-PI-0320, HE-PI-0390, HE-PI-0460, HE-PR-0110, ML1005-B01, HE-PI-0530, HC-GN-0050, HE-WS-0090, ML1002","HC-GN-0110: FS, ML1002-A02: FS, HE-PI-0320: FS, HE-PI-0390: FS, HE-PI-0460: FS, HE-PR-0110: FS, ML1005-B01: FS, HE-PI-0530: FS, HC-GN-0050: FS, HE-WS-0090: FS, ML1002: SS","ML1219-B19, HE-PR-1130, HE-PI-0170, HE-PR-0870, HE-PR-0450, HE-PR-0570, HE-PR-1280, HE-PR-1330, HE-PR-1380, HE-PR-1430, HE-PR-1480, HE-PR-1530, HE-PR-1580, ML1012-B06, HE-PR-0250, HE-WS-0210, HE-HS-0970, HE-PI-0150, HE-HS-0670, HE-WS-0050, HE-HS-0490, HE-P","ML1219-B19: FF, HE-PR-1130: FS, HE-PI-0170: FS, HE-PR-0870: FS, HE-PR-0450: FS, HE-PR-0570: FS, HE-PR-1280: FS, HE-PR-1330: FS, HE-PR-1380: FS, HE-PR-1430: FS, HE-PR-1480: FS, HE-PR-1530: FS, HE-PR-1580: FS, ML1012-B06: FS, HE-PR-0250: FS, HE-WS-0210: FS,",2023-10-09 00:00:00,2023-10-10 00:00:00,1
HE-WS-0090,Plot Plan Layout Review Workshop,1,P2543-R01-Oct24..1.PM.12,"HE-PI-0320, HE-PI-0390, HE-PI-0460, HE-PI-0530","HE-PI-0320: FS, HE-PI-0390: FS, HE-PI-0460: FS, HE-PI-0530: FS","HE-EL-0490, HE-WS-0030","HE-EL-0490: FS, HE-WS-0030: FS",2023-10-24 00:00:00,2023-10-25 00:00:00,1
HE-WS-0020,HAZID /ENVID/OHID/ PHSER Workshop,2,P2543-R01-Oct24..1.PM.12,"HS-GN-0110, HE-PI-0470, HE-DB-0020, HE-PI-0330, HE-HS-0140, HE-PR-0050, HE-HS-0130, HE-PI-0540, HE-PI-0400, HE-HS-0080, HE-PR-1250","HS-GN-0110: FS, HE-PI-0470: FS, HE-DB-0020: FS, HE-PI-0330: FS, HE-HS-0140: FS, HE-PR-0050: FS, HE-HS-0130: FS, HE-PI-0540: FS, HE-PI-0400: FS, HE-HS-0080: FS, HE-PR-1250: FS","HE-HS-0970, HE-HS-0670, HE-WS-0050, HE-HS-0490, HE-PI-0130, C-COM-790, CAB-5290, HE-HS-0550, HE-PI-0150","HE-HS-0970: FS, HE-HS-0670: FS, HE-WS-0050: FS, HE-HS-0490: FS, HE-PI-0130: FS, C-COM-790: FS, CAB-5290: FS, HE-HS-0550: FS, HE-PI-0150: FS",2023-10-31 00:00:00,2023-11-02 00:00:00,2
HE-WS-0210,HAZOP Workshop,2,P2543-R01-Oct24..1.PM.12,"HE-PR-0040, HE-PR-1240, HE-PR-1250, HE-PR-0060, HE-WS-0030, HE-PR-0130, HE-HS-0230","HE-PR-0040: FS, HE-PR-1240: FS, HE-PR-1250: FS, HE-PR-0060: FS, HE-WS-0030: FS, HE-PR-0130: FS 5, HE-HS-0230: FS","ML2059-B05, HE-WS-0310, HE-HS-0490, HE-HS-0670","ML2059-B05: FF, HE-WS-0310: FS, HE-HS-0490: FS, HE-HS-0670: FS",2023-11-21 00:00:00,2023-11-23 00:00:00,2
HE-WS-0190,Bow Tie Workshop,1,P2543-R01-Oct24..1.PM.12,HE-WS-0310,HE-WS-0310: FS 2,"HE-HS-0490, HE-WS-0200","HE-HS-0490: FS, HE-WS-0200: FS",2023-11-23 00:00:00,2023-11-24 00:00:00,1
HE-WS-0200,ALARP Workshop,1,P2543-R01-Oct24..1.PM.12,"HE-WS-0190, HE-RR-0050","HE-WS-0190: FS, HE-RR-0050: FS","HE-HS-0490, HE-WS-0170","HE-HS-0490: FF, HE-WS-0170: FS 30",2023-11-23 00:00:00,2023-11-24 00:00:00,1
HE-WS-0310,CRAS Workshop,1,P2543-R01-Oct24..1.PM.12,"HE-WS-0210, HE-CP-0030, HE-CP-220","HE-WS-0210: FS, HE-CP-0030: FS, HE-CP-220: FS",HE-WS-0190,HE-WS-0190: FS 2,2023-11-23 00:00:00,2023-11-24 00:00:00,1
HE-WS-0050,Constructability Review Workshop,2,P2543-R01-Oct24..1.PM.12,"HE-PR-0040, HE-PR-1240, HE-PR-1250, HE-PR-0060, HE-PR-0130, HE-HS-0190, HE-WS-0020, HE-WS-0030, HS-GN-0110, HE-PR-0850, HE-PI-0320, HE-WS-0010, HE-HS-0070, HE-PI-0390, HE-PI-0530, HE-HS-0010, HE-PI-0460","HE-PR-0040: FS, HE-PR-1240: FS, HE-PR-1250: FS, HE-PR-0060: FS, HE-PR-0130: FS, HE-HS-0190: FS, HE-WS-0020: FS, HE-WS-0030: FS, HS-GN-0110: FS, HE-PR-0850: FS, HE-PI-0320: FS, HE-WS-0010: FS, HE-HS-0070: FS, HE-PI-0390: FS, HE-PI-0530: FS, HE-HS-0010: FS,","HE-HS-0510, HE-ST-0010, C-COM-790, CAB-5290","HE-HS-0510: FS, HE-ST-0010: FS, C-COM-790: FS, CAB-5290: FS",2024-05-14 00:00:00,2024-05-16 00:00:00,2
HC-GN-300,Issue ICR-Smart Plant,124,P2543-R01-Oct24..1.PM.1,ML1002,ML1002: SS 30,HC-GN-310,HC-GN-310: FS,2023-08-18 00:00:00,2024-02-09 17:30:00,175
HC-GN-310,Receive Company Comments-Smart Plant,113,P2543-R01-Oct24..1.PM.1,HC-GN-300,HC-GN-300: FS,HC-GN-320,HC-GN-320: FS,2023-09-18 07:30:00,2024-02-23 17:30:00,158
HC-GN-320,Re-Issue for Approval-Smart Plant,84,P2543-R01-Oct24..1.PM.1,HC-GN-310,HC-GN-310: FS,HC-GN-330,HC-GN-330: FS,2023-11-10 07:30:00,2024-03-08 17:30:00,119
HC-GN-330,Obtain Company Approval-Smart Plant,85,P2543-R01-Oct24..1.PM.1,HC-GN-320,HC-GN-320: FS,HC-GN-290,HC-GN-290: FS,2023-11-22 07:30:00,2024-03-22 17:30:00,121
HC-GN-290,Final Issue for Design/ Construction-Smart Plant,85,P2543-R01-Oct24..1.PM.1,HC-GN-330,HC-GN-330: FS,CAB-5290,CAB-5290: FS,2023-12-15 07:30:00,2024-04-22 17:30:00,129
HC-GN-0190,Issue ICR-QAQC procedure,53,P2543-R01-Oct24..1.PM.6,HC-GN-0010,HC-GN-0010: FS,HC-GN-0200,HC-GN-0200: FS,2023-08-07 00:00:00,2023-10-19 00:00:00,73
HC-GN-0200,Receive Company Comments-QAQC procedure,11,P2543-R01-Oct24..1.PM.6,HC-GN-0190,HC-GN-0190: FS,HC-GN-0210,HC-GN-0210: FS,2023-10-20 00:00:00,2023-11-05 00:00:00,16
HC-GN-0210,Re-Issue for Approval-QAQC procedure,81,P2543-R01-Oct24..1.PM.6,HC-GN-0200,HC-GN-0200: FS,HC-GN-0220,HC-GN-0220: FS,2023-11-07 00:00:00,2024-03-01 00:00:00,115
HC-GN-0220,Obtain Company Approval-QAQC procedure,9,P2543-R01-Oct24..1.PM.6,HC-GN-0210,HC-GN-0210: FS,HC-GN-0230,HC-GN-0230: FS,2024-03-04 00:00:00,2024-03-17 00:00:00,13
HC-GN-0230,Final Issue for Design/ Construction-Quality documents,21,P2543-R01-Oct24..1.PM.6,HC-GN-0220,HC-GN-0220: FS,"ML1001-A01, CAB-5300","ML1001-A01: FS, CAB-5300: FS",2024-03-18 00:00:00,2024-04-24 00:00:00,37
HC-GN-340,Issue ICR-Hot Tap SOW,7,P2543-R01-Oct24..1.PM.7,HE-PL-0430,HE-PL-0430: FS,HC-GN-350,HC-GN-350: FS,2023-11-01 00:00:00,2023-11-10 00:00:00,9
HC-GN-350,Receive Company Comments-Hot Tap SOW,7,P2543-R01-Oct24..1.PM.7,HC-GN-340,HC-GN-340: FS,HC-GN-360,HC-GN-360: FS,2023-11-13 00:00:00,2023-11-22 00:00:00,9
HC-GN-360,Re-Issue for Approval-Hot Tap SOW,74,P2543-R01-Oct24..1.PM.7,HC-GN-350,HC-GN-350: FS,HC-GN-370,HC-GN-370: FS,2023-11-23 00:00:00,2024-03-08 00:00:00,106
HC-GN-370,Obtain Company Approval-Hot Tap SOW,9,P2543-R01-Oct24..1.PM.7,HC-GN-360,HC-GN-360: FS,HC-GN-380,HC-GN-380: FS,2024-03-10 00:00:00,2024-03-25 00:00:00,15
HC-GN-380,Final Issue for Design/ Construction-Hot Tap SOW,2,P2543-R01-Oct24..1.PM.7,HC-GN-370,HC-GN-370: FS,"HE-PL-1370, C-COM-750","HE-PL-1370: FS, C-COM-750: FS",2024-03-26 00:00:00,2024-03-29 00:00:00,3
HE-SS-0010,Data Acquisition,24,P2543-R01-Oct24..1.EN.2,ML1002,ML1002: FS,"HE-SV-0010, HE-SS-0020","HE-SV-0010: FS, HE-SS-0020: SS 10",2023-08-17 00:00:00,2023-09-20 00:00:00,34
HE-SS-0020,Site Visit,27,P2543-R01-Oct24..1.EN.2,"ML1002, HE-SS-0010","ML1002: FS, HE-SS-0010: SS 10","HE-PL-0130, HE-PL-0190, HE-SV-0010, HE-WS-0010","HE-PL-0130: FS 20, HE-PL-0190: FS 20, HE-SV-0010: FS, HE-WS-0010: FS 15",2023-08-22 00:00:00,2023-09-28 00:00:00,37
HE-SS-0040,Geo Technical Survey,46,P2543-R01-Oct24..1.EN.2,"ML1007-B02, HS-GN-0170","ML1007-B02: FS, HS-GN-0170: FS","HE-GS-0010, HE-GS-90, HE-GS-140, HE-GS-190","HE-GS-0010: FS, HE-GS-90: FS, HE-GS-140: FS, HE-GS-190: FS",2023-11-15 00:00:00,2024-01-22 00:00:00,68
HE-SS-0030,Topographical Survey,112,P2543-R01-Oct24..1.EN.2,"HS-GN-0170, ML1007-B02","HS-GN-0170: FS, ML1007-B02: FS","HS-CN-0160, HE-TS-0010, HE-TS-230, HE-TS-280, HE-TS-330, C-56-PL-607-CI-1000, C-56-EB2-CI-1000, C-56-G-HT-CI-1000, C-56-HC01-PL-CI-2400, C-56-PR-838-CI-1000, C-56-591-01-CI-1000, C-52-HG01-PL-CI-2400, C-52-598-06-CI-1000, C-52-598-05-CI-1000, C-52-598-04-C","HS-CN-0160: SS, HE-TS-0010: FS, HE-TS-230: FS, HE-TS-280: FS, HE-TS-330: FS, C-56-PL-607-CI-1000: SS, C-56-EB2-CI-1000: SS, C-56-G-HT-CI-1000: SS, C-56-HC01-PL-CI-2400: SS, C-56-PR-838-CI-1000: SS, C-56-591-01-CI-1000: SS, C-52-HG01-PL-CI-2400: SS, C-52-59",2023-09-15 00:00:00,2024-02-22 00:00:00,160
HE-SV-0010,Issue ICR - Site Visit /Survey Report,29,P2543-R01-Oct24..1.EN.2.1,"HE-SS-0010, HE-SS-0020","HE-SS-0010: FS, HE-SS-0020: FS",HE-SV-0020,HE-SV-0020: FF 10,2023-11-10 00:00:00,2023-12-21 17:30:00,41
HE-SV-0020,Receive Company Comments- - Site Visit /Survey Report,62,P2543-R01-Oct24..1.EN.2.1,HE-SV-0010,HE-SV-0010: FF 10,HE-SV-0030,HE-SV-0030: FF 10,2023-11-13 00:00:00,2024-02-08 17:30:00,87
HE-SV-0030,Re-Issue for Approval - Site Visit /Survey Report,13,P2543-R01-Oct24..1.EN.2.1,HE-SV-0020,HE-SV-0020: FF 10,HE-SV-0040,HE-SV-0040: FF 10,2024-05-31 07:30:00,2024-06-21 17:30:00,21
HE-SV-0040,Obtain Company Approval - Site Visit /Survey Report,43,P2543-R01-Oct24..1.EN.2.1,HE-SV-0030,HE-SV-0030: FF 10,HE-SV-0050,HE-SV-0050: FF 10,2024-06-22 07:30:00,2024-08-22 17:30:00,61
HE-RR-0010,Issue ICR- Project Risk review register,1,P2543-R01-Oct24..1.EN.2.6,HE-WS-0010,HE-WS-0010: FS,HE-RR-0020,HE-RR-0020: FS,2023-09-27 00:00:00,2023-09-28 00:00:00,1
HE-RR-0020,Receive Company Comments-Project Risk review register,2,P2543-R01-Oct24..1.EN.2.6,HE-RR-0010,HE-RR-0010: FS,HE-RR-0030,HE-RR-0030: FS,2023-09-29 00:00:00,2023-10-03 00:00:00,4
HE-RR-0030,Re-Issue for Approval-Project Risk review register,11,P2543-R01-Oct24..1.EN.2.6,HE-RR-0020,HE-RR-0020: FS,HE-RR-0040,HE-RR-0040: FS,2023-10-04 00:00:00,2023-10-19 00:00:00,15
HE-RR-0040,Obtain Company Approval-Project Risk review register,7,P2543-R01-Oct24..1.EN.2.6,HE-RR-0030,HE-RR-0030: FS,HE-RR-0050,HE-RR-0050: FS,2023-10-20 00:00:00,2023-10-31 00:00:00,11
HE-RR-0050,Final Issue for Design/ Construction-Project Risk Review Register,9,P2543-R01-Oct24..1.EN.2.6,HE-RR-0040,HE-RR-0040: FS,"C-COM-750, ML1219-B29, CAB-5290, HE-WS-0200","C-COM-750: FS, ML1219-B29: FF, CAB-5290: FS, HE-WS-0200: FS",2023-11-02 00:00:00,2023-11-15 00:00:00,13
HE-TS-0010,Issue ICR-Topographical Survey Report (Overall),23,P2543-R01-Oct24..1.EN.2.2,HE-SS-0030,HE-SS-0030: FS,"HE-PL-3580, HE-PL-3530, HE-PL-0250, HE-PL-0190, HE-PL-0130, HE-CS-0430, HE-PI-0350, HE-PI-0560, HE-PL-2750, HE-PI-0420, HE-CS-0490, HE-PL-2570, HE-PL-0210, HE-PL-2690, HE-PL-2450, HE-PI-0490, HE-PL-0270, HE-PL-2630, HE-PL-2510, HE-PL-0150, HE-PL-2390, HE-T","HE-PL-3580: FS, HE-PL-3530: FS 60, HE-PL-0250: FS, HE-PL-0190: FS, HE-PL-0130: FS, HE-CS-0430: FS, HE-PI-0350: FS, HE-PI-0560: FS, HE-PL-2750: FS, HE-PI-0420: FS, HE-CS-0490: FS, HE-PL-2570: FS, HE-PL-0210: FS, HE-PL-2690: FS, HE-PL-2450: FS 15, HE-PI-0490",2024-01-29 00:00:00,2024-02-29 00:00:00,31
HE-TS-0020,Receive Company Comments-Topographical Survey Report (Overall),4,P2543-R01-Oct24..1.EN.2.2,HE-TS-0010,HE-TS-0010: FS,HE-TS-0030,HE-TS-0030: FS,2024-03-01 00:00:00,2024-03-07 00:00:00,6
HE-TS-0030,Re-Issue for Approval-Topographical Survey Report (Overall),54,P2543-R01-Oct24..1.EN.2.2,HE-TS-0020,HE-TS-0020: FS,HE-TS-0040,HE-TS-0040: FS,2024-03-08 00:00:00,2024-05-31 00:00:00,84
HE-TS-0040,Obtain Company Approval-Topographical Survey Report (Overall),36,P2543-R01-Oct24..1.EN.2.2,HE-TS-0030,HE-TS-0030: FS,HE-TS-0050,HE-TS-0050: FS,2024-06-03 00:00:00,2024-07-26 17:30:00,53
HE-TS-0050,Final Issue for Design/ Construction-Topographical Survey Report (Overall),24,P2543-R01-Oct24..1.EN.2.2,HE-TS-0040,HE-TS-0040: FS,"HE-PL-2790, HE-PL-2670, ML1009-B04, ML1008-B03, HE-PI-0440, HE-PL-2610, CAB-4420, HE-CS-0530, HE-PI-0580, HE-PI-0370, HE-PI-0510","HE-PL-2790: FS, HE-PL-2670: FS, ML1009-B04: FS, ML1008-B03: FS, HE-PI-0440: FS, HE-PL-2610: FS, CAB-4420: FS, HE-CS-0530: FS, HE-PI-0580: FS, HE-PI-0370: FS, HE-PI-0510: FS",2024-07-29 07:30:00,2024-08-30 00:00:00,31
HE-TS-280,"Issue ICR-Topographical Survey Report 52"" Line",9,P2543-R01-Oct24..1.EN.2.2.1,HE-SS-0030,HE-SS-0030: FS,"HE-PL-0190, HE-PL-0210, HE-PL-2450, HE-PL-2630, HE-TS-290, HE-TS-230","HE-PL-0190: FS, HE-PL-0210: FS, HE-PL-2450: FS 15, HE-PL-2630: FS, HE-TS-290: FS, HE-TS-230: FS",2024-02-26 00:00:00,2024-03-08 00:00:00,11
HE-TS-290,"Receive Company Comments-Topographical Survey Report 52"" Line",4,P2543-R01-Oct24..1.EN.2.2.1,HE-TS-280,HE-TS-280: FS,HE-TS-250,HE-TS-250: FS,2024-03-10 00:00:00,2024-03-17 00:00:00,7
HE-TS-250,"Re-Issue for Approval-Topographical Survey Report 52"" Line",49,P2543-R01-Oct24..1.EN.2.2.1,HE-TS-290,HE-TS-290: FS,HE-TS-260,HE-TS-260: FF,2024-03-18 00:00:00,2024-05-31 17:30:00,74
HE-TS-260,"Obtain Company Approval-Topographical Survey Report 52"" Line",72,P2543-R01-Oct24..1.EN.2.2.1,HE-TS-250,HE-TS-250: FF,HE-TS-270,HE-TS-270: FF,2024-04-12 00:00:00,2024-07-26 17:30:00,105
HE-TS-270,"Final Issue for Design/ Construction-Topographical Survey Report 52"" Line",92,P2543-R01-Oct24..1.EN.2.2.1,HE-TS-260,HE-TS-260: FF,"HE-PL-2670, ML1009-B04, HE-PI-0440","HE-PL-2670: FS, ML1009-B04: FS, HE-PI-0440: FS",2024-04-19 00:00:00,2024-08-30 17:30:00,133
HE-TS-230,"Issue ICR-Topographical Survey Report 56"" Line",4,P2543-R01-Oct24..1.EN.2.2.5,"HE-SS-0030, HE-TS-280","HE-SS-0030: FS, HE-TS-280: FS","HE-PL-0130, HE-PI-0350, HE-PL-2570, HE-PL-0150, HE-PL-2390, HE-TS-240, HE-PI-0340, HE-TS-330","HE-PL-0130: FS, HE-PI-0350: FS, HE-PL-2570: FS, HE-PL-0150: FS, HE-PL-2390: FS 10, HE-TS-240: FS, HE-PI-0340: FS, HE-TS-330: FS",2024-03-04 00:00:00,2024-03-08 00:00:00,4
HE-TS-240,"Receive Company Comments-Topographical Survey Report 56"" Line",4,P2543-R01-Oct24..1.EN.2.2.5,HE-TS-230,HE-TS-230: FS,HE-TS-200,HE-TS-200: FS,2024-03-10 00:00:00,2024-03-17 00:00:00,7
HE-TS-200,"Re-Issue for Approval-Topographical Survey Report 56"" Line",49,P2543-R01-Oct24..1.EN.2.2.5,HE-TS-240,HE-TS-240: FS,HE-TS-210,HE-TS-210: FS,2024-03-18 00:00:00,2024-05-31 17:30:00,74
HE-TS-210,"Obtain Company Approval-Topographical Survey Report 56"" Line",36,P2543-R01-Oct24..1.EN.2.2.5,HE-TS-200,HE-TS-200: FS,HE-TS-220,HE-TS-220: FS,2024-06-03 07:30:00,2024-07-26 17:30:00,53
HE-TS-220,"Final Issue for Design/ Construction-Topographical Survey Report 56"" Line",25,P2543-R01-Oct24..1.EN.2.2.5,HE-TS-210,HE-TS-210: FS,"ML1008-B03, HE-PL-2610, HE-PI-0370","ML1008-B03: FS, HE-PL-2610: FS, HE-PI-0370: FS",2024-07-29 07:30:00,2024-08-30 17:30:00,32
HE-TS-330,"Issue ICR-Topographical Survey Report 4"" Line",4,P2543-R01-Oct24..1.EN.2.2.3,"HE-SS-0030, HE-TS-230","HE-SS-0030: FS, HE-TS-230: FS","HE-PL-3580, HE-PL-3530, HE-PL-0250, HE-PL-2690, HE-PI-0490, HE-PL-0270, HE-PL-2510, HE-TS-340","HE-PL-3580: FS, HE-PL-3530: FS 60, HE-PL-0250: FS, HE-PL-2690: FS, HE-PI-0490: FS, HE-PL-0270: FS, HE-PL-2510: FS 30, HE-TS-340: FS",2024-03-04 00:00:00,2024-03-08 00:00:00,4
HE-TS-340,"Receive Company Comments-Topographical Survey Report 4"" Line",4,P2543-R01-Oct24..1.EN.2.2.3,HE-TS-330,HE-TS-330: FS,HE-TS-300,HE-TS-300: FS,2024-03-10 00:00:00,2024-03-17 00:00:00,7
HE-TS-310,"Obtain Company Approval-Topographical Survey Report 4"" Line",2,P2543-R01-Oct24..1.EN.2.2.3,HE-TS-300,HE-TS-300: SS,HE-TS-320,HE-TS-320: FS,2024-05-10 00:00:00,2024-05-14 00:00:00,4
HE-TS-320,"Final Issue for Design/ Construction-Topographical Survey Report 4"" Line",5,P2543-R01-Oct24..1.EN.2.2.3,HE-TS-310,HE-TS-310: FS,"HE-PI-0510, HE-PL-2550, HE-PL-3570","HE-PI-0510: FS, HE-PL-2550: FS, HE-PL-3570: FS",2024-05-20 00:00:00,2024-05-26 00:00:00,6
HE-TS-300,"Re-Issue for Approval-Topographical Survey Report 4"" Line",110,P2543-R01-Oct24..1.EN.2.2.3,HE-TS-340,HE-TS-340: FS,HE-TS-310,HE-TS-310: SS,2024-03-18 00:00:00,2024-08-30 17:30:00,165
HE-GS-0010,Issue ICR - Geo Technical Survey Report (Overall),4,P2543-R01-Oct24..1.EN.2.3,HE-SS-0040,HE-SS-0040: FS,"HE-PL-3270, HE-PL-0250, HE-PL-0190, HE-PL-0130, HE-CS-0790, HE-CS-0550, HE-CS-1090, HE-CS-0670, HE-GS-0020, HE-PL-0670, HE-PI-0340","HE-PL-3270: FS, HE-PL-0250: FS, HE-PL-0190: FS, HE-PL-0130: FS, HE-CS-0790: FS, HE-CS-0550: FS, HE-CS-1090: FS, HE-CS-0670: FS, HE-GS-0020: FS, HE-PL-0670: FS, HE-PI-0340: FS",2024-02-26 00:00:00,2024-03-01 00:00:00,4
HE-GS-0020,Receive Company Comments - Geo Technical Survey Report (Overall),4,P2543-R01-Oct24..1.EN.2.3,HE-GS-0010,HE-GS-0010: FS,HE-GS-0030,HE-GS-0030: FS,2024-03-04 00:00:00,2024-03-08 00:00:00,4
HE-GS-0030,Re-Issue for Approval - Geo Technical Survey Report (Overall),17,P2543-R01-Oct24..1.EN.2.3,HE-GS-0020,HE-GS-0020: FS,HE-GS-0040,HE-GS-0040: FS,2024-03-10 00:00:00,2024-04-07 00:00:00,28
HE-GS-0040,Obtain Company Approval - Geo Technical Survey Report (Overall),4,P2543-R01-Oct24..1.EN.2.3,HE-GS-0030,HE-GS-0030: FS,HE-GS-0050,HE-GS-0050: FS,2024-04-12 00:00:00,2024-04-18 00:00:00,6
HE-GS-0050,Final Issue for Design/ Construction-Geotechnical Survey Report (Overall),26,P2543-R01-Oct24..1.EN.2.3,HE-GS-0040,HE-GS-0040: FS,"HE-CS-0590, HE-CS-0710, ML1009-B04, CAB-4420, HE-CS-0830, ML1008-B03, HE-CS-1130","HE-CS-0590: FS, HE-CS-0710: FS, ML1009-B04: FS, CAB-4420: FS, HE-CS-0830: FS, ML1008-B03: FS, HE-CS-1130: FS",2024-07-26 07:30:00,2024-08-30 17:30:00,35
HE-GS-90,"Issue ICR - Geo Technical Survey Report 52"" Line",4,P2543-R01-Oct24..1.EN.2.3.3,HE-SS-0040,HE-SS-0040: FS,"HE-PL-0190, HE-GS-50, HE-GS-140","HE-PL-0190: FS, HE-GS-50: FS, HE-GS-140: FS",2024-02-26 00:00:00,2024-03-01 00:00:00,4
HE-GS-50,"Receive Company Comments - Geo Technical Survey Report 52"" Line",4,P2543-R01-Oct24..1.EN.2.3.3,HE-GS-90,HE-GS-90: FS,HE-GS-60,HE-GS-60: FS,2024-03-04 00:00:00,2024-03-08 00:00:00,4
HE-GS-60,"Re-Issue for Approval - Geo Technical Survey Report 52"" Line",54,P2543-R01-Oct24..1.EN.2.3.3,HE-GS-50,HE-GS-50: FS,HE-GS-70,HE-GS-70: FS,2024-03-10 00:00:00,2024-05-31 17:30:00,82
HE-GS-70,"Obtain Company Approval - Geo Technical Survey Report 52"" Line",36,P2543-R01-Oct24..1.EN.2.3.3,HE-GS-60,HE-GS-60: FS,HE-GS-80,HE-GS-80: FS,2024-06-03 07:30:00,2024-07-26 17:30:00,53
HE-GS-80,"Final Issue for Design/ Construction-Geotechnical Survey Report 52"" Line",25,P2543-R01-Oct24..1.EN.2.3.3,HE-GS-70,HE-GS-70: FS,ML1009-B04,ML1009-B04: FS,2024-07-29 07:30:00,2024-08-30 17:30:00,32
HE-GS-140,"Issue ICR - Geo Technical Survey Report 56"" Line",4,P2543-R01-Oct24..1.EN.2.3.1,"HE-SS-0040, HE-GS-90","HE-SS-0040: FS, HE-GS-90: FS","HE-PL-0130, HE-GS-100, HE-PI-0340, HE-GS-190","HE-PL-0130: FS, HE-GS-100: FS, HE-PI-0340: FS, HE-GS-190: FS",2024-03-04 00:00:00,2024-03-08 00:00:00,4
HE-GS-100,"Receive Company Comments - Geo Technical Survey Report 56"" Line",4,P2543-R01-Oct24..1.EN.2.3.1,HE-GS-140,HE-GS-140: FS,HE-GS-110,HE-GS-110: FS,2024-03-10 00:00:00,2024-03-17 00:00:00,7
HE-GS-110,"Re-Issue for Approval - Geo Technical Survey Report 56"" Line",48,P2543-R01-Oct24..1.EN.2.3.1,HE-GS-100,HE-GS-100: FS,HE-GS-120,HE-GS-120: FS,2024-03-18 00:00:00,2024-05-31 00:00:00,74
HE-GS-120,"Obtain Company Approval - Geo Technical Survey Report 56"" Line",36,P2543-R01-Oct24..1.EN.2.3.1,HE-GS-110,HE-GS-110: FS,HE-GS-130,HE-GS-130: FS,2024-06-03 07:30:00,2024-07-26 17:30:00,53
HE-GS-130,"Final Issue for Design/ Construction-Geotechnical Survey Report 56"" Line",25,P2543-R01-Oct24..1.EN.2.3.1,HE-GS-120,HE-GS-120: FS,ML1008-B03,ML1008-B03: FS,2024-07-29 07:30:00,2024-08-30 17:30:00,32
HE-GS-190,"Issue ICR - Geo Technical Survey Report 4"" Line",4,P2543-R01-Oct24..1.EN.2.3.2,"HE-SS-0040, HE-GS-140","HE-SS-0040: FS, HE-GS-140: FS","HE-PL-0250, HE-GS-150","HE-PL-0250: FS, HE-GS-150: FS",2024-03-10 00:00:00,2024-03-17 00:00:00,7
HE-GS-150,"Receive Company Comments - Geo Technical Survey Report 4"" Line",4,P2543-R01-Oct24..1.EN.2.3.2,HE-GS-190,HE-GS-190: FS,HE-GS-160,HE-GS-160: FS,2024-03-18 00:00:00,2024-03-25 00:00:00,7
HE-GS-160,"Re-Issue for Approval - Geo Technical Survey Report 4"" Line",22,P2543-R01-Oct24..1.EN.2.3.2,HE-GS-150,HE-GS-150: FS,HE-GS-170,HE-GS-170: FS,2024-03-26 00:00:00,2024-05-01 17:30:00,36
HE-GS-170,"Obtain Company Approval - Geo Technical Survey Report 4"" Line",2,P2543-R01-Oct24..1.EN.2.3.2,HE-GS-160,HE-GS-160: FS,HE-GS-180,HE-GS-180: FS,2024-05-10 00:00:00,2024-05-14 00:00:00,4
HE-GS-180,"Final Issue for Design/ Construction-Geotechnical Survey Report 4"" Line",5,P2543-R01-Oct24..1.EN.2.3.2,HE-GS-170,HE-GS-170: FS,"HE-PL-2550, HE-PL-3570","HE-PL-2550: FS, HE-PL-3570: FS",2024-05-20 00:00:00,2024-05-26 00:00:00,6
HE-DB-0010,Issue ICR-Design Basis,7,P2543-R01-Oct24..1.EN.3.3,ML1002,ML1002: SS 5,"HE-PR-0850, HE-PI-0010, HE-CP-0010, HE-HS-0010, HE-PL-0610, HE-PR-0110, HE-DB-0020, HE-PR-0040, HE-IC-0010, HE-CS-0010, HE-PL-0790, HE-PR-1240, HE-DB-80, HE-DB-130, HE-EL-180, HE-PR-0310, HE-PR-0430, HE-PR-0490, HE-PR-0550, HE-PR-1260, HE-ME-270, HE-CS-156","HE-PR-0850: FS, HE-PI-0010: FS, HE-CP-0010: FS, HE-HS-0010: SS, HE-PL-0610: FS, HE-PR-0110: FS, HE-DB-0020: FS, HE-PR-0040: FF 4, HE-IC-0010: FS, HE-CS-0010: FS, HE-PL-0790: FS, HE-PR-1240: FS, HE-DB-80: FS, HE-DB-130: FS 5, HE-EL-180: FS, HE-PR-0310: FS 4",2023-07-23 00:00:00,2023-08-02 00:00:00,10
HE-DB-0020,Receive Company Comments-Design Basis,6,P2543-R01-Oct24..1.EN.3.3,HE-DB-0010,HE-DB-0010: FS,"HE-DB-0030, HE-WS-0020, HE-HV-180","HE-DB-0030: FS, HE-WS-0020: FS, HE-HV-180: FS",2023-08-02 00:00:00,2023-08-10 00:00:00,8
HE-DB-0030,Re-Issue for Approval-Design Basis,19,P2543-R01-Oct24..1.EN.3.3,HE-DB-0020,HE-DB-0020: FS,"HE-DB-0040, HE-TL-2490","HE-DB-0040: FS, HE-TL-2490: FS 2",2023-08-11 00:00:00,2023-09-07 00:00:00,27
HE-DB-0040,Obtain Company Approval-Design Basis,7,P2543-R01-Oct24..1.EN.3.3,HE-DB-0030,HE-DB-0030: FS,HE-DB-0050,HE-DB-0050: FS,2023-09-08 00:00:00,2023-09-19 00:00:00,11
HE-DB-0050,Final Issue for Design-Design Basis,5,P2543-R01-Oct24..1.EN.3.3,HE-DB-0040,HE-DB-0040: FS,"HE-HV-180, ML1005-B01","HE-HV-180: FS, ML1005-B01: FS",2023-11-08 00:00:00,2023-11-15 00:00:00,7
HE-PR-0040,Issue ICR- Process Flow Diagrams ( New + Existing),3,P2543-R01-Oct24..1.EN.3.7,HE-DB-0010,HE-DB-0010: FF 4,"ML1219-B19, HE-PR-1130, HE-PI-0170, HE-PR-0870, HE-PR-0450, HE-PR-0570, HE-PR-1280, HE-PR-1330, HE-PR-1380, HE-PR-1430, HE-PR-1480, HE-PR-1530, HE-PR-1580, HE-HS-0970, HE-PI-0150, HE-HS-0670, HE-WS-0050, HE-HS-0490, HE-PI-0130, C-COM-790, CAB-5290, ML1012-","ML1219-B19: FF, HE-PR-1130: FS, HE-PI-0170: FS, HE-PR-0870: FS, HE-PR-0450: FS, HE-PR-0570: FS, HE-PR-1280: FS, HE-PR-1330: FS, HE-PR-1380: FS, HE-PR-1430: FS, HE-PR-1480: FS, HE-PR-1530: FS, HE-PR-1580: FS, HE-HS-0970: FS, HE-PI-0150: FS, HE-HS-0670: FS,",2023-08-04 00:00:00,2023-08-09 00:00:00,5
HE-PR-0050,Receive Company Comments- Process Flow Diagrams ( New + Existing),10,P2543-R01-Oct24..1.EN.3.7,HE-PR-0040,HE-PR-0040: FS,"HE-PR-0060, HE-WS-0020, HE-PI-0320, HE-PI-0390","HE-PR-0060: FS, HE-WS-0020: FS, HE-PI-0320: FS, HE-PI-0390: FS",2023-08-15 00:00:00,2023-08-29 00:00:00,14
HE-PR-0070,Re-Issue after incorporating HAZOP /Review Comments- Process Flow Diagrams ( New + Existing),5,P2543-R01-Oct24..1.EN.3.7,"HE-PR-0630, HE-HS-0670, HE-PR-0060","HE-PR-0630: FS, HE-HS-0670: FF, HE-PR-0060: FS","ML1219-B19, HE-PR-1130, HE-PI-0170, HE-PR-0870, HE-PR-0450, HE-PR-0570, HE-PR-1280, HE-PR-1330, HE-PR-1380, HE-PR-1430, HE-PR-1480, HE-PR-1530, HE-PR-1580, HE-PR-1050, HE-PI-0420, HE-PI-0490, HE-PI-0350, HE-PI-0560, HE-PR-0140, HE-PR-0080, HE-PI-0620, ML12","ML1219-B19: FF, HE-PR-1130: FS, HE-PI-0170: FS, HE-PR-0870: FS, HE-PR-0450: FS, HE-PR-0570: FS, HE-PR-1280: FS, HE-PR-1330: FS, HE-PR-1380: FS, HE-PR-1430: FS, HE-PR-1480: FS, HE-PR-1530: FS, HE-PR-1580: FS, HE-PR-1050: FS, HE-PI-0420: FS, HE-PI-0490: FS,",2023-09-11 00:00:00,2023-09-18 00:00:00,7
HE-PR-0080,Obtain Company Approval- Process Flow Diagrams ( New + Existing),5,P2543-R01-Oct24..1.EN.3.7,HE-PR-0070,HE-PR-0070: FS,HE-PR-0090,HE-PR-0090: FS,2023-09-19 00:00:00,2023-09-26 00:00:00,7
HE-PR-0060,Re-Issue for HAZOP Studies- Process Flow Diagrams ( New + Existing),18,P2543-R01-Oct24..1.EN.3.7,"HE-WS-0030, HE-PR-0050","HE-WS-0030: FS, HE-PR-0050: FS","ML1219-B19, HE-PR-1130, HE-PI-0170, HE-PR-0870, HE-PR-0450, HE-PR-0570, HE-PR-1280, HE-PR-1330, HE-PR-1380, HE-PR-1430, HE-PR-1480, HE-PR-1530, HE-PR-1580, HE-HS-0970, HE-PI-0150, HE-HS-0670, HE-WS-0050, HE-HS-0490, HE-PI-0130, C-COM-790, CAB-5290, HE-PR-0","ML1219-B19: FF, HE-PR-1130: FS, HE-PI-0170: FS, HE-PR-0870: FS, HE-PR-0450: FS, HE-PR-0570: FS, HE-PR-1280: FS, HE-PR-1330: FS, HE-PR-1380: FS, HE-PR-1430: FS, HE-PR-1480: FS, HE-PR-1530: FS, HE-PR-1580: FS, HE-HS-0970: FS, HE-PI-0150: FS, HE-HS-0670: FS,",2023-09-01 00:00:00,2023-09-27 00:00:00,26
HE-PR-0090,Final Issue for Design/ Construction-Process Flow Diagrams ( New + Existing),203,P2543-R01-Oct24..1.EN.3.7,"HE-PR-0080, HE-PR-0650","HE-PR-0080: FS, HE-PR-0650: FS","ML1219-B19, HE-PR-0160, ML1014-B10, HE-PI-0580, HE-PI-0510, HE-PI-0370, HE-PI-0440, HE-PI-0620, ML1219-B29, CAB-4400","ML1219-B19: FF, HE-PR-0160: FS, ML1014-B10: FS, HE-PI-0580: FS, HE-PI-0510: FS, HE-PI-0370: FS, HE-PI-0440: FS, HE-PI-0620: FS, ML1219-B29: FF, CAB-4400: FS",2023-10-23 00:00:00,2024-08-16 17:30:00,298
HE-PR-1240,Issue ICR- H&MB Report,6,P2543-R01-Oct24..1.EN.3.19,HE-DB-0010,HE-DB-0010: FS,"ML1219-B19, HE-PR-1130, HE-PI-0170, HE-PR-0870, HE-PR-0450, HE-PR-0570, HE-PR-1280, HE-PR-1330, HE-PR-1380, HE-PR-1430, HE-PR-1480, HE-PR-1530, HE-PR-1580, HE-HS-0970, HE-PI-0150, HE-HS-0670, HE-WS-0050, HE-HS-0490, HE-PI-0130, C-COM-790, CAB-5290, ML1012-","ML1219-B19: FF, HE-PR-1130: FS, HE-PI-0170: FS, HE-PR-0870: FS, HE-PR-0450: FS, HE-PR-0570: FS, HE-PR-1280: FS, HE-PR-1330: FS, HE-PR-1380: FS, HE-PR-1430: FS, HE-PR-1480: FS, HE-PR-1530: FS, HE-PR-1580: FS, HE-HS-0970: FS, HE-PI-0150: FS, HE-HS-0670: FS,",2023-08-04 00:00:00,2023-08-14 00:00:00,10
HE-PR-1250,Receive Company Comments-  H&MB Report,8,P2543-R01-Oct24..1.EN.3.19,HE-PR-1240,HE-PR-1240: FS,"ML1219-B19, HE-PR-1130, HE-PI-0170, HE-PR-0870, HE-PR-0450, HE-PR-0570, HE-PR-1280, HE-PR-1330, HE-PR-1380, HE-PR-1430, HE-PR-1480, HE-PR-1530, HE-PR-1580, HE-HS-0970, HE-PI-0150, HE-HS-0670, HE-WS-0050, HE-HS-0490, HE-PI-0130, C-COM-790, CAB-5290, HE-PR-0","ML1219-B19: FF, HE-PR-1130: FS, HE-PI-0170: FS, HE-PR-0870: FS, HE-PR-0450: FS, HE-PR-0570: FS, HE-PR-1280: FS, HE-PR-1330: FS, HE-PR-1380: FS, HE-PR-1430: FS, HE-PR-1480: FS, HE-PR-1530: FS, HE-PR-1580: FS, HE-HS-0970: FS, HE-PI-0150: FS, HE-HS-0670: FS,",2023-08-14 00:00:00,2023-08-24 00:00:00,10
HE-PR-1200,Re-Issue after incorporating Review Comments-  H&MB Report,12,P2543-R01-Oct24..1.EN.3.19,"HE-PR-1250, HE-PR-0630, HE-HS-0670","HE-PR-1250: FS, HE-PR-0630: FS, HE-HS-0670: FF","ML1219-B19, HE-PR-1130, HE-PI-0170, HE-PR-0870, HE-PR-0450, HE-PR-0570, HE-PR-1280, HE-PR-1330, HE-PR-1380, HE-PR-1430, HE-PR-1480, HE-PR-1530, HE-PR-1580, HE-PR-1050, HE-PI-0420, HE-PI-0490, HE-PI-0350, HE-PI-0560, HE-PR-0140, HE-PR-1210, HE-PI-0620, ML12","ML1219-B19: FF, HE-PR-1130: FS, HE-PI-0170: FS, HE-PR-0870: FS, HE-PR-0450: FS, HE-PR-0570: FS, HE-PR-1280: FS, HE-PR-1330: FS, HE-PR-1380: FS, HE-PR-1430: FS, HE-PR-1480: FS, HE-PR-1530: FS, HE-PR-1580: FS, HE-PR-1050: FS, HE-PI-0420: FS, HE-PI-0490: FS,",2023-09-13 00:00:00,2023-09-29 00:00:00,16
HE-PR-1210,Obtain Company Approval-  H&MB Report,9,P2543-R01-Oct24..1.EN.3.19,HE-PR-1200,HE-PR-1200: FS,HE-PR-1220,HE-PR-1220: FS,2023-10-03 00:00:00,2023-10-16 00:00:00,13
HE-PR-1220,Final Issue for Design/ Construction- H&MB Report,26,P2543-R01-Oct24..1.EN.3.19,"HE-PR-1210, HE-PR-0650","HE-PR-1210: FS, HE-PR-0650: FS","ML1219-B19, HE-PR-0160, ML1014-B10, HE-PI-0580, HE-PI-0510, HE-PI-0370, HE-PI-0440, HE-PI-0620, ML1219-B29, CAB-4400","ML1219-B19: FF, HE-PR-0160: FS, ML1014-B10: FS, HE-PI-0580: FS, HE-PI-0510: FS, HE-PI-0370: FS, HE-PI-0440: FS, HE-PI-0620: FS, ML1219-B29: FF, CAB-4400: FS",2024-05-28 07:30:00,2024-07-08 17:30:00,41
HE-PR-0850,Issue ICR- Isolation & Tie-In philosophy,7,P2543-R01-Oct24..1.EN.3.5,HE-DB-0010,HE-DB-0010: FS,"HE-PR-0110, HE-WS-0050, HE-PR-0860","HE-PR-0110: FS, HE-WS-0050: FS, HE-PR-0860: FS",2023-08-06 00:00:00,2023-08-16 00:00:00,10
HE-PR-0860,Receive Company Comments-Isolation & Tie-In philosophy,8,P2543-R01-Oct24..1.EN.3.5,HE-PR-0850,HE-PR-0850: FS,"HE-PR-0870, HE-PR-0280, HS-CN-0510","HE-PR-0870: FS, HE-PR-0280: FS, HS-CN-0510: FS 14",2023-08-15 00:00:00,2023-08-25 00:00:00,10
HE-PR-0870,Re-Issue for Approval-Isolation & Tie-In philosophy,8,P2543-R01-Oct24..1.EN.3.5,"HE-PR-0040, HE-PR-1240, HE-PR-1250, HE-PR-0060, HE-WS-0030, HE-HS-0670, HE-PR-0070, HE-PR-1200, HE-PR-0860","HE-PR-0040: FS, HE-PR-1240: FS, HE-PR-1250: FS, HE-PR-0060: FS, HE-WS-0030: FS, HE-HS-0670: SS, HE-PR-0070: FS, HE-PR-1200: FS, HE-PR-0860: FS",HE-PR-0880,HE-PR-0880: FS,2023-10-03 00:00:00,2023-10-13 00:00:00,10
HE-PR-0880,Obtain Company Approval-Isolation & Tie-In philosophy,5,P2543-R01-Oct24..1.EN.3.5,HE-PR-0870,HE-PR-0870: FS,"ML1010-B14, HE-PR-0890","ML1010-B14: FF, HE-PR-0890: FS",2023-10-13 00:00:00,2023-10-20 00:00:00,7
HE-PR-0890,Final Issue for Design/ Construction-Isolation & Tie-In philosophy,4,P2543-R01-Oct24..1.EN.3.5,HE-PR-0880,HE-PR-0880: FS,"C-COM-770, C-COM-770, C-COM-800, C-56-PL-607-PI-1000, C-56-PL-607-PI-1200, C-56-PL-607-PI-1800, C-56-PL-607-PI-2000, C-56-G-HT-PI-1000, C-56-G-HT-PI-1200, C-56-G-HT-PI-1800, C-56-G-HT-PI-2000, C-56-PR-838-PI-1000, C-56-PR-838-PI-1200, C-56-PR-838-PI-1800,","C-COM-770: FS, C-COM-770: FF, C-COM-800: FS, C-56-PL-607-PI-1000: FS, C-56-PL-607-PI-1200: FS, C-56-PL-607-PI-1800: FS, C-56-PL-607-PI-2000: FS, C-56-G-HT-PI-1000: FS, C-56-G-HT-PI-1200: FS, C-56-G-HT-PI-1800: FS, C-56-G-HT-PI-2000: FS, C-56-PR-838-PI-1000",2024-01-15 00:00:00,2024-01-19 00:00:00,4
HE-PR-0110,Issue ICR- P&ID's,10,P2543-R01-Oct24..1.EN.3.11,"HE-PI-0010, HE-PR-0850, HE-DB-0010, HE-PR-0040, HE-PR-1240","HE-PI-0010: SS 5, HE-PR-0850: FS, HE-DB-0010: FS, HE-PR-0040: FS, HE-PR-1240: FS 8","ML1030, ML1859-E31, ML1749-E20, HE-IC-1210, HE-IC-1090, HE-IC-1030, HE-IC-0070, HE-IC-1330, HE-PI-0130, HE-IC-1450, HE-IC-0550, HE-PI-0960, HE-PI-0900, HE-WS-0030, HE-PL-0310, HE-IC-0250, HE-PR-0250, HE-PR-0120, HE-IC-0490, HE-IC-0190, HE-PR-1090, C-COM-79","ML1030: FS, ML1859-E31: FS, ML1749-E20: FS, HE-IC-1210: FS, HE-IC-1090: FS, HE-IC-1030: FS, HE-IC-0070: FF 2, HE-IC-1330: FS, HE-PI-0130: FS, HE-IC-1450: FS, HE-IC-0550: FS, HE-PI-0960: FS, HE-PI-0900: FS, HE-WS-0030: FS, HE-PL-0310: FS, HE-IC-0250: SS, HE",2023-09-10 00:00:00,2023-09-25 00:00:00,15
HE-PR-0120,Receive Company Comments-P&ID's,7,P2543-R01-Oct24..1.EN.3.11,HE-PR-0110,HE-PR-0110: FS,"HE-PR-0130, HE-PR-0170","HE-PR-0130: FS, HE-PR-0170: FS",2023-09-30 00:00:00,2023-10-11 00:00:00,11
HE-PR-0170,Issues for Design Review,5,P2543-R01-Oct24..1.EN.3.11,HE-PR-0120,HE-PR-0120: FS,HE-PR-0240,HE-PR-0240: FS,2023-10-16 00:00:00,2023-10-23 00:00:00,7
HE-PR-0240,Receive comments from Design Review,3,P2543-R01-Oct24..1.EN.3.11,HE-PR-0170,HE-PR-0170: FS,HE-PR-0130,HE-PR-0130: FS,2023-10-24 00:00:00,2023-10-27 00:00:00,3
HE-PR-0130,Re-Issue for HAZOP Studies- P&ID's review,4,P2543-R01-Oct24..1.EN.3.11,"HE-PR-1250, HE-PR-0120, HE-WS-0030, HE-PR-0060, HE-PR-0240","HE-PR-1250: FF, HE-PR-0120: FS, HE-WS-0030: FS, HE-PR-0060: FF, HE-PR-0240: FS","HE-HS-0970, HE-PI-0150, HE-HS-0670, HE-WS-0050, HE-HS-0490, C-COM-790, CAB-5290, ML1012-B06, HE-PR-0140, HE-PI-0130, HE-WS-0210","HE-HS-0970: FS, HE-PI-0150: FS, HE-HS-0670: FS, HE-WS-0050: FS, HE-HS-0490: FS, C-COM-790: FS, CAB-5290: FS, ML1012-B06: FS, HE-PR-0140: FS, HE-PI-0130: FS 10, HE-WS-0210: FS 5",2023-11-10 00:00:00,2023-11-16 00:00:00,6
HE-PR-0140,Re-Issue after incorporating HAZOP /Review Comments- P&ID's,8,P2543-R01-Oct24..1.EN.3.11,"HE-PR-0130, HE-HS-0670, HE-PR-0070, HE-PR-1200, HE-PI-0050","HE-PR-0130: FS, HE-HS-0670: SS, HE-PR-0070: FS 20, HE-PR-1200: FS, HE-PI-0050: FS","HE-PR-0810, HE-PR-0450, HE-PR-0750, HE-PR-0150, HE-PR-0570, HE-PI-0150, HE-EL-0090, HE-PR-1280, HE-PR-1330, HE-PR-1380, HE-PR-1430, HE-PR-1480, HE-PR-1530, HE-PR-1580, HE-PR-1130, HE-PI-0620, ML1219-B29, CAB-4400","HE-PR-0810: FS, HE-PR-0450: FS, HE-PR-0750: FS, HE-PR-0150: FS, HE-PR-0570: FS, HE-PI-0150: FS, HE-EL-0090: FS, HE-PR-1280: FS, HE-PR-1330: FS 20, HE-PR-1380: FS, HE-PR-1430: FS, HE-PR-1480: FS, HE-PR-1530: FS, HE-PR-1580: FS, HE-PR-1130: FS, HE-PI-0620: F",2023-12-09 00:00:00,2023-12-21 00:00:00,12
HE-PR-0150,Obtain Company Approval-P&ID's,12,P2543-R01-Oct24..1.EN.3.11,HE-PR-0140,HE-PR-0140: FS,"HE-PR-0160, HE-PI-0170","HE-PR-0160: FS, HE-PI-0170: FS",2023-12-22 00:00:00,2024-01-10 00:00:00,19
HE-PR-0270,Re-Issue for Approval-Tie-In Schedule,22,P2543-R01-Oct24..1.EN.3.15,HE-PR-0260,HE-PR-0260: FS,HE-PR-0280,HE-PR-0280: FS,2023-08-26 00:00:00,2023-09-27 00:00:00,32
HE-PR-0280,Obtain Company Approval-Tie-In Schedule,9,P2543-R01-Oct24..1.EN.3.15,"HE-PR-0270, HE-PR-0860","HE-PR-0270: FS, HE-PR-0860: FS",HE-PR-0290,HE-PR-0290: FS,2023-09-28 00:00:00,2023-10-11 00:00:00,13
HE-PR-0250,Issue ICR-Tie-In Schedule,5,P2543-R01-Oct24..1.EN.3.15,"HE-PR-0040, HE-PR-1240, HE-PR-1250, HE-PR-0060, HE-WS-0030, HE-PR-0110","HE-PR-0040: FS, HE-PR-1240: FS, HE-PR-1250: FS, HE-PR-0060: FS, HE-WS-0030: FS, HE-PR-0110: FS 10",HE-PR-0260,HE-PR-0260: FS,2023-11-16 00:00:00,2023-11-23 00:00:00,7
HE-PR-0260,Receive Company Comments-Tie-In Schedule,12,P2543-R01-Oct24..1.EN.3.15,HE-PR-0250,HE-PR-0250: FS,HE-PR-0270,HE-PR-0270: FS,2023-11-25 00:00:00,2023-12-14 00:00:00,19
HE-PR-0290,Final Issue for Design/ Construction-Tie-In Schedule,12,P2543-R01-Oct24..1.EN.3.15,HE-PR-0280,HE-PR-0280: FS,"ML1219-B29, CAB-4440, C-56-PL-607-PI-1000, C-56-PL-607-PI-1200, C-56-PL-607-PI-1800, C-56-PL-607-PI-2000, C-56-G-HT-PI-1000, C-56-G-HT-PI-1200, C-56-G-HT-PI-1800, C-56-G-HT-PI-2000, C-56-PR-838-PI-1000, C-56-PR-838-PI-1200, C-56-PR-838-PI-1800, C-56-PR-838","ML1219-B29: FF, CAB-4440: FS, C-56-PL-607-PI-1000: FS, C-56-PL-607-PI-1200: FS, C-56-PL-607-PI-1800: FS, C-56-PL-607-PI-2000: FS, C-56-G-HT-PI-1000: FS, C-56-G-HT-PI-1200: FS, C-56-G-HT-PI-1800: FS, C-56-G-HT-PI-2000: FS, C-56-PR-838-PI-1000: FS, C-56-PR-8",2024-07-15 07:30:00,2024-07-31 00:00:00,15
HE-PR-0310,Issue ICR- Process Datasheets - Custody Metering Skid - (at Sweihan CRS),8,P2543-R01-Oct24..1.EN.3.20.16,"HE-DB-0010, ML1002","HE-DB-0010: FS 4, ML1002: SS","HE-IC-1150, HE-PR-1030, HE-PR-0320, HE-PR-0370, HE-IC-1150","HE-IC-1150: SS, HE-PR-1030: FF, HE-PR-0320: FS, HE-PR-0370: SS, HE-IC-1150: FS",2023-08-14 00:00:00,2023-08-24 00:00:00,10
HE-PR-0320,Receive Company Comments- Process Datasheets - Custody  Metering Skid - (at Sweihan CRS),6,P2543-R01-Oct24..1.EN.3.20.16,HE-PR-0310,HE-PR-0310: FS,HE-PR-0330,HE-PR-0330: FS 20,2023-08-25 00:00:00,2023-09-03 00:00:00,9
HE-PR-0330,Re-Issue for Approval- Process Datasheets - Custody  Metering Skid - (at Sweihan CRS),4,P2543-R01-Oct24..1.EN.3.20.16,HE-PR-0320,HE-PR-0320: FS 20,HE-PR-0340,HE-PR-0340: FS,2023-10-06 00:00:00,2023-10-12 00:00:00,6
HE-PR-0340,Obtain Company Approval- Process Datasheets - Custody  Metering Skid - (at Sweihan CRS),9,P2543-R01-Oct24..1.EN.3.20.16,HE-PR-0330,HE-PR-0330: FS,HE-PR-0350,HE-PR-0350: FS,2023-10-13 00:00:00,2023-10-26 00:00:00,13
HE-PR-0350,Final Issue for Design/ Construction-Process Datasheets - Custody  Metering Skid - (at Sweihan CRS),4,P2543-R01-Oct24..1.EN.3.20.16,"HE-PR-0340, HE-PR-0530","HE-PR-0340: FS, HE-PR-0530: FS","HE-IC-1190, HE-PR-1070, CAB-4400, HE-PR-0410, HE-IC-1170","HE-IC-1190: FS, HE-PR-1070: FS, CAB-4400: FS, HE-PR-0410: FS, HE-IC-1170: FS",2024-01-29 00:00:00,2024-02-02 00:00:00,4
HE-PR-0370,Issue ICR- Process Datasheets - PRS Skid (at Sweihan CRS),8,P2543-R01-Oct24..1.EN.3.20.12,"HE-PR-0310, ML1002","HE-PR-0310: SS, ML1002: SS","HE-PR-0380, HE-PR-1030, HE-IC-1210, HE-IC-1210","HE-PR-0380: FS, HE-PR-1030: FF, HE-IC-1210: SS, HE-IC-1210: FS",2023-08-14 00:00:00,2023-08-24 00:00:00,10
HE-PR-0380,Receive Company Comments- Process Datasheets - PRS Skid (at Sweihan CRS),6,P2543-R01-Oct24..1.EN.3.20.12,HE-PR-0370,HE-PR-0370: FS,HE-PR-0390,HE-PR-0390: FS 20,2023-08-25 00:00:00,2023-09-03 00:00:00,9
HE-PR-0390,Re-Issue for Approval- Process Datasheets - PRS Skid (at Sweihan CRS),5,P2543-R01-Oct24..1.EN.3.20.12,HE-PR-0380,HE-PR-0380: FS 20,HE-PR-0400,HE-PR-0400: FS,2023-09-15 00:00:00,2023-09-22 00:00:00,7
HE-PR-0400,Obtain Company Approval- Process Datasheets - PRS Skid (at Sweihan CRS),5,P2543-R01-Oct24..1.EN.3.20.12,HE-PR-0390,HE-PR-0390: FS,HE-PR-0410,HE-PR-0410: FS,2023-11-08 00:00:00,2023-11-15 00:00:00,7
HE-PR-0410,Final Issue for Design/ Construction-Process Datasheets - PRS Skid (at Sweihan CRS),143,P2543-R01-Oct24..1.EN.3.20.12,"HE-PR-0400, HE-IC-0110, HE-PR-0350","HE-PR-0400: FS, HE-IC-0110: FS, HE-PR-0350: FS","HE-IC-1250, CAB-4400, HE-PR-1070, HE-IC-1790, CAB-4460, HE-IC-1240","HE-IC-1250: FS, CAB-4400: FS, HE-PR-1070: FS, HE-IC-1790: FS, CAB-4460: FS, HE-IC-1240: FS",2023-11-16 00:00:00,2024-06-14 00:00:00,211
HE-PR-0430,Issue ICR- Process Datasheets - Filters (At Sweihan CRS),8,P2543-R01-Oct24..1.EN.3.20.21,"HE-DB-0010, ML1002","HE-DB-0010: FS 3, ML1002: SS","HE-PR-0440, HE-ME-0070, HE-PR-1030","HE-PR-0440: FS, HE-ME-0070: FS, HE-PR-1030: FF",2023-08-08 00:00:00,2023-08-18 00:00:00,10
HE-PR-0440,Receive Company Comments- Process Datasheets - Filters (At Sweihan CRS),6,P2543-R01-Oct24..1.EN.3.20.21,HE-PR-0430,HE-PR-0430: FS,"HE-PR-0450, HE-ME-0070","HE-PR-0450: FS, HE-ME-0070: FS",2023-08-19 00:00:00,2023-08-29 00:00:00,10
HE-PR-0450,Re-Issue for Approval- Process Datasheets - Filters (At Sweihan CRS),5,P2543-R01-Oct24..1.EN.3.20.21,"HE-PR-0040, HE-PR-1240, HE-PR-1250, HE-PR-0060, HE-WS-0030, HE-HS-0670, HE-PR-0070, HE-PR-1200, HE-PR-0140, HE-PR-0440","HE-PR-0040: FS, HE-PR-1240: FS, HE-PR-1250: FS, HE-PR-0060: FS, HE-WS-0030: FS, HE-HS-0670: SS, HE-PR-0070: FS, HE-PR-1200: FS, HE-PR-0140: FS, HE-PR-0440: FS",HE-PR-0460,HE-PR-0460: FS,2023-09-14 00:00:00,2023-09-21 00:00:00,7
HE-PR-0460,Obtain Company Approval- Process Datasheets - Filters (At Sweihan CRS),4,P2543-R01-Oct24..1.EN.3.20.21,HE-PR-0450,HE-PR-0450: FS,HE-PR-0470,HE-PR-0470: FS,2023-10-06 00:00:00,2023-10-12 00:00:00,6
HE-PR-0470,Final Issue for Design/ Construction-Process Datasheets - Filters (At Sweihan CRS),7,P2543-R01-Oct24..1.EN.3.20.21,"HE-PR-0460, HE-ME-0050, HE-ME-260, HE-IC-610","HE-PR-0460: FS, HE-ME-0050: FS, HE-ME-260: FS, HE-IC-610: FS","HE-ME-0110, HE-PR-1070, CAB-4400","HE-ME-0110: SS, HE-PR-1070: FS, CAB-4400: FS",2023-11-21 00:00:00,2023-11-30 00:00:00,9
HE-PR-0490,Issue ICR- Process Datasheets - Pig Launcher / Receiver,9,P2543-R01-Oct24..1.EN.3.20.14,HE-DB-0010,HE-DB-0010: FS,"HE-PR-0500, HE-PR-1030, HE-ME-310, HE-ME-360, HE-ME-410, HE-ME-460, HE-PR-0970, CAB-4480, ML1015-B08, HP-ME-0210, HM-ME-0420, ML1017-B18, HE-PR-0550","HE-PR-0500: FS, HE-PR-1030: FF, HE-ME-310: FS, HE-ME-360: FS, HE-ME-410: FS, HE-ME-460: FS, HE-PR-0970: FS, CAB-4480: FS, ML1015-B08: FF, HP-ME-0210: FS, HM-ME-0420: FS, ML1017-B18: FS, HE-PR-0550: FS",2023-08-14 00:00:00,2023-08-25 00:00:00,11
HE-PR-0500,Receive Company Comments- Process Datasheets - Pig Launcher / Receiver,1,P2543-R01-Oct24..1.EN.3.20.14,HE-PR-0490,HE-PR-0490: FS,HE-PR-0510,HE-PR-0510: FS,2023-08-25 00:00:00,2023-08-26 00:00:00,1
HE-PR-0510,Re-Issue for Approval- Process Datasheets - Pig Launcher / Receiver,21,P2543-R01-Oct24..1.EN.3.20.14,HE-PR-0500,HE-PR-0500: FS,HE-PR-0520,HE-PR-0520: FS,2023-08-27 00:00:00,2023-09-26 00:00:00,30
HE-PR-0520,Obtain Company Approval- Process Datasheets - Pig Launcher / Receiver,4,P2543-R01-Oct24..1.EN.3.20.14,HE-PR-0510,HE-PR-0510: FS,HE-PR-0530,HE-PR-0530: FS,2023-10-06 00:00:00,2023-10-12 00:00:00,6
HE-PR-0530,Final Issue for Design/ Construction-Process Datasheets - Pig Launcher / Receiver,3,P2543-R01-Oct24..1.EN.3.20.14,HE-PR-0520,HE-PR-0520: FS,"HE-PR-1070, CAB-4400, CAB-4480, ML1015-B08, HM-ME-0420, ML1017-B18, HE-PR-0350, HE-ME-310","HE-PR-1070: FS, CAB-4400: FS, CAB-4480: FS, ML1015-B08: FF, HM-ME-0420: FS, ML1017-B18: FS, HE-PR-0350: FS, HE-ME-310: FS",2023-11-23 00:00:00,2023-11-28 00:00:00,5
HE-PR-0550,Issue ICR- Process Datasheets,9,P2543-R01-Oct24..1.EN.3.20.13,"HE-DB-0010, HE-PR-0490, ML1002","HE-DB-0010: FS 5, HE-PR-0490: FS, ML1002: SS","HE-PR-0560, HE-IC-1030, HE-PR-1260","HE-PR-0560: FS, HE-IC-1030: FS, HE-PR-1260: FS",2023-08-22 00:00:00,2023-09-03 00:00:00,12
HE-PR-0560,Receive Company Comments- Process Datasheets,8,P2543-R01-Oct24..1.EN.3.20.13,HE-PR-0550,HE-PR-0550: FS,"HE-PR-0570, HE-IC-1030","HE-PR-0570: FS, HE-IC-1030: FS",2023-09-04 00:00:00,2023-09-14 00:00:00,10
HE-PR-0570,Re-Issue for Approval- Process Datasheets,5,P2543-R01-Oct24..1.EN.3.20.13,"HE-PR-0040, HE-PR-1240, HE-PR-1250, HE-PR-0060, HE-WS-0030, HE-HS-0670, HE-PR-0070, HE-PR-1200, HE-PR-0560, HE-PR-0140","HE-PR-0040: FS, HE-PR-1240: FS, HE-PR-1250: FS, HE-PR-0060: FS, HE-WS-0030: FS, HE-HS-0670: SS, HE-PR-0070: FS, HE-PR-1200: FS, HE-PR-0560: FS, HE-PR-0140: FS",HE-PR-0580,HE-PR-0580: FS,2023-09-18 00:00:00,2023-09-25 00:00:00,7
HE-PR-0580,Obtain Company Approval- Process Datasheets,4,P2543-R01-Oct24..1.EN.3.20.13,HE-PR-0570,HE-PR-0570: FS,HE-PR-0590,HE-PR-0590: FS,2023-10-06 00:00:00,2023-10-12 00:00:00,6
HE-PR-0590,Final Issue for Design/ Construction-Process Datasheets,21,P2543-R01-Oct24..1.EN.3.20.13,HE-PR-0580,HE-PR-0580: FS,"HE-PR-1070, HM-ME-0120, CAB-4400, HM-ME-0420, HM-ME-0320","HE-PR-1070: FS, HM-ME-0120: FS, CAB-4400: FS, HM-ME-0420: FS, HM-ME-0320: FS",2023-11-14 00:00:00,2023-12-14 00:00:00,30
HE-PR-1260,Issue ICR- Process Datasheets,5,P2543-R01-Oct24..1.EN.3.20.1,"HE-DB-0010, HE-PR-0550, ML1002","HE-DB-0010: FS, HE-PR-0550: FS, ML1002: SS","HE-PR-1270, HE-PR-1310, HE-IC-1090, HE-PR-1360, HE-PR-1560","HE-PR-1270: FS, HE-PR-1310: FS 10, HE-IC-1090: SS 5, HE-PR-1360: FS, HE-PR-1560: FS",2023-09-04 00:00:00,2023-09-11 00:00:00,7
HE-PR-1270,Receive Company Comments- Process Datasheets,8,P2543-R01-Oct24..1.EN.3.20.1,HE-PR-1260,HE-PR-1260: FS,"HE-PR-1280, HE-IC-1090","HE-PR-1280: FS, HE-IC-1090: FS",2023-09-12 00:00:00,2023-09-22 00:00:00,10
HE-PR-1280,Re-Issue for Approval- Process Datasheets,4,P2543-R01-Oct24..1.EN.3.20.1,"HE-PR-0040, HE-PR-1240, HE-PR-1250, HE-PR-0060, HE-WS-0030, HE-HS-0670, HE-PR-0070, HE-PR-1200, HE-PR-1270, HE-PR-0140","HE-PR-0040: FS, HE-PR-1240: FS, HE-PR-1250: FS, HE-PR-0060: FS, HE-WS-0030: FS, HE-HS-0670: SS, HE-PR-0070: FS, HE-PR-1200: FS, HE-PR-1270: FS, HE-PR-0140: FS",HE-PR-1290,HE-PR-1290: FS,2023-11-01 00:00:00,2023-11-07 00:00:00,6
HE-PR-1290,Obtain Company Approval- Process Datasheets,6,P2543-R01-Oct24..1.EN.3.20.1,HE-PR-1280,HE-PR-1280: FS,HE-PR-1300,HE-PR-1300: FS,2023-11-08 00:00:00,2023-11-16 00:00:00,8
HE-PR-1300,Final Issue for Design/ Construction-Process Datasheets,22,P2543-R01-Oct24..1.EN.3.20.1,HE-PR-1290,HE-PR-1290: FS,"HE-PR-1070, HM-ME-0120, CAB-4400, HM-ME-0420, HM-ME-0320","HE-PR-1070: FS, HM-ME-0120: FS, CAB-4400: FS, HM-ME-0420: FS, HM-ME-0320: FS",2023-11-17 00:00:00,2023-12-20 00:00:00,33
HE-PR-1560,Issue ICR- Process Datasheets,3,P2543-R01-Oct24..1.EN.3.20.7,"HE-PR-1260, ML1002","HE-PR-1260: FS, ML1002: SS","HE-PR-1570, HE-PR-1360","HE-PR-1570: FS, HE-PR-1360: FS",2023-11-14 00:00:00,2023-11-17 00:00:00,3
HE-PR-1570,Receive Company Comments- Process Datasheets,2,P2543-R01-Oct24..1.EN.3.20.7,HE-PR-1560,HE-PR-1560: FS,"HE-PR-1580, HE-IC-1340","HE-PR-1580: FS, HE-IC-1340: FS",2023-11-21 00:00:00,2023-11-23 00:00:00,2
HE-PR-1580,Re-Issue for Approval- Process Datasheets,10,P2543-R01-Oct24..1.EN.3.20.7,"HE-PR-0040, HE-PR-1240, HE-PR-1250, HE-PR-0060, HE-WS-0030, HE-HS-0670, HE-PR-0070, HE-PR-1200, HE-PR-1570, HE-PR-0140","HE-PR-0040: FS, HE-PR-1240: FS, HE-PR-1250: FS, HE-PR-0060: FS, HE-WS-0030: FS, HE-HS-0670: SS, HE-PR-0070: FS, HE-PR-1200: FS, HE-PR-1570: FS, HE-PR-0140: FS",HE-PR-1590,HE-PR-1590: FS,2023-12-29 00:00:00,2024-01-15 00:00:00,17
HE-PR-1590,Obtain Company Approval- Process Datasheets,11,P2543-R01-Oct24..1.EN.3.20.7,HE-PR-1580,HE-PR-1580: FS,HE-PR-1600,HE-PR-1600: FS,2024-02-26 00:00:00,2024-03-12 00:00:00,15
HE-PR-1600,Final Issue for Design/ Construction-Process Datasheets,8,P2543-R01-Oct24..1.EN.3.20.7,HE-PR-1590,HE-PR-1590: FS,"HE-PR-1070, HM-ME-0120, CAB-4400, HM-ME-0420, HM-ME-0320","HE-PR-1070: FS, HM-ME-0120: FS, CAB-4400: FS, HM-ME-0420: FS, HM-ME-0320: FS",2024-03-12 00:00:00,2024-03-25 00:00:00,13
HE-PR-1360,Issue ICR- Process Datasheets,9,P2543-R01-Oct24..1.EN.3.20.3,"HE-PR-1260, HE-PR-1560, ML1002","HE-PR-1260: FS, HE-PR-1560: FS, ML1002: SS","HE-PR-1370, HE-PR-1410","HE-PR-1370: FS, HE-PR-1410: FS",2023-10-02 00:00:00,2023-10-13 00:00:00,11
HE-PR-1370,Receive Company Comments- Process Datasheets,9,P2543-R01-Oct24..1.EN.3.20.3,HE-PR-1360,HE-PR-1360: FS,"HE-PR-1380, HE-IC-1450","HE-PR-1380: FS, HE-IC-1450: FS",2023-10-16 00:00:00,2023-10-27 00:00:00,11
HE-PR-1380,Re-Issue for Approval- Process Datasheets,4,P2543-R01-Oct24..1.EN.3.20.3,"HE-PR-0040, HE-PR-1240, HE-PR-1250, HE-PR-0060, HE-WS-0030, HE-HS-0670, HE-PR-0070, HE-PR-1200, HE-PR-1370, HE-PR-0140","HE-PR-0040: FS, HE-PR-1240: FS, HE-PR-1250: FS, HE-PR-0060: FS, HE-WS-0030: FS, HE-HS-0670: SS, HE-PR-0070: FS, HE-PR-1200: FS, HE-PR-1370: FS, HE-PR-0140: FS",HE-PR-1390,HE-PR-1390: FS,2023-11-15 00:00:00,2023-11-21 00:00:00,6
HE-PR-1390,Obtain Company Approval- Process Datasheets,9,P2543-R01-Oct24..1.EN.3.20.3,HE-PR-1380,HE-PR-1380: FS,HE-PR-1400,HE-PR-1400: FS,2023-12-04 00:00:00,2023-12-15 00:00:00,11
HE-PR-1400,Final Issue for Design/ Construction-Process Datasheets,11,P2543-R01-Oct24..1.EN.3.20.3,HE-PR-1390,HE-PR-1390: FS,"HE-PR-1070, HM-ME-0120, CAB-4400, HM-ME-0420, HM-ME-0320","HE-PR-1070: FS, HM-ME-0120: FS, CAB-4400: FS, HM-ME-0420: FS, HM-ME-0320: FS",2023-12-29 00:00:00,2024-01-16 00:00:00,18
HE-PR-1410,Issue ICR- Process Datasheets,8,P2543-R01-Oct24..1.EN.3.20.4,"HE-PR-1360, ML1002","HE-PR-1360: FS, ML1002: SS","HE-PR-1420, HE-PR-1460","HE-PR-1420: FS, HE-PR-1460: FS",2023-11-02 00:00:00,2023-11-14 00:00:00,12
HE-PR-1420,Receive Company Comments- Process Datasheets,3,P2543-R01-Oct24..1.EN.3.20.4,HE-PR-1410,HE-PR-1410: FS,"HE-PR-1430, HE-IC-1450","HE-PR-1430: FS, HE-IC-1450: FS",2023-11-15 00:00:00,2023-11-20 00:00:00,5
HE-PR-1430,Re-Issue for Approval- Process Datasheets,3,P2543-R01-Oct24..1.EN.3.20.4,"HE-PR-0040, HE-PR-1240, HE-PR-1250, HE-PR-0060, HE-WS-0030, HE-HS-0670, HE-PR-0070, HE-PR-1200, HE-PR-1420, HE-PR-0140","HE-PR-0040: FS, HE-PR-1240: FS, HE-PR-1250: FS, HE-PR-0060: FS, HE-WS-0030: FS, HE-HS-0670: SS, HE-PR-0070: FS, HE-PR-1200: FS, HE-PR-1420: FS, HE-PR-0140: FS",HE-PR-1440,HE-PR-1440: FS,2023-11-21 00:00:00,2023-11-24 00:00:00,3
HE-PR-1440,Obtain Company Approval- Process Datasheets,9,P2543-R01-Oct24..1.EN.3.20.4,HE-PR-1430,HE-PR-1430: FS,HE-PR-1450,HE-PR-1450: FS,2023-12-04 00:00:00,2023-12-15 00:00:00,11
HE-PR-1450,Final Issue for Design/ Construction-Process Datasheets,11,P2543-R01-Oct24..1.EN.3.20.4,HE-PR-1440,HE-PR-1440: FS,"HE-PR-1070, HM-ME-0120, CAB-4400, HM-ME-0420, HM-ME-0320","HE-PR-1070: FS, HM-ME-0120: FS, CAB-4400: FS, HM-ME-0420: FS, HM-ME-0320: FS",2023-12-29 00:00:00,2024-01-16 00:00:00,18
HE-PR-1460,Issue ICR- Process Datasheets,8,P2543-R01-Oct24..1.EN.3.20.5,"HE-PR-1410, ML1002","HE-PR-1410: FS, ML1002: SS","HE-PR-1470, HE-PR-1510, HE-IC-1450","HE-PR-1470: FS, HE-PR-1510: FS, HE-IC-1450: FS 5",2023-11-02 00:00:00,2023-11-14 00:00:00,12
HE-PR-1470,Receive Company Comments- Process Datasheets,3,P2543-R01-Oct24..1.EN.3.20.5,HE-PR-1460,HE-PR-1460: FS,"HE-PR-1480, HE-IC-1460","HE-PR-1480: FS, HE-IC-1460: FS",2023-11-15 00:00:00,2023-11-20 00:00:00,5
HE-PR-1480,Re-Issue for Approval- Process Datasheets,3,P2543-R01-Oct24..1.EN.3.20.5,"HE-PR-0040, HE-PR-1240, HE-PR-1250, HE-PR-0060, HE-WS-0030, HE-HS-0670, HE-PR-0070, HE-PR-1200, HE-PR-1470, HE-PR-0140","HE-PR-0040: FS, HE-PR-1240: FS, HE-PR-1250: FS, HE-PR-0060: FS, HE-WS-0030: FS, HE-HS-0670: SS, HE-PR-0070: FS, HE-PR-1200: FS, HE-PR-1470: FS, HE-PR-0140: FS",HE-PR-1490,HE-PR-1490: FS,2023-11-21 00:00:00,2023-11-24 00:00:00,3
HE-PR-1490,Obtain Company Approval- Process Datasheets,9,P2543-R01-Oct24..1.EN.3.20.5,HE-PR-1480,HE-PR-1480: FS,HE-PR-1500,HE-PR-1500: FS,2023-12-04 00:00:00,2023-12-15 00:00:00,11
HE-PR-1500,Final Issue for Design/ Construction-Process Datasheets,11,P2543-R01-Oct24..1.EN.3.20.5,HE-PR-1490,HE-PR-1490: FS,"HE-PR-1070, HM-ME-0120, CAB-4400, HM-ME-0420, HM-ME-0320","HE-PR-1070: FS, HM-ME-0120: FS, CAB-4400: FS, HM-ME-0420: FS, HM-ME-0320: FS",2023-12-29 00:00:00,2024-01-16 00:00:00,18
HE-PR-1510,Issue ICR- Process Datasheets,4,P2543-R01-Oct24..1.EN.3.20.6,"HE-PR-1460, ML1002","HE-PR-1460: FS, ML1002: SS","HE-PR-1520, HE-IC-1450","HE-PR-1520: FS, HE-IC-1450: FS",2023-11-16 00:00:00,2023-11-22 00:00:00,6
HE-PR-1520,Receive Company Comments- Process Datasheets,7,P2543-R01-Oct24..1.EN.3.20.6,HE-PR-1510,HE-PR-1510: FS,"HE-PR-1530, HE-IC-1460","HE-PR-1530: FS, HE-IC-1460: FS",2023-11-23 00:00:00,2023-12-05 00:00:00,12
HE-PR-1530,Re-Issue for Approval- Process Datasheets,3,P2543-R01-Oct24..1.EN.3.20.6,"HE-PR-0040, HE-PR-1240, HE-PR-1250, HE-PR-0060, HE-WS-0030, HE-HS-0670, HE-PR-0070, HE-PR-1200, HE-PR-1520, HE-PR-0140","HE-PR-0040: FS, HE-PR-1240: FS, HE-PR-1250: FS, HE-PR-0060: FS, HE-WS-0030: FS, HE-HS-0670: SS, HE-PR-0070: FS, HE-PR-1200: FS, HE-PR-1520: FS, HE-PR-0140: FS",HE-PR-1540,HE-PR-1540: FS,2023-12-06 00:00:00,2023-12-11 00:00:00,5
HE-PR-1540,Obtain Company Approval- Process Datasheets,8,P2543-R01-Oct24..1.EN.3.20.6,HE-PR-1530,HE-PR-1530: FS,HE-PR-1550,HE-PR-1550: FS,2023-12-12 00:00:00,2023-12-22 00:00:00,10
HE-PR-1550,Final Issue for Design/ Construction-Process Datasheets,11,P2543-R01-Oct24..1.EN.3.20.6,HE-PR-1540,HE-PR-1540: FS,"HE-PR-1070, HM-ME-0120, CAB-4400, HM-ME-0420, HM-ME-0320","HE-PR-1070: FS, HM-ME-0120: FS, CAB-4400: FS, HM-ME-0420: FS, HM-ME-0320: FS",2023-12-29 00:00:00,2024-01-16 00:00:00,18
HE-PR-1310,Issue ICR- Process Datasheets,4,P2543-R01-Oct24..1.EN.3.20.2,"HE-PR-1260, HE-PR-0790, ML1002","HE-PR-1260: FS 10, HE-PR-0790: FS, ML1002: SS","HE-PR-1320, HE-PR-0970, HE-IC-1330","HE-PR-1320: FS, HE-PR-0970: SS, HE-IC-1330: FS",2023-11-17 00:00:00,2023-11-23 00:00:00,6
HE-PR-1320,Receive Company Comments- Process Datasheets,4,P2543-R01-Oct24..1.EN.3.20.2,HE-PR-1310,HE-PR-1310: FS,"HE-PR-1330, HE-IC-1340","HE-PR-1330: FS, HE-IC-1340: FS",2023-11-27 00:00:00,2023-12-01 00:00:00,4
HE-PR-1330,Re-Issue for Approval- Process Datasheets,10,P2543-R01-Oct24..1.EN.3.20.2,"HE-PR-0040, HE-PR-1240, HE-PR-1250, HE-PR-0060, HE-WS-0030, HE-HS-0670, HE-PR-0070, HE-PR-1200, HE-PR-1320, HE-PR-0140","HE-PR-0040: FS, HE-PR-1240: FS, HE-PR-1250: FS, HE-PR-0060: FS, HE-WS-0030: FS, HE-HS-0670: SS, HE-PR-0070: FS, HE-PR-1200: FS, HE-PR-1320: FS, HE-PR-0140: FS 20",HE-PR-1340,HE-PR-1340: FS,2023-12-29 00:00:00,2024-01-15 00:00:00,17
HE-PR-1340,Obtain Company Approval- Process Datasheets,4,P2543-R01-Oct24..1.EN.3.20.2,HE-PR-1330,HE-PR-1330: FS,HE-PR-1350,HE-PR-1350: FS,2024-02-26 00:00:00,2024-03-01 00:00:00,4
HE-PR-1350,Final Issue for Design/ Construction-Process Datasheets,6,P2543-R01-Oct24..1.EN.3.20.2,HE-PR-1340,HE-PR-1340: FS,"HE-PR-1070, HM-ME-0120, CAB-4400, HM-ME-0420, HM-ME-0320","HE-PR-1070: FS, HM-ME-0120: FS, CAB-4400: FS, HM-ME-0420: FS, HM-ME-0320: FS",2024-03-02 00:00:00,2024-03-11 00:00:00,9
HE-PR-0610,Issue ICR- Process Simulations Report,6,P2543-R01-Oct24..1.EN.3.1,HE-PR-1240,HE-PR-1240: SS,"CAB-4400, HE-PR-0160, HE-PL-0650, HE-PI-0840, HE-PI-0600, HE-PR-0970, HE-PI-0720, HE-PR-0620, HE-PI-0660, HE-PR-1090, HE-PR-0730, HE-PI-0780, HE-PL-0610","CAB-4400: FS, HE-PR-0160: FS, HE-PL-0650: FS, HE-PI-0840: FS, HE-PI-0600: FS, HE-PR-0970: FS, HE-PI-0720: FS, HE-PR-0620: FS, HE-PI-0660: FS, HE-PR-1090: FS, HE-PR-0730: FS, HE-PI-0780: FS, HE-PL-0610: FS",2023-08-04 00:00:00,2023-08-14 00:00:00,10
HE-PR-0620,Receive Company Comments- Process Simulations Report,8,P2543-R01-Oct24..1.EN.3.1,HE-PR-0610,HE-PR-0610: FS,HE-PR-0630,HE-PR-0630: FS,2023-08-14 00:00:00,2023-08-24 00:00:00,10
HE-PR-0630,Re-Issue for Approval- Process Simulations Report,10,P2543-R01-Oct24..1.EN.3.1,HE-PR-0620,HE-PR-0620: FS,"HE-PR-0070, HE-PR-0750, HE-PR-0640, HE-PR-1200","HE-PR-0070: FS, HE-PR-0750: FS, HE-PR-0640: FS, HE-PR-1200: FS",2023-09-06 00:00:00,2023-09-20 00:00:00,14
HE-PR-0640,Obtain Company Approval- Process Simulations Report,4,P2543-R01-Oct24..1.EN.3.1,HE-PR-0630,HE-PR-0630: FS,HE-PR-0650,HE-PR-0650: FS,2023-10-06 00:00:00,2023-10-12 00:00:00,6
HE-PR-0650,Final Issue for Design/ Construction-Process Simulations Report,1,P2543-R01-Oct24..1.EN.3.1,HE-PR-0640,HE-PR-0640: FS,"CAB-4400, HE-PL-0650, ML1219-B19, HE-PI-0170, HE-PR-1130, HE-PR-1070, HE-PR-0090, HE-PR-0160, HE-PR-1220, HE-PI-0620, ML1219-B29, HE-PR-0730","CAB-4400: FS, HE-PL-0650: FS, ML1219-B19: FF, HE-PI-0170: FS, HE-PR-1130: FS, HE-PR-1070: FS, HE-PR-0090: FS, HE-PR-0160: FS, HE-PR-1220: FS, HE-PI-0620: FS, ML1219-B29: FF, HE-PR-0730: FS",2023-11-23 00:00:00,2023-11-24 00:00:00,1
HE-PR-0730,"Issue ICR- Operating and control philosophy, Safeguarding philosophy",26,P2543-R01-Oct24..1.EN.3.4,"HE-PR-0610, HE-PR-0110, HE-PR-0650","HE-PR-0610: FS, HE-PR-0110: FS, HE-PR-0650: FS","HE-PR-0910, HE-PR-0740, HE-PR-0790, HE-PI-0620, ML1219-B29, CAB-4400","HE-PR-0910: FS, HE-PR-0740: FS, HE-PR-0790: FS, HE-PI-0620: FS, ML1219-B29: FF, CAB-4400: FS",2023-10-26 00:00:00,2023-12-01 00:00:00,36
HE-PR-0740,"Receive Company Comments- Operating and control philosophy , Safeguarding philosophy",5,P2543-R01-Oct24..1.EN.3.4,HE-PR-0730,HE-PR-0730: FS,"HE-PR-0750, HE-PR-0800","HE-PR-0750: FS, HE-PR-0800: FS",2023-12-04 00:00:00,2023-12-11 00:00:00,7
HE-PR-0750,"Re-Issue for Approval- Operating and control philosophy , Safeguarding philosophy",12,P2543-R01-Oct24..1.EN.3.4,"HE-PR-0630, HE-PR-0140, HE-PR-0740","HE-PR-0630: FS, HE-PR-0140: FS, HE-PR-0740: FS","HE-PR-0930, HE-PR-0760","HE-PR-0930: FS, HE-PR-0760: FS",2023-12-12 00:00:00,2023-12-28 00:00:00,16
HE-PR-0760,"Obtain Company Approval- Operating and control philosophy , Safeguarding philosophy",6,P2543-R01-Oct24..1.EN.3.4,HE-PR-0750,HE-PR-0750: FS,HE-PR-0770,HE-PR-0770: FS,2023-12-29 00:00:00,2024-01-09 00:00:00,11
HE-PR-0770,"Final Issue for Design/ Construction-Operating , control and safeguarding philosophy",207,P2543-R01-Oct24..1.EN.3.4,HE-PR-0760,HE-PR-0760: FS,"HE-PR-0910, C-COM-800, HE-PR-0950, HE-PI-0620, ML1219-B29, CAB-4400","HE-PR-0910: FS, C-COM-800: FS, HE-PR-0950: FS, HE-PI-0620: FS, ML1219-B29: FF, CAB-4400: FS",2023-12-14 00:00:00,2024-10-14 17:30:00,305
HE-PR-0790,"Issue ICR - Relief, Vent and Blowdown Philosophy",4,P2543-R01-Oct24..1.EN.3.9,HE-PR-0730,HE-PR-0730: FS,"HE-PR-0800, HE-PI-0620, ML1219-B29, CAB-4400, HE-PR-1310","HE-PR-0800: FS, HE-PI-0620: FS, ML1219-B29: FF, CAB-4400: FS, HE-PR-1310: FS",2023-09-06 00:00:00,2023-09-12 00:00:00,6
HE-PR-0800,"Receive Company Comments - Relief, Vent and Blowdown Philosophy",20,P2543-R01-Oct24..1.EN.3.9,"HE-PR-0790, HE-PR-0740","HE-PR-0790: FS, HE-PR-0740: FS",HE-PR-0810,HE-PR-0810: FS,2023-09-13 00:00:00,2023-10-11 00:00:00,28
HE-PR-0810,"Re-Issue for Approval - Relief, Vent and Blowdown Philosophy",6,P2543-R01-Oct24..1.EN.3.9,"HE-PR-0140, HE-PR-0800","HE-PR-0140: FS, HE-PR-0800: FS",HE-PR-0820,HE-PR-0820: FS,2023-11-09 00:00:00,2023-11-17 00:00:00,8
HE-PR-0820,"Obtain Company Approval - Relief, Vent and Blowdown Philosophy",7,P2543-R01-Oct24..1.EN.3.9,HE-PR-0810,HE-PR-0810: FS,HE-PR-0830,HE-PR-0830: FS,2023-11-22 00:00:00,2023-12-01 00:00:00,9
HE-PR-0830,"Final Issue for Design/ Construction-Relief, Vent and Blowdown philosophy",12,P2543-R01-Oct24..1.EN.3.9,HE-PR-0820,HE-PR-0820: FS,"ML1219-B29, C-COM-800, CAB-4400, HE-PI-0620, C-COM-750","ML1219-B29: FF, C-COM-800: FS, CAB-4400: FS, HE-PI-0620: FS, C-COM-750: FS",2023-12-04 00:00:00,2023-12-20 00:00:00,16
HE-PR-0970,Issue ICR- Vent and Depressurization Report (for new facilities),38,P2543-R01-Oct24..1.EN.3.18,"HE-PR-0610, HE-PI-0390, HE-PI-0320, HE-PL-0010, HE-PR-0490, HE-PR-1310","HE-PR-0610: FS, HE-PI-0390: FS, HE-PI-0320: FS, HE-PL-0010: FS, HE-PR-0490: FS, HE-PR-1310: SS",HE-PR-0980,HE-PR-0980: FS,2023-11-03 00:00:00,2023-12-28 00:00:00,55
HE-PR-0980,Receive Company Comments- Vent and Depressurization Report (for new facilities),38,P2543-R01-Oct24..1.EN.3.18,HE-PR-0970,HE-PR-0970: FS,HE-PR-0990,HE-PR-0990: FS,2023-11-03 00:00:00,2023-12-28 00:00:00,55
HE-PR-0990,Re-Issue for Approval- Vent and Depressurization Report (for new facilities),38,P2543-R01-Oct24..1.EN.3.18,HE-PR-0980,HE-PR-0980: FS,HE-PR-1000,HE-PR-1000: FS,2023-11-03 00:00:00,2023-12-28 00:00:00,55
HE-PR-1000,Obtain Company Approval- Vent and Depressurization Report (for new facilities),38,P2543-R01-Oct24..1.EN.3.18,HE-PR-0990,HE-PR-0990: FS,HE-PR-1010,HE-PR-1010: FS,2023-11-03 00:00:00,2023-12-28 00:00:00,55
HE-PR-1010,Final Issue for Design/ Construction-Vent and Depressurization Report (for new facilities),48,P2543-R01-Oct24..1.EN.3.18,"HE-PR-1000, HE-PL-0050","HE-PR-1000: FS, HE-PL-0050: FS","HE-PI-0440, HE-PI-0510, HE-PI-0370, HE-PI-0580, HE-PR-1130, CAB-4400","HE-PI-0440: FS, HE-PI-0510: FS, HE-PI-0370: FS, HE-PI-0580: FS, HE-PR-1130: FS, CAB-4400: FS",2023-12-29 00:00:00,2024-03-07 00:00:00,69
HE-PR-1030,Issue ICR - Equipment List,6,P2543-R01-Oct24..1.EN.3.10,"HE-PR-0490, HE-PR-0370, HE-PR-0310, HE-PR-0430","HE-PR-0490: FF, HE-PR-0370: FF, HE-PR-0310: FF, HE-PR-0430: FF","HE-PI-0130, HE-PR-1040, HE-PI-0010, HE-PI-0320","HE-PI-0130: FS, HE-PR-1040: FS, HE-PI-0010: FF 5, HE-PI-0320: FS",2023-08-11 00:00:00,2023-08-21 00:00:00,10
HE-PR-1040,Receive Company Comments - Equipment List,7,P2543-R01-Oct24..1.EN.3.10,HE-PR-1030,HE-PR-1030: FS,"HE-PR-1050, HE-PI-0390","HE-PR-1050: FS, HE-PI-0390: FS",2023-08-22 00:00:00,2023-08-31 00:00:00,9
HE-PR-1050,Re-Issue for Approval - Equipment List,14,P2543-R01-Oct24..1.EN.3.10,"HE-PR-0070, HE-PR-1040, HE-PR-1200","HE-PR-0070: FS, HE-PR-1040: FS, HE-PR-1200: FS","HE-PR-1060, ML1012-B06","HE-PR-1060: FS, ML1012-B06: FS",2023-09-01 00:00:00,2023-09-21 00:00:00,20
HE-PR-1060,Obtain Company Approval - Equipment List,10,P2543-R01-Oct24..1.EN.3.10,"ML1012-B06, HE-PR-1050, HE-PR-1120","ML1012-B06: FS, HE-PR-1050: FS, HE-PR-1120: FS","HE-PR-1070, HE-PL-0410","HE-PR-1070: FS, HE-PL-0410: FF",2023-09-22 00:00:00,2023-10-06 00:00:00,14
HE-PR-1070,Final Issue for Design/ Construction-Equipment List,6,P2543-R01-Oct24..1.EN.3.10,"HE-PR-0590, HE-PR-1060, HE-PR-0470, HE-PR-0530, HE-PR-0650, HE-PR-0350, HE-PR-0410, HE-PR-1300, HE-PR-1350, HE-PR-1400, HE-PR-1450, HE-PR-1500, HE-PR-1550, HE-PR-1600","HE-PR-0590: FS, HE-PR-1060: FS, HE-PR-0470: FS, HE-PR-0530: FS, HE-PR-0650: FS, HE-PR-0350: FS, HE-PR-0410: FS, HE-PR-1300: FS, HE-PR-1350: FS, HE-PR-1400: FS, HE-PR-1450: FS, HE-PR-1500: FS, HE-PR-1550: FS, HE-PR-1600: FS","ML1219-B29, ML1014-B10, ML1179-B11, CAB-4400","ML1219-B29: FF, ML1014-B10: FS, ML1179-B11: FS, CAB-4400: FS",2023-11-21 00:00:00,2023-11-29 00:00:00,8
HE-PR-1090,Issue ICR- Line List,14,P2543-R01-Oct24..1.EN.3.17,"HE-PR-0040, HE-PR-1240, HE-PR-0610, HE-PR-0110","HE-PR-0040: FS, HE-PR-1240: FS, HE-PR-0610: FS, HE-PR-0110: FS","HE-PR-1100, HE-PI-0262, HE-PI-0900, HE-PI-0960","HE-PR-1100: FS, HE-PI-0262: FS 5, HE-PI-0900: FF, HE-PI-0960: FF",2023-10-02 00:00:00,2023-10-20 00:00:00,18
HE-PR-1100,Receive Company Comments- Line List,5,P2543-R01-Oct24..1.EN.3.17,HE-PR-1090,HE-PR-1090: FS,HE-PR-1110,HE-PR-1110: FS,2023-10-20 00:00:00,2023-10-27 00:00:00,7
HE-PR-1110,Re-Issue for Approval- Line List,18,P2543-R01-Oct24..1.EN.3.17,HE-PR-1100,HE-PR-1100: FS,"HE-PR-1120, HE-PI-0262","HE-PR-1120: FS, HE-PI-0262: FS 10",2023-12-01 00:00:00,2023-12-28 00:00:00,27
HE-PR-1120,Obtain Company Approval- Line List,9,P2543-R01-Oct24..1.EN.3.17,HE-PR-1110,HE-PR-1110: FS,"HE-PR-1130, HE-PR-1060","HE-PR-1130: FS, HE-PR-1060: FS",2023-12-29 00:00:00,2024-01-12 00:00:00,14
HE-DB-80,Issue ICR- Pipeline Design Basis,7,P2543-R01-Oct24..1.EN.1.56,HE-DB-0010,HE-DB-0010: FS,"HE-PL-0010, HE-PL-3860, HE-DB-90","HE-PL-0010: FF, HE-PL-3860: FS, HE-DB-90: FS",2023-08-06 00:00:00,2023-08-16 00:00:00,10
HE-DB-90,Receive Company Comments-Design Basis,8,P2543-R01-Oct24..1.EN.1.56,HE-DB-80,HE-DB-80: FS,HE-DB-50,HE-DB-50: FS,2023-08-15 00:00:00,2023-08-25 00:00:00,10
HE-DB-50,Re-Issue for Approval-Design Basis,45,P2543-R01-Oct24..1.EN.1.56,HE-DB-90,HE-DB-90: FS,HE-DB-70,HE-DB-70: FS,2023-08-26 00:00:00,2023-10-30 00:00:00,65
HE-DB-70,Obtain Company Approval-Design Basis,12,P2543-R01-Oct24..1.EN.1.56,HE-DB-50,HE-DB-50: FS,HE-DB-60,HE-DB-60: FS,2023-10-31 00:00:00,2023-11-16 00:00:00,16
HE-DB-60,Final Issue for Design/ Construction-Design Basis,152,P2543-R01-Oct24..1.EN.1.56,HE-DB-70,HE-DB-70: FS,HE-PL-0070,HE-PL-0070: SS,2023-11-17 00:00:00,2024-07-02 17:30:00,228
HE-PL-0010,Issue ICR - Specification - Pipeline Wall Thickness Calculation Report,3,P2543-R01-Oct24..1.EN.1.41,"HE-DB-80, ML1002","HE-DB-80: FF, ML1002: FS","HE-PL-3860, HE-PL-0020, HE-PR-0970","HE-PL-3860: FS, HE-PL-0020: FS, HE-PR-0970: FS",2023-07-29 00:00:00,2023-08-03 00:00:00,5
HE-PL-0020,Receive Company Comments - Pipeline Wall Thickness Calculation Report,5,P2543-R01-Oct24..1.EN.1.41,HE-PL-0010,HE-PL-0010: FS,HE-PL-0030,HE-PL-0030: FS,2023-08-03 00:00:00,2023-08-10 00:00:00,7
HE-PL-0030,Re-Issue for Approval - Specification -Pipeline Wall Thickness Calculation Report,4,P2543-R01-Oct24..1.EN.1.41,HE-PL-0020,HE-PL-0020: FS,HE-PL-0040,HE-PL-0040: FS,2023-08-10 00:00:00,2023-08-16 00:00:00,6
HE-PL-0040,Obtain Company Approval - Pipeline Wall Thickness Calculation Report,4,P2543-R01-Oct24..1.EN.1.41,HE-PL-0030,HE-PL-0030: FS,HE-PL-0050,HE-PL-0050: FS,2023-08-16 00:00:00,2023-08-22 00:00:00,6
HE-PL-0050,Final Issue for Design/ Construction - Pipeline Wall Thickness Calculation Report,9,P2543-R01-Oct24..1.EN.1.41,HE-PL-0040,HE-PL-0040: FS,"HE-PL-3860, HE-PL-3850, HE-PL-2870, CAB-4480, HE-PR-1010","HE-PL-3860: FS 10, HE-PL-3850: FS, HE-PL-2870: FS, CAB-4480: FS, HE-PR-1010: FS",2023-12-29 00:00:00,2024-01-12 00:00:00,14
HE-PL-3860,Issue ICR - Specification - PIPELINE CROSSING CALCULATION REPORT,12,P2543-R01-Oct24..1.EN.1.17,"HE-PL-0050, HE-PL-0010, HE-DB-80","HE-PL-0050: FS 10, HE-PL-0010: FS, HE-DB-80: FS",HE-PL-3870,HE-PL-3870: FS,2023-08-23 00:00:00,2023-09-08 00:00:00,16
HE-PL-3870,Receive Company Comments - PIPELINE CROSSING CALCULATION REPORT,13,P2543-R01-Oct24..1.EN.1.17,HE-PL-3860,HE-PL-3860: FS,HE-PL-3830,HE-PL-3830: FS,2023-09-11 00:00:00,2023-09-28 00:00:00,17
HE-PL-3830,Re-Issue for Approval - Specification -PIPELINE CROSSING CALCULATION REPORT,0,P2543-R01-Oct24..1.EN.1.17,HE-PL-3870,HE-PL-3870: FS,HE-PL-3840,HE-PL-3840: FS,2023-11-28 00:00:00,2023-11-28 00:00:00,1
HE-PL-3840,Obtain Company Approval - PIPELINE CROSSING CALCULATION REPORT,0,P2543-R01-Oct24..1.EN.1.17,HE-PL-3830,HE-PL-3830: FS,HE-PL-3850,HE-PL-3850: FS,2023-11-28 00:00:00,2023-11-28 00:00:00,1
HE-PL-3850,Final Issue for Design/ Construction - PIPELINE CROSSING CALCULATION REPORT,27,P2543-R01-Oct24..1.EN.1.17,"HE-PL-0050, HE-PL-3840","HE-PL-0050: FS, HE-PL-3840: FS",HE-PL-0110,HE-PL-0110: FS,2023-11-28 00:00:00,2024-01-08 00:00:00,41
HE-PL-0070,Issue ICR - Pipeline Specifications - Addendum to DGS,6,P2543-R01-Oct24..1.EN.1.8,"ML1002, HE-DB-60","ML1002: FS, HE-DB-60: SS","HE-PL-0370, HE-CS-0130, HE-PL-1210, HE-PL-0430, HE-PL-0080, HE-PL-0790","HE-PL-0370: SS 5, HE-CS-0130: FS, HE-PL-1210: FS, HE-PL-0430: FS 5, HE-PL-0080: FS, HE-PL-0790: FS",2023-10-31 00:00:00,2023-11-08 00:00:00,8
HE-PL-0080,Receive Company Comments - Pipeline Specifications - Addendum to DGS,6,P2543-R01-Oct24..1.EN.1.8,HE-PL-0070,HE-PL-0070: FS,HE-PL-0090,HE-PL-0090: FS,2023-11-09 00:00:00,2023-11-17 00:00:00,8
HE-PL-0090,Re-Issue for Approval - Pipeline Specifications - Addendum to DGS,7,P2543-R01-Oct24..1.EN.1.8,HE-PL-0080,HE-PL-0080: FS,HE-PL-0100,HE-PL-0100: FS,2023-11-20 00:00:00,2023-11-29 00:00:00,9
HE-PL-0100,Obtain Company Approval - Pipeline Specifications - Addendum to DGS,9,P2543-R01-Oct24..1.EN.1.8,HE-PL-0090,HE-PL-0090: FS,HE-PL-0110,HE-PL-0110: FS,2023-12-01 00:00:00,2023-12-15 00:00:00,14
HE-PL-0110,Final Issue for Design/ Construction-Pipeline Specifications - Addendum to DGS,19,P2543-R01-Oct24..1.EN.1.8,"HE-PL-3850, HE-PL-0100","HE-PL-3850: FS, HE-PL-0100: FS","CAB-4480, HE-PL-1250, ML1015-B08, HM-ME-0420, ML1017-B18","CAB-4480: FS, HE-PL-1250: FS, ML1015-B08: FF, HM-ME-0420: FS, ML1017-B18: FS",2023-12-16 00:00:00,2024-01-15 00:00:00,30
HE-PL-0130,"Issue ICR - Overall Pipeline Route Map - 56""",29,P2543-R01-Oct24..1.EN.1.28,"HE-PL-0190, HE-GS-0010, HE-TS-0010, HE-SS-0020, ML1002, HE-TS-230, HE-GS-140","HE-PL-0190: SS 5, HE-GS-0010: FS, HE-TS-0010: FS, HE-SS-0020: FS 20, ML1002: SS, HE-TS-230: FS, HE-GS-140: FS","HE-PL-0250, HE-PL-0140, C-GOV-1000","HE-PL-0250: FS, HE-PL-0140: FS, C-GOV-1000: FF",2024-03-18 00:00:00,2024-05-06 00:00:00,49
HE-PL-0140,"Receive Company Comments - Overall Pipeline Route Map - 56""",14,P2543-R01-Oct24..1.EN.1.28,HE-PL-0130,HE-PL-0130: FS,HE-PL-0150,HE-PL-0150: FS,2024-05-07 00:00:00,2024-05-25 00:00:00,18
HE-PL-0150,"Re-Issue for Approval - Overall Pipeline Route Map - 56""",1,P2543-R01-Oct24..1.EN.1.28,"HE-PL-0140, HE-TS-0010, HE-TS-230","HE-PL-0140: FS, HE-TS-0010: FS, HE-TS-230: FS",HE-PL-0160,HE-PL-0160: FS,2024-05-26 00:00:00,2024-05-28 00:00:00,2
HE-PL-0160,"Obtain Company Approval - Overall Pipeline Route Map - 56""",2,P2543-R01-Oct24..1.EN.1.28,HE-PL-0150,HE-PL-0150: FS,"ML1008-B03, HE-PL-0170","ML1008-B03: FF, HE-PL-0170: FS",2024-05-29 00:00:00,2024-05-31 00:00:00,2
HE-PL-0170,"Final Issue for Design/ Construction-Overall Pipeline Route Map - 56""",79,P2543-R01-Oct24..1.EN.1.28,HE-PL-0160,HE-PL-0160: FS,"HC-GN-0290, ML1139-A06, HS-CN-0060, HE-PL-0830, CAB-4480, C-PER-1000, C-56-01HG-PL-CI-1000, C-56-HC01-PL-CI-2400","HC-GN-0290: FS, ML1139-A06: FF 50, HS-CN-0060: SS, HE-PL-0830: FF, CAB-4480: FS, C-PER-1000: SS 14, C-56-01HG-PL-CI-1000: SS, C-56-HC01-PL-CI-2400: FS",2024-06-03 00:00:00,2024-09-26 07:30:00,115
HE-PL-0190,"Issue ICR - Overall Pipeline Route Map - 52""",21,P2543-R01-Oct24..1.EN.1.34,"HE-GS-0010, HE-TS-0010, HE-SS-0020, ML1002, HE-GS-90, HE-TS-280","HE-GS-0010: FS, HE-TS-0010: FS, HE-SS-0020: FS 20, ML1002: SS, HE-GS-90: FS, HE-TS-280: FS","HE-PL-0130, HE-PL-0200, HE-PL-0310, C-GOV-1000","HE-PL-0130: SS 5, HE-PL-0200: FS, HE-PL-0310: FS, C-GOV-1000: FS",2024-03-30 00:00:00,2024-05-05 00:00:00,36
HE-PL-0200,"Receive Company Comments - Overall Pipeline Route Map - 52""",14,P2543-R01-Oct24..1.EN.1.34,HE-PL-0190,HE-PL-0190: FS,"HE-PL-0210, C-52-HG01-PL-CI-1000","HE-PL-0210: FS, C-52-HG01-PL-CI-1000: FS 5",2024-05-07 00:00:00,2024-05-27 00:00:00,20
HE-PL-0210,"Re-Issue for Approval - Overall Pipeline Route Map - 52""",9,P2543-R01-Oct24..1.EN.1.34,"HE-PL-0200, HE-TS-0010, HE-TS-280","HE-PL-0200: FS, HE-TS-0010: FS, HE-TS-280: FS","HE-PL-0220, HE-PL-2470","HE-PL-0220: FS, HE-PL-2470: FS",2024-05-28 00:00:00,2024-06-08 00:00:00,11
HE-PL-0220,"Obtain Company Approval - Overall Pipeline Route Map - 52""",2,P2543-R01-Oct24..1.EN.1.34,HE-PL-0210,HE-PL-0210: FS,"HE-PL-1930, HE-PL-0230","HE-PL-1930: FS, HE-PL-0230: FS",2024-06-09 00:00:00,2024-06-12 00:00:00,3
HE-PL-0230,"Final Issue for Design/ Construction-Overall Pipeline Route Map - 52""",5,P2543-R01-Oct24..1.EN.1.34,HE-PL-0220,HE-PL-0220: FS,"CAB-4480, HE-PL-2490, HC-GN-0290, ML1009-B04, HE-PL-0830, ML1149-A07, C-52-0405-PL-CI-1800","CAB-4480: FS, HE-PL-2490: FF, HC-GN-0290: FS, ML1009-B04: FF, HE-PL-0830: FS, ML1149-A07: FF, C-52-0405-PL-CI-1800: FF",2024-06-13 00:00:00,2024-06-24 17:30:00,11
HE-PL-0250,"Issue ICR - Overall Pipeline Route Map - 4""",30,P2543-R01-Oct24..1.EN.1.2,"HE-PL-0130, HE-GS-0010, HE-TS-0010, ML1002, HE-GS-190, HE-TS-330","HE-PL-0130: FS, HE-GS-0010: FS, HE-TS-0010: FS, ML1002: SS, HE-GS-190: FS, HE-TS-330: FS","HE-PL-0260, C-GOV-1000","HE-PL-0260: FS, C-GOV-1000: FF",2024-03-19 00:00:00,2024-05-08 00:00:00,50
HE-PL-0260,"Receive Company Comments - Overall Pipeline Route Map - 4""",17,P2543-R01-Oct24..1.EN.1.2,HE-PL-0250,HE-PL-0250: FS,HE-PL-0270,HE-PL-0270: FS,2024-05-09 00:00:00,2024-06-02 00:00:00,24
HE-PL-0270,"Re-Issue for Approval - Overall Pipeline Route Map - 4""",2,P2543-R01-Oct24..1.EN.1.2,"HE-PL-0260, HE-TS-0010, HE-TS-330","HE-PL-0260: FS, HE-TS-0010: FS, HE-TS-330: FS",HE-PL-0280,HE-PL-0280: FS,2024-06-03 00:00:00,2024-06-05 00:00:00,2
HE-PL-0280,"Obtain Company Approval - Overall Pipeline Route Map - 4""",2,P2543-R01-Oct24..1.EN.1.2,HE-PL-0270,HE-PL-0270: FS,HE-PL-0290,HE-PL-0290: FS,2024-06-05 00:00:00,2024-06-07 00:00:00,2
HE-PL-0290,"Final Issue for Design/ Construction-Overall Pipeline Route Map - 4""",8,P2543-R01-Oct24..1.EN.1.2,HE-PL-0280,HE-PL-0280: FS,"HE-PL-0830, ML1169-A09, CAB-4480, HC-GN-0290, HE-PL-2490, C-4N-H5HG-PIPEL-1000, C-4N-H5HG-PIPEL-1000, C-4W-SVHG-PIPEL-1000, C-PER-1000","HE-PL-0830: FS, ML1169-A09: FF 40, CAB-4480: FS, HC-GN-0290: FS, HE-PL-2490: FF, C-4N-H5HG-PIPEL-1000: FF, C-4N-H5HG-PIPEL-1000: FS, C-4W-SVHG-PIPEL-1000: FS, C-PER-1000: SS 14",2024-06-08 00:00:00,2024-06-24 17:30:00,16
HE-PL-0310,"Issue ICR - Pipeline Schematic Arrangement - 56"", 52"" and 4"" Pipelines",5,P2543-R01-Oct24..1.EN.1.13,"HE-PR-0110, HE-PL-0190","HE-PR-0110: FS, HE-PL-0190: FS",HE-PL-0320,HE-PL-0320: FS,2024-03-22 00:00:00,2024-03-30 17:30:00,8
HE-PL-0320,"Receive Company Comments - Pipeline Schematic Arrangement -  56"", 52"" and 4"" Pipelines",6,P2543-R01-Oct24..1.EN.1.13,HE-PL-0310,HE-PL-0310: FS,HE-PL-0330,HE-PL-0330: FS,2024-04-01 07:30:00,2024-04-15 17:30:00,14
HE-PL-0330,"Re-Issue for Approval - Pipeline Schematic Arrangement - 56"", 52"" and 4"" Pipelines",11,P2543-R01-Oct24..1.EN.1.13,HE-PL-0320,HE-PL-0320: FS,HE-PL-0340,HE-PL-0340: FS,2024-04-16 07:30:00,2024-04-30 17:30:00,14
HE-PL-0340,"Obtain Company Approval - Pipeline Schematic Arrangement - 56"", 52"" and 4"" Pipelines",13,P2543-R01-Oct24..1.EN.1.13,HE-PL-0330,HE-PL-0330: FS,HE-PL-0350,HE-PL-0350: FS,2024-05-01 07:30:00,2024-05-17 17:30:00,16
HE-PL-0350,"Final Issue for Design/ Construction-Pipeline Schematic Arrangement - 56"", 52"" and 4"" Pipelines",9,P2543-R01-Oct24..1.EN.1.13,HE-PL-0340,HE-PL-0340: FS,"CAB-4480, C-56-HC01-PL-ME-2800, C-52-06CR-PL-ME-2800","CAB-4480: FS, C-56-HC01-PL-ME-2800: FF 21, C-52-06CR-PL-ME-2800: FS",2024-05-18 07:30:00,2024-05-30 17:30:00,12
HE-PL-0370,Issue ICR - Pipeline Typical Drawings,6,P2543-R01-Oct24..1.EN.1.27,HE-PL-0070,HE-PL-0070: SS 5,HE-PL-0380,HE-PL-0380: FS,2023-11-15 00:00:00,2023-11-23 00:00:00,8
HE-PL-0380,Receive Company Comments - Pipeline Typical Drawings,5,P2543-R01-Oct24..1.EN.1.27,HE-PL-0370,HE-PL-0370: FS,HE-PL-0390,HE-PL-0390: FS,2023-11-27 00:00:00,2023-12-05 00:00:00,8
HE-PL-0390,Re-Issue for Approval - Pipeline Typical Drawings,5,P2543-R01-Oct24..1.EN.1.27,HE-PL-0380,HE-PL-0380: FS,HE-PL-0400,HE-PL-0400: FS,2023-12-06 00:00:00,2023-12-13 00:00:00,7
HE-PL-0400,Obtain Company Approval - Pipeline Typical Drawings,8,P2543-R01-Oct24..1.EN.1.27,HE-PL-0390,HE-PL-0390: FS,HE-PL-0410,HE-PL-0410: FS,2023-12-14 00:00:00,2023-12-26 00:00:00,12
HE-PL-0410,Final Issue for Design/ Construction-Pipeline Typical Drawings,202,P2543-R01-Oct24..1.EN.1.27,"HE-PL-0400, HE-PR-1060","HE-PL-0400: FS, HE-PR-1060: FF",CAB-4480,CAB-4480: FS,2023-12-27 00:00:00,2024-10-18 17:30:00,296
HE-PL-0430,Issue ICR - Specification - Split Tee,4,P2543-R01-Oct24..1.EN.1.40,"HE-PL-0070, HS-CN-0540","HE-PL-0070: FS 5, HS-CN-0540: FS","HE-PL-0440, HE-PL-1330, HC-GN-340","HE-PL-0440: FS, HE-PL-1330: SS 5, HC-GN-340: FS",2023-11-16 00:00:00,2023-11-22 00:00:00,6
HE-PL-0440,Receive Company Comments - Specification - Split Tee,18,P2543-R01-Oct24..1.EN.1.40,HE-PL-0430,HE-PL-0430: FS,HE-PL-0450,HE-PL-0450: FS,2023-12-01 00:00:00,2023-12-28 00:00:00,27
HE-PL-0450,Re-Issue for Approval - Specification - Split Tee,5,P2543-R01-Oct24..1.EN.1.40,HE-PL-0440,HE-PL-0440: FS,HE-PL-0460,HE-PL-0460: FS,2023-12-29 00:00:00,2024-01-07 00:00:00,9
HE-PL-0460,Obtain Company Approval - Specification - Split Tee,6,P2543-R01-Oct24..1.EN.1.40,HE-PL-0450,HE-PL-0450: FS,HE-PL-0470,HE-PL-0470: FS,2024-01-08 00:00:00,2024-01-16 00:00:00,8
HE-PL-0470,Final Issue for Design/ Construction-Specification - Split Tee,12,P2543-R01-Oct24..1.EN.1.40,HE-PL-0460,HE-PL-0460: FS,HE-PL-1370,HE-PL-1370: FS,2024-02-07 00:00:00,2024-02-23 00:00:00,16
HE-PL-0610,Issue ICR - Pipeline Upheaval Calculation,4,P2543-R01-Oct24..1.EN.1.3,"HE-DB-0010, HE-PR-0610, HE-TS-0010","HE-DB-0010: FS, HE-PR-0610: FS, HE-TS-0010: FS","HE-PL-0620, HE-PL-2810, HE-PL-0670","HE-PL-0620: FS, HE-PL-2810: FS, HE-PL-0670: FS",2023-11-08 00:00:00,2023-11-14 00:00:00,6
HE-PL-0620,Receive Company Comments - Pipeline Upheaval Calculation,8,P2543-R01-Oct24..1.EN.1.3,HE-PL-0610,HE-PL-0610: FS,HE-PL-0630,HE-PL-0630: FS,2023-11-07 00:00:00,2023-11-17 00:00:00,10
HE-PL-0630,Re-Issue for Approval - Pipeline Upheaval Calculation,35,P2543-R01-Oct24..1.EN.1.3,HE-PL-0620,HE-PL-0620: FS,HE-PL-0640,HE-PL-0640: FS,2023-11-18 00:00:00,2024-01-10 00:00:00,53
HE-PL-0640,Obtain Company Approval - Pipeline Upheaval Calculation,35,P2543-R01-Oct24..1.EN.1.3,HE-PL-0630,HE-PL-0630: FS,HE-PL-0650,HE-PL-0650: FS,2023-11-18 00:00:00,2024-01-10 00:00:00,53
HE-PL-0650,Final Issue for Design/ Construction-Pipeline Upheaval Calculation,98,P2543-R01-Oct24..1.EN.1.3,"HE-PR-0610, HE-PR-0650, HE-PL-0640","HE-PR-0610: FS, HE-PR-0650: FS, HE-PL-0640: FS",CAB-4480,CAB-4480: FS,2024-01-10 00:00:00,2024-06-04 00:00:00,146
HE-PL-0670,Issue ICR - Pipeline Road Crossing Calculation Report,6,P2543-R01-Oct24..1.EN.1.4,"HE-PL-0610, HE-GS-0010, HE-TS-0010","HE-PL-0610: FS, HE-GS-0010: FS, HE-TS-0010: FS","HE-PL-0680, HE-PL-2810","HE-PL-0680: FS, HE-PL-2810: FS",2023-08-25 00:00:00,2023-09-02 00:00:00,8
HE-PL-0680,Receive Company Comments - Pipeline Road Crossing Calculation Report,3,P2543-R01-Oct24..1.EN.1.4,HE-PL-0670,HE-PL-0670: FS,HE-PL-0690,HE-PL-0690: FS,2023-09-03 00:00:00,2023-09-07 00:00:00,4
HE-PL-0690,Re-Issue for Approval - Pipeline Road Crossing Calculation Report,56,P2543-R01-Oct24..1.EN.1.4,HE-PL-0680,HE-PL-0680: FS,HE-PL-0700,HE-PL-0700: FS,2023-09-11 00:00:00,2023-11-28 00:00:00,78
HE-PL-0700,Obtain Company Approval - Pipeline Road Crossing Calculation Report,12,P2543-R01-Oct24..1.EN.1.4,HE-PL-0690,HE-PL-0690: FS,HE-PL-0710,HE-PL-0710: FF 10,2023-11-29 00:00:00,2023-12-15 17:30:00,16
HE-PL-0790,Issue ICR - Pipeline Location Class Selection Report (Incl Valve Sectionalizing),2,P2543-R01-Oct24..1.EN.1.6,"HE-DB-0010, HE-PL-0070","HE-DB-0010: FS, HE-PL-0070: FS",HE-PL-0800,HE-PL-0800: FS,2024-03-12 00:00:00,2024-03-15 00:00:00,3
HE-PL-0800,Receive Company Comments - Pipeline Location Class Selection Report (Incl Valve Sectionalizing),6,P2543-R01-Oct24..1.EN.1.6,HE-PL-0790,HE-PL-0790: FS,HE-PL-0810,HE-PL-0810: FS,2024-03-18 00:00:00,2024-03-28 00:00:00,10
HE-PL-0810,Re-Issue for Approval - Pipeline Location Class Selection Report (Incl Valve Sectionalizing),5,P2543-R01-Oct24..1.EN.1.6,HE-PL-0800,HE-PL-0800: FS,HE-PL-0820,HE-PL-0820: FS,2024-09-02 07:30:00,2024-09-08 17:30:00,6
HE-PL-0820,Obtain Company Approval - Pipeline Location Class Selection Report (Incl Valve Sectionalizing),6,P2543-R01-Oct24..1.EN.1.6,HE-PL-0810,HE-PL-0810: FS,HE-PL-0830,HE-PL-0830: FS,2024-09-09 07:30:00,2024-09-16 17:30:00,7
HE-PL-1150,Issue ICR - Data Sheet - Line pipes,4,P2543-R01-Oct24..1.EN.1.60.9,ML1002,ML1002: SS,"HE-PL-1270, HE-PL-1160, HE-PL-1630","HE-PL-1270: FS, HE-PL-1160: FS, HE-PL-1630: FS",2023-07-30 00:00:00,2023-08-04 00:00:00,5
HE-PL-1160,Receive Company Comments - Data Sheet - Line pipes,6,P2543-R01-Oct24..1.EN.1.60.9,HE-PL-1150,HE-PL-1150: FS,HE-PL-1170,HE-PL-1170: FS,2023-08-05 00:00:00,2023-08-15 00:00:00,10
HE-PL-1170,Re-Issue for Approval - Data Sheet - Line pipes,3,P2543-R01-Oct24..1.EN.1.60.9,HE-PL-1160,HE-PL-1160: FS,"HE-PL-1650, HE-PL-1180","HE-PL-1650: FF, HE-PL-1180: FS",2023-08-16 00:00:00,2023-08-21 00:00:00,5
HE-PL-1180,Obtain Company Approval - Data Sheet - Line pipes,17,P2543-R01-Oct24..1.EN.1.60.9,HE-PL-1170,HE-PL-1170: FS,HE-PL-1190,HE-PL-1190: FS,2023-08-22 00:00:00,2023-09-14 00:00:00,23
HE-PL-1190,Final Issue for Design/ Construction-Data Sheet - Line pipes,55,P2543-R01-Oct24..1.EN.1.60.9,HE-PL-1180,HE-PL-1180: FS,HE-PL-1670,HE-PL-1670: FF,2023-09-07 00:00:00,2023-11-23 00:00:00,77
HE-PL-1270,Issue ICR - Data Sheet - Hot Induction Bends,8,P2543-R01-Oct24..1.EN.1.60.10,HE-PL-1150,HE-PL-1150: FS,"HE-PL-1750, HE-PL-1390, HE-PL-1280","HE-PL-1750: FS, HE-PL-1390: FS 15, HE-PL-1280: FS",2023-07-25 00:00:00,2023-08-04 00:00:00,10
HE-PL-1280,Receive Company Comments - Data Sheet - Hot Induction Bends,6,P2543-R01-Oct24..1.EN.1.60.10,HE-PL-1270,HE-PL-1270: FS,HE-PL-1290,HE-PL-1290: FS,2023-08-05 00:00:00,2023-08-15 00:00:00,10
HE-PL-1290,Re-Issue for Approval - Data Sheet - Hot Induction Bends,10,P2543-R01-Oct24..1.EN.1.60.10,HE-PL-1280,HE-PL-1280: FS,"HE-PL-1300, HE-PL-1770","HE-PL-1300: FS, HE-PL-1770: FS",2023-08-16 00:00:00,2023-08-30 00:00:00,14
HE-PL-1300,Obtain Company Approval - Data Sheet - Hot Induction Bends,3,P2543-R01-Oct24..1.EN.1.60.10,HE-PL-1290,HE-PL-1290: FS,HE-PL-1310,HE-PL-1310: FS,2023-08-31 00:00:00,2023-09-05 00:00:00,5
HE-PL-1310,Final Issue for Design/ Construction-Data Sheet - Hot Induction Bends,53,P2543-R01-Oct24..1.EN.1.60.10,HE-PL-1300,HE-PL-1300: FS,"CAB-4480, HE-PL-1790, HE-PL-1430","CAB-4480: FS, HE-PL-1790: FS, HE-PL-1430: FS",2023-09-06 00:00:00,2023-11-20 00:00:00,75
HE-PL-1330,Issue ICR - Data Sheet - Split Tee,29,P2543-R01-Oct24..1.EN.1.60.16,HE-PL-0430,HE-PL-0430: SS 5,"HE-PL-1450, HE-PL-1340, HS-GN-0190, HE-PL-3650","HE-PL-1450: FF, HE-PL-1340: FS, HS-GN-0190: FS, HE-PL-3650: FS",2023-11-20 00:00:00,2024-01-02 00:00:00,43
HE-PL-1340,Receive Company Comments  - Data Sheet - Split Tee,9,P2543-R01-Oct24..1.EN.1.60.16,HE-PL-1330,HE-PL-1330: FS,HE-PL-1350,HE-PL-1350: FS,2024-01-02 00:00:00,2024-01-15 00:00:00,13
HE-PL-1350,Re-Issue for Approval - Data Sheet - Split Tee,9,P2543-R01-Oct24..1.EN.1.60.16,HE-PL-1340,HE-PL-1340: FS,HE-PL-1360,HE-PL-1360: FS,2024-01-16 00:00:00,2024-01-27 00:00:00,11
HE-PL-1360,Obtain Company Approval - Data Sheet - Split Tee,10,P2543-R01-Oct24..1.EN.1.60.16,HE-PL-1350,HE-PL-1350: FS,HE-PL-1370,HE-PL-1370: FS,2024-01-28 00:00:00,2024-02-12 00:00:00,15
HE-PL-1370,Final Issue for Design/ Construction-Data Sheet - Split Tee,3,P2543-R01-Oct24..1.EN.1.60.16,"HE-PL-1360, HE-PL-0470, HC-GN-380","HE-PL-1360: FS, HE-PL-0470: FS, HC-GN-380: FS","ML1219-B29, HE-PI-0180, C-COM-750, C-56-G-HT101-ME-1000, C-52-D-HT002-ME-1000, C-36-KM-HT03-ME-1000, C-36-KM-HT04-ME-1000","ML1219-B29: FF, HE-PI-0180: FS, C-COM-750: FS, C-56-G-HT101-ME-1000: FS, C-52-D-HT002-ME-1000: FS, C-36-KM-HT03-ME-1000: FS, C-36-KM-HT04-ME-1000: FS",2024-03-16 00:00:00,2024-03-22 00:00:00,6
HE-PL-1390,Issue ICR - Data Sheet - Isolating joints,6,P2543-R01-Oct24..1.EN.1.60.11,HE-PL-1270,HE-PL-1270: FS 15,"HE-PL-1870, HE-PL-1400","HE-PL-1870: FS, HE-PL-1400: FS",2023-09-10 00:00:00,2023-09-19 00:00:00,9
HE-PL-1400,Receive Company Comments  - Data Sheet -  Isolating joints,10,P2543-R01-Oct24..1.EN.1.60.11,HE-PL-1390,HE-PL-1390: FS,HE-PL-1410,HE-PL-1410: FS,2023-09-14 00:00:00,2023-09-28 00:00:00,14
HE-PL-1410,Re-Issue for Approval - Data Sheet -  Isolating joints,4,P2543-R01-Oct24..1.EN.1.60.11,HE-PL-1400,HE-PL-1400: FS,"HE-PL-1890, HE-PL-1420","HE-PL-1890: FS, HE-PL-1420: FS",2023-10-30 00:00:00,2023-11-03 00:00:00,4
HE-PL-1420,Obtain Company Approval - Data Sheet -  Isolating joints,8,P2543-R01-Oct24..1.EN.1.60.11,HE-PL-1410,HE-PL-1410: FS,HE-PL-1430,HE-PL-1430: FS,2023-11-06 00:00:00,2023-11-16 00:00:00,10
HE-PL-1430,Final Issue for Design/ Construction-Data Sheet - Pipeline Isolating Joints,4,P2543-R01-Oct24..1.EN.1.60.11,"HE-PL-1420, HE-PL-1310","HE-PL-1420: FS, HE-PL-1310: FS","CAB-4480, HE-PL-1910, HE-PL-1910","CAB-4480: FS, HE-PL-1910: FS, HE-PL-1910: FF",2023-11-20 00:00:00,2023-11-24 00:00:00,4
HE-PL-1450,Issue ICR - Data Sheet - Pigging Tees,10,P2543-R01-Oct24..1.EN.1.60.12,HE-PL-1330,HE-PL-1330: FF,"HE-PL-1810, HE-PL-1460, HE-PL-1510","HE-PL-1810: FS, HE-PL-1460: FS, HE-PL-1510: SS",2023-10-02 00:00:00,2023-10-14 00:00:00,12
HE-PL-1460,Receive Company Comments - Data Sheet - Pigging Tees,7,P2543-R01-Oct24..1.EN.1.60.12,HE-PL-1450,HE-PL-1450: FS,HE-PL-1470,HE-PL-1470: FS,2023-10-15 00:00:00,2023-10-25 00:00:00,10
HE-PL-1470,Re-Issue for Approval - Data Sheet - Pigging Tees,3,P2543-R01-Oct24..1.EN.1.60.12,HE-PL-1460,HE-PL-1460: FS,"HE-PL-1480, HE-PL-1830","HE-PL-1480: FS, HE-PL-1830: FS",2023-12-29 00:00:00,2024-01-04 00:00:00,6
HE-PL-1480,Obtain Company Approval - Data Sheet - Pigging Tees,7,P2543-R01-Oct24..1.EN.1.60.12,HE-PL-1470,HE-PL-1470: FS,HE-PL-1490,HE-PL-1490: FS,2024-01-05 00:00:00,2024-01-16 00:00:00,11
HE-PL-1490,Final Issue for Design/ Construction-Data Sheet - Pipeline Pigging Tees,2,P2543-R01-Oct24..1.EN.1.60.12,HE-PL-1480,HE-PL-1480: FS,"HE-PL-1850, CAB-4480","HE-PL-1850: FS, CAB-4480: FS",2024-01-19 00:00:00,2024-01-23 00:00:00,4
HE-PL-1510,Issue ICR - Data Sheet - Anchor Flange (If Required),5,P2543-R01-Oct24..1.EN.1.60.14,"HE-PL-1450, HE-PL-2810","HE-PL-1450: SS, HE-PL-2810: FS","HE-PL-1520, HE-PL-3460","HE-PL-1520: FS, HE-PL-3460: FS",2024-02-05 00:00:00,2024-02-10 00:00:00,5
HE-PL-1520,Receive Company Comments - Data Sheet - Anchor Flange (If Required),9,P2543-R01-Oct24..1.EN.1.60.14,HE-PL-1510,HE-PL-1510: FS,HE-PL-1530,HE-PL-1530: FS,2024-02-26 00:00:00,2024-03-08 00:00:00,11
HE-PL-1530,Re-Issue for Approval - Data Sheet - Anchor Flange (If Required),6,P2543-R01-Oct24..1.EN.1.60.14,"HE-PL-1520, HS-GN-0230","HE-PL-1520: FS, HS-GN-0230: FS",HE-PL-1540,HE-PL-1540: FS,2024-06-03 07:30:00,2024-06-10 17:30:00,7
HE-PL-1540,Obtain Company Approval - Data Sheet - Anchor Flange (If Required),7,P2543-R01-Oct24..1.EN.1.60.14,HE-PL-1530,HE-PL-1530: FS,HE-PL-1550,HE-PL-1550: FS,2024-06-11 07:30:00,2024-06-24 17:30:00,13
HE-PL-1640,Receive Company Comments - MR for Line pipes,10,P2543-R01-Oct24..1.EN.1.9.17,HE-PL-1630,HE-PL-1630: FS,HE-PL-1650,HE-PL-1650: FS,2023-08-03 00:00:00,2023-08-17 00:00:00,14
HE-PL-1630,Issue ICR - MR for Line pipes,3,P2543-R01-Oct24..1.EN.1.9.17,HE-PL-1150,HE-PL-1150: FS,"HP-ME-1020, HE-PL-1640, HE-PL-3230","HP-ME-1020: FS, HE-PL-1640: FS, HE-PL-3230: FS",2023-08-19 00:00:00,2023-08-24 00:00:00,5
HE-PL-1650,Re-Issue for Approval - MR for Line pipes,5,P2543-R01-Oct24..1.EN.1.9.17,"HE-PL-1170, HE-PL-1640","HE-PL-1170: FF, HE-PL-1640: FS",HE-PL-1660,HE-PL-1660: FS,2023-08-17 00:00:00,2023-08-24 00:00:00,7
HE-PL-1660,Obtain Company Approval - MR for Line pipes,5,P2543-R01-Oct24..1.EN.1.9.17,HE-PL-1650,HE-PL-1650: FS,HE-PL-1670,HE-PL-1670: FS,2023-08-24 00:00:00,2023-08-31 00:00:00,7
HE-PL-1670,Final Issue for Design/ Construction-MR for Line pipes,47,P2543-R01-Oct24..1.EN.1.9.17,"HE-PL-1190, HE-PL-1660","HE-PL-1190: FF, HE-PL-1660: FS","HP-ME-1040, HM-PL-0010, ML1021-B15","HP-ME-1040: FF, HM-PL-0010: FS, ML1021-B15: FS",2023-09-20 00:00:00,2023-11-24 00:00:00,65
HE-PL-1750,Issue ICR - MR for Hot Induction Bends,8,P2543-R01-Oct24..1.EN.1.9.18,HE-PL-1270,HE-PL-1270: FS,"HP-ME-1170, HE-PL-1760","HP-ME-1170: FS, HE-PL-1760: FS",2023-07-31 00:00:00,2023-08-10 00:00:00,10
HE-PL-1760,Receive Company Comments - MR for Hot Induction Bends,8,P2543-R01-Oct24..1.EN.1.9.18,HE-PL-1750,HE-PL-1750: FS,HE-PL-1770,HE-PL-1770: FS,2023-08-08 00:00:00,2023-08-18 00:00:00,10
HE-PL-1770,Re-Issue for Approval - MR for Hot Induction Bends,57,P2543-R01-Oct24..1.EN.1.9.18,"HE-PL-1760, HE-PL-1290","HE-PL-1760: FS, HE-PL-1290: FS",HE-PL-1780,HE-PL-1780: FS,2023-08-19 00:00:00,2023-11-08 00:00:00,81
HE-PL-1780,Obtain Company Approval - MR for Hot Induction Bends,4,P2543-R01-Oct24..1.EN.1.9.18,HE-PL-1770,HE-PL-1770: FS,HE-PL-1790,HE-PL-1790: FS,2023-11-10 00:00:00,2023-11-16 00:00:00,6
HE-PL-1790,Final Issue for Design/ Construction-MR for Hot Induction Bends,4,P2543-R01-Oct24..1.EN.1.9.18,"HE-PL-1780, HE-PL-1310","HE-PL-1780: FS, HE-PL-1310: FS","HP-ME-1190, ML1189-B16, CAB-4480","HP-ME-1190: FS, ML1189-B16: FF, CAB-4480: FS",2023-11-17 00:00:00,2023-11-23 00:00:00,6
HE-PL-1820,Receive Company Comments - MR for Pigging Tees,6,P2543-R01-Oct24..1.EN.1.9.19,HE-PL-1810,HE-PL-1810: FS,HE-PL-1830,HE-PL-1830: FS,2023-12-29 00:00:00,2024-01-09 00:00:00,11
HE-PL-1810,Issue ICR - MR for Pigging Tees,7,P2543-R01-Oct24..1.EN.1.9.19,HE-PL-1450,HE-PL-1450: FS,"HP-ME-1270, HE-PL-1820","HP-ME-1270: FS, HE-PL-1820: FS",2024-01-03 00:00:00,2024-01-12 00:00:00,9
HE-PL-1830,Re-Issue for Approval - MR for Pigging Tees,49,P2543-R01-Oct24..1.EN.1.9.19,"HE-PL-1470, HE-PL-1820","HE-PL-1470: FS, HE-PL-1820: FS",HE-PL-1840,HE-PL-1840: FS,2024-02-06 00:00:00,2024-04-23 00:00:00,77
HE-PL-1840,Obtain Company Approval - MR for Pigging Tees,3,P2543-R01-Oct24..1.EN.1.9.19,HE-PL-1830,HE-PL-1830: FS,HE-PL-1850,HE-PL-1850: FS,2024-04-24 00:00:00,2024-04-28 00:00:00,4
HE-PL-1850,Final Issue for Design/ Construction-MR for Pipeline Pigging Tees,2,P2543-R01-Oct24..1.EN.1.9.19,"HE-PL-1490, HE-PL-1840","HE-PL-1490: FS, HE-PL-1840: FS","HP-ME-1290, CAB-4480","HP-ME-1290: FS, CAB-4480: FS",2024-04-29 00:00:00,2024-05-01 00:00:00,2
HE-PL-3650,Issue ICR - MR for Split Tee,10,P2543-R01-Oct24..1.EN.1.9.2,HE-PL-1330,HE-PL-1330: FS,"HE-PL-3660, HE-PL-3690, HP-ME-1270","HE-PL-3660: FS, HE-PL-3690: FS, HP-ME-1270: FS",2023-12-08 00:00:00,2023-12-22 00:00:00,14
HE-PL-3660,Receive Company Comments - MR for Split Tee,10,P2543-R01-Oct24..1.EN.1.9.2,HE-PL-3650,HE-PL-3650: FS,HE-PL-3670,HE-PL-3670: FS,2023-12-22 00:00:00,2024-01-08 00:00:00,17
HE-PL-3670,Re-Issue for Approval - MR for Split Tee,5,P2543-R01-Oct24..1.EN.1.9.2,HE-PL-3660,HE-PL-3660: FS,HE-PL-3630,HE-PL-3630: FS,2024-01-08 00:00:00,2024-01-15 00:00:00,7
HE-PL-3630,Obtain Company Approval - MR for Split Tee,30,P2543-R01-Oct24..1.EN.1.9.2,HE-PL-3670,HE-PL-3670: FS,HE-PL-3640,HE-PL-3640: FS,2024-01-15 00:00:00,2024-02-26 00:00:00,42
HE-PL-3640,Final Issue for Design/ Construction-MR for Split Tee,4,P2543-R01-Oct24..1.EN.1.9.2,HE-PL-3630,HE-PL-3630: FS,HE-PL-3720,HE-PL-3720: FS,2024-02-26 00:00:00,2024-03-01 00:00:00,4
HE-PL-1870,Issue ICR - MR for  Isolating Joints,3,P2543-R01-Oct24..1.EN.1.9.20,HE-PL-1390,HE-PL-1390: FS,"HP-ME-1220, HE-PL-1880","HP-ME-1220: FS, HE-PL-1880: FS",2023-09-14 00:00:00,2023-09-19 00:00:00,5
HE-PL-1880,Receive Company Comments - MR for  Isolating Joints,6,P2543-R01-Oct24..1.EN.1.9.20,HE-PL-1870,HE-PL-1870: FS,HE-PL-1890,HE-PL-1890: FS,2023-09-20 00:00:00,2023-09-28 00:00:00,8
HE-PL-1890,Re-Issue for Approval - MR for  Isolating Joints,10,P2543-R01-Oct24..1.EN.1.9.20,"HE-PL-1410, HE-PL-1880","HE-PL-1410: FS, HE-PL-1880: FS",HE-PL-1900,HE-PL-1900: FS,2023-10-18 00:00:00,2023-11-01 00:00:00,14
HE-PL-1900,Obtain Company Approval - MR for  Isolating Joints,7,P2543-R01-Oct24..1.EN.1.9.20,HE-PL-1890,HE-PL-1890: FS,HE-PL-1910,HE-PL-1910: FS,2023-11-02 00:00:00,2023-11-13 00:00:00,11
HE-PL-1910,Final Issue for Design/ Construction-MR for Isolating Joints,5,P2543-R01-Oct24..1.EN.1.9.20,"HE-PL-1900, HE-PL-1430, HE-PL-1430","HE-PL-1900: FS, HE-PL-1430: FS, HE-PL-1430: FF","CAB-4480, HP-ME-1240","CAB-4480: FS, HP-ME-1240: FS",2023-11-14 00:00:00,2023-11-21 00:00:00,7
HE-PL-3460,Issue ICR - MR for Anchor Flanges,27,P2543-R01-Oct24..1.EN.1.9.1,HE-PL-1510,HE-PL-1510: FS,"HE-PL-3470, HE-PL-3480, HP-ME-1310","HE-PL-3470: FS, HE-PL-3480: FS, HP-ME-1310: FS",2024-02-26 00:00:00,2024-04-06 00:00:00,40
HE-PL-3470,Receive Company Comments - MR for Anchor Flanges,44,P2543-R01-Oct24..1.EN.1.9.1,HE-PL-3460,HE-PL-3460: FS,HE-PL-3430,HE-PL-3430: FS,2024-04-08 07:30:00,2024-06-12 17:30:00,65
HE-PL-3430,Re-Issue for Approval - MR for Anchor Flanges,7,P2543-R01-Oct24..1.EN.1.9.1,HE-PL-3470,HE-PL-3470: FS,HE-PL-3440,HE-PL-3440: FS,2024-06-13 07:30:00,2024-06-26 17:30:00,13
HE-PL-3440,Obtain Company Approval - MR for Anchor Flanges,16,P2543-R01-Oct24..1.EN.1.9.1,HE-PL-3430,HE-PL-3430: FS,HE-PL-3450,HE-PL-3450: FS,2024-06-27 07:30:00,2024-07-21 17:30:00,24
HE-PL-2050,Issue ICR - TBE for Line pipes,4,P2543-R01-Oct24..1.EN.1.10.22,HP-ME-1020,HP-ME-1020: FS,"HE-PL-2060, HP-ME-1030","HE-PL-2060: FS, HP-ME-1030: SS",2023-08-13 00:00:00,2023-08-18 00:00:00,5
HE-PL-2060,Receive Company Comments - TBE for Line pipes,1,P2543-R01-Oct24..1.EN.1.10.22,HE-PL-2050,HE-PL-2050: FS,"HE-PL-2070, HP-ME-1030","HE-PL-2070: FS, HP-ME-1030: FF",2023-08-19 00:00:00,2023-08-22 00:00:00,3
HE-PL-2070,Final Issue for Design/ Construction-TBE for Line pipes,131,P2543-R01-Oct24..1.EN.1.10.22,HE-PL-2060,HE-PL-2060: FS,"HP-ME-1040, CAB-4480","HP-ME-1040: FS, CAB-4480: FS",2023-08-26 00:00:00,2024-02-29 00:00:00,187
HE-PL-2090,Issue ICR - TBE for Hot Induction Bends,7,P2543-R01-Oct24..1.EN.1.10.23,HP-ME-1170,HP-ME-1170: FS,"HE-PL-2100, HP-ME-1180","HE-PL-2100: FS, HP-ME-1180: SS",2023-09-07 00:00:00,2023-09-17 00:00:00,10
HE-PL-2100,Receive Company Comments - TBE for Hot Induction Bends,3,P2543-R01-Oct24..1.EN.1.10.23,HE-PL-2090,HE-PL-2090: FS,HE-PL-2110,HE-PL-2110: FS,2023-09-18 00:00:00,2023-09-21 00:00:00,3
HE-PL-2110,Re-Issue for Approval - TBE for Hot Induction Bends,7,P2543-R01-Oct24..1.EN.1.10.23,HE-PL-2100,HE-PL-2100: FS,HE-PL-2120,HE-PL-2120: FS,2023-11-08 00:00:00,2023-11-17 00:00:00,9
HE-PL-2120,Obtain Company Approval - TBE for Hot Induction Bends,4,P2543-R01-Oct24..1.EN.1.10.23,HE-PL-2110,HE-PL-2110: FS,"HE-PL-2130, HP-ME-1180","HE-PL-2130: FS, HP-ME-1180: FF",2023-11-20 00:00:00,2023-11-24 00:00:00,4
HE-PL-2150,Issue ICR - TBE for Pigging Tees,13,P2543-R01-Oct24..1.EN.1.10.24,HP-ME-1270,HP-ME-1270: FS,"HE-PL-2160, HP-ME-1280","HE-PL-2160: FS, HP-ME-1280: SS",2024-02-26 00:00:00,2024-03-15 00:00:00,18
HE-PL-2160,Receive Company Comments - TBE for Pigging Tees,9,P2543-R01-Oct24..1.EN.1.10.24,HE-PL-2150,HE-PL-2150: FS,HE-PL-2170,HE-PL-2170: FS,2024-03-31 00:00:00,2024-04-18 00:00:00,18
HE-PL-2170,Re-Issue for Approval - TBE for Pigging Tees,26,P2543-R01-Oct24..1.EN.1.10.24,HE-PL-2160,HE-PL-2160: FS,HE-PL-2180,HE-PL-2180: FS,2024-04-19 00:00:00,2024-05-25 00:00:00,36
HE-PL-2180,Obtain Company Approval - TBE for Pigging Tees,6,P2543-R01-Oct24..1.EN.1.10.24,HE-PL-2170,HE-PL-2170: FS,"HE-PL-2190, HP-ME-1280","HE-PL-2190: FS, HP-ME-1280: FF",2024-05-26 00:00:00,2024-06-04 00:00:00,9
HE-PL-2190,Final Issue for Design/ Construction-TBE for Pigging Tees,13,P2543-R01-Oct24..1.EN.1.10.24,HE-PL-2180,HE-PL-2180: FS,"CCM-PM4540, CAB-4480","CCM-PM4540: FS, CAB-4480: FS",2024-10-07 07:30:00,2024-10-23 17:30:00,16
HE-PL-3690,Issue ICR - TBE for Split Tee,19,P2543-R01-Oct24..1.EN.1.10.2,HE-PL-3650,HE-PL-3650: FS,HE-PL-3700,HE-PL-3700: FS,2024-01-29 00:00:00,2024-02-23 00:00:00,25
HE-PL-3700,Receive Company Comments - TBE for Split Tee,4,P2543-R01-Oct24..1.EN.1.10.2,HE-PL-3690,HE-PL-3690: FS,HE-PL-3710,HE-PL-3710: FS,2024-02-26 00:00:00,2024-03-01 00:00:00,4
HE-PL-3710,Re-Issue for Approval - TBE for Split Tee,4,P2543-R01-Oct24..1.EN.1.10.2,HE-PL-3700,HE-PL-3700: FS,HE-PL-3680,HE-PL-3680: FS,2024-03-04 00:00:00,2024-03-08 00:00:00,4
HE-PL-3680,Obtain Company Approval - TBE for Split Tee,4,P2543-R01-Oct24..1.EN.1.10.2,HE-PL-3710,HE-PL-3710: FS,"HE-PL-3720, HP-ME-1280","HE-PL-3720: FS, HP-ME-1280: FF",2024-03-10 00:00:00,2024-03-17 00:00:00,7
HE-PL-3720,Final Issue for Design/ Construction-TBE for Split Tee,4,P2543-R01-Oct24..1.EN.1.10.2,"HE-PL-3680, HE-PL-3640","HE-PL-3680: FS, HE-PL-3640: FS",HM-PL-0770,HM-PL-0770: FS,2024-03-18 00:00:00,2024-03-25 00:00:00,7
HE-PL-2210,Issue ICR - TBE for Isolating Joints,7,P2543-R01-Oct24..1.EN.1.10.25,HP-ME-1220,HP-ME-1220: FS,"HE-PL-2220, HP-ME-1230","HE-PL-2220: FS, HP-ME-1230: SS",2023-11-03 00:00:00,2023-11-14 00:00:00,11
HE-PL-2220,Receive Company Comments - TBE for Isolating Joints,4,P2543-R01-Oct24..1.EN.1.10.25,HE-PL-2210,HE-PL-2210: FS,HE-PL-2230,HE-PL-2230: FS,2023-11-15 00:00:00,2023-11-21 00:00:00,6
HE-PL-2230,Re-Issue for Approval - TBE for Isolating Joints,61,P2543-R01-Oct24..1.EN.1.10.25,HE-PL-2220,HE-PL-2220: FS,HE-PL-2240,HE-PL-2240: FS,2023-11-22 00:00:00,2024-02-17 00:00:00,87
HE-PL-2240,Obtain Company Approval - TBE for Isolating Joints,0,P2543-R01-Oct24..1.EN.1.10.25,HE-PL-2230,HE-PL-2230: FS,"HE-PL-2250, HP-ME-1230","HE-PL-2250: FS, HP-ME-1230: FF",2024-02-18 00:00:00,2024-02-18 00:00:00,1
HE-PL-3480,Issue ICR - TBE for Anchor Flanges,4,P2543-R01-Oct24..1.EN.1.10.1,HE-PL-3460,HE-PL-3460: FS,"HE-PL-3490, HP-ME-1320","HE-PL-3490: FS, HP-ME-1320: SS",2024-06-10 00:00:00,2024-06-14 00:00:00,4
HE-PL-3490,Receive Company Comments - TBE for Anchor Flanges,7,P2543-R01-Oct24..1.EN.1.10.1,HE-PL-3480,HE-PL-3480: FS,HE-PL-3500,HE-PL-3500: FS,2024-06-15 07:30:00,2024-06-28 17:30:00,13
HE-PL-3500,Re-Issue for Approval - TBE for Anchor Flanges,14,P2543-R01-Oct24..1.EN.1.10.1,HE-PL-3490,HE-PL-3490: FS,HE-PL-3510,HE-PL-3510: FS,2024-09-30 07:30:00,2024-10-17 17:30:00,17
HE-PL-2390,"Issue ICR - Pipeline Alignment Sheets -56""",18,P2543-R01-Oct24..1.EN.1.29,"HE-PL-2450, HE-TS-0010, HE-TS-230","HE-PL-2450: FF 14, HE-TS-0010: FS 10, HE-TS-230: FS 10","HE-PL-2570, HE-PL-2400, HE-PL-2870, HE-PL-2750, HE-PL-2930, HE-PL-3230, C-PER-0915","HE-PL-2570: FF 10, HE-PL-2400: FS, HE-PL-2870: FS, HE-PL-2750: FS, HE-PL-2930: FS, HE-PL-3230: FS, C-PER-0915: FS",2024-01-27 00:00:00,2024-02-22 00:00:00,26
HE-PL-2400,"Receive Company Comments - Pipeline Alignment Sheets -56""",8,P2543-R01-Oct24..1.EN.1.29,HE-PL-2390,HE-PL-2390: FS,HE-PL-2410,HE-PL-2410: FS,2024-02-23 00:00:00,2024-03-06 00:00:00,12
HE-PL-2410,"Re-Issue for Approval - Pipeline Alignment Sheets -56""",5,P2543-R01-Oct24..1.EN.1.29,HE-PL-2400,HE-PL-2400: FS,HE-PL-2420,HE-PL-2420: FS,2024-03-07 00:00:00,2024-03-15 00:00:00,8
HE-PL-2420,"Obtain Company Approval - Pipeline Alignment Sheets -56""",5,P2543-R01-Oct24..1.EN.1.29,HE-PL-2410,HE-PL-2410: FS,"ML1008-B03, HE-PL-2870, HS-GN-0490, HE-PL-1930, HE-PL-2430","ML1008-B03: FF, HE-PL-2870: FS 30, HS-GN-0490: FS, HE-PL-1930: FS, HE-PL-2430: FS",2024-03-16 00:00:00,2024-03-25 00:00:00,9
HE-PL-2450,"Issue ICR - Pipeline Alignment Sheets-52""",56,P2543-R01-Oct24..1.EN.1.35,"HE-TS-0010, HE-TS-280","HE-TS-0010: FS 15, HE-TS-280: FS 15","HE-PL-2630, HE-PL-2390, HE-PL-2990, HE-PL-3050, HE-PL-2750, HE-CS-1150, HE-PL-2460","HE-PL-2630: FS, HE-PL-2390: FF 14, HE-PL-2990: FS, HE-PL-3050: FS, HE-PL-2750: FS, HE-CS-1150: FF, HE-PL-2460: FS",2023-11-22 00:00:00,2024-02-11 00:00:00,81
HE-PL-2460,"Receive Company Comments - Pipeline Alignment Sheets-52""",36,P2543-R01-Oct24..1.EN.1.35,HE-PL-2450,HE-PL-2450: FS,HE-PL-2470,HE-PL-2470: FS,2023-12-21 00:00:00,2024-02-11 00:00:00,52
HE-PL-2470,"Re-Issue for Approval - Pipeline Alignment Sheets-52""",33,P2543-R01-Oct24..1.EN.1.35,"HE-PL-2460, HE-PL-0210","HE-PL-2460: FS, HE-PL-0210: FS","HE-PL-2990, HE-PL-2480","HE-PL-2990: FS 2, HE-PL-2480: FS",2024-01-26 00:00:00,2024-03-13 00:00:00,47
HE-PL-2480,"Obtain Company Approval - Pipeline Alignment Sheets-52""",12,P2543-R01-Oct24..1.EN.1.35,HE-PL-2470,HE-PL-2470: FS,"ML1009-B04, HE-PL-2490, HE-PL-1930","ML1009-B04: FF, HE-PL-2490: FS, HE-PL-1930: FS",2024-03-04 00:00:00,2024-03-21 00:00:00,17
HE-PL-2510,"Issue ICR - Pipeline Alignment Sheets-4""",9,P2543-R01-Oct24..1.EN.1.7,"HE-TS-0010, HE-TS-330","HE-TS-0010: FS 30, HE-TS-330: FS 30","HE-PL-2690, HE-PL-3110, HE-PL-2520, HE-PL-3170, HE-PL-3580","HE-PL-2690: FS, HE-PL-3110: FS, HE-PL-2520: FS, HE-PL-3170: FS, HE-PL-3580: FS",2024-02-26 00:00:00,2024-03-08 00:00:00,11
HE-PL-2520,"Receive Company Comments - Pipeline Alignment Sheets-4""",9,P2543-R01-Oct24..1.EN.1.7,HE-PL-2510,HE-PL-2510: FS,HE-PL-2530,HE-PL-2530: FS,2024-03-10 00:00:00,2024-03-25 00:00:00,15
HE-PL-2530,"Re-Issue for Approval - Pipeline Alignment Sheets-4""",8,P2543-R01-Oct24..1.EN.1.7,HE-PL-2520,HE-PL-2520: FS,HE-PL-2540,HE-PL-2540: FS,2024-03-25 00:00:00,2024-04-07 00:00:00,13
HE-PL-2540,"Obtain Company Approval - Pipeline Alignment Sheets-4""",9,P2543-R01-Oct24..1.EN.1.7,HE-PL-2530,HE-PL-2530: FS,"HE-PL-3110, HE-PL-2550","HE-PL-3110: FS, HE-PL-2550: FS",2024-04-12 00:00:00,2024-04-25 00:00:00,13
HE-PL-3530,"Issue ICR - Pipeline Alignment Sheets-4""",9,P2543-R01-Oct24..1.EN.1.11,"HE-TS-0010, HE-TS-330","HE-TS-0010: FS 60, HE-TS-330: FS 60","HE-PL-3110, HE-PL-3540, HE-PL-3170, HE-PL-2750","HE-PL-3110: FS, HE-PL-3540: FS, HE-PL-3170: FS, HE-PL-2750: FS",2024-02-26 00:00:00,2024-03-08 00:00:00,11
HE-PL-3540,"Receive Company Comments - Pipeline Alignment Sheets-4""",9,P2543-R01-Oct24..1.EN.1.11,HE-PL-3530,HE-PL-3530: FS,HE-PL-3550,HE-PL-3550: FS,2024-03-10 00:00:00,2024-03-25 00:00:00,15
HE-PL-3550,"Re-Issue for Approval - Pipeline Alignment Sheets-4""",7,P2543-R01-Oct24..1.EN.1.11,HE-PL-3540,HE-PL-3540: FS,"HE-PL-3560, HE-PL-3110","HE-PL-3560: FS, HE-PL-3110: FS",2024-03-26 00:00:00,2024-04-07 00:00:00,12
HE-PL-3560,"Obtain Company Approval - Pipeline Alignment Sheets-4""",9,P2543-R01-Oct24..1.EN.1.11,HE-PL-3550,HE-PL-3550: FS,HE-PL-3570,HE-PL-3570: FS,2024-04-12 00:00:00,2024-04-25 00:00:00,13
HE-PL-2570,"Issue ICR - Pipeline Station Approach drawing -56""",5,P2543-R01-Oct24..1.EN.1.31,"HE-PL-2390, HE-PI-0390, HE-TS-0010, HE-PI-0320, HE-TS-230","HE-PL-2390: FF 10, HE-PI-0390: FS, HE-TS-0010: FS, HE-PI-0320: FS, HE-TS-230: FS","HE-PL-2580, HE-PL-2810, HE-PL-3330","HE-PL-2580: FS, HE-PL-2810: FS, HE-PL-3330: FS",2024-03-29 00:00:00,2024-04-07 00:00:00,9
HE-PL-2580,"Receive Company Comments - Pipeline Station Approach drawing -56""",9,P2543-R01-Oct24..1.EN.1.31,HE-PL-2570,HE-PL-2570: FS,HE-PL-2590,HE-PL-2590: FS,2024-04-08 00:00:00,2024-04-25 00:00:00,17
HE-PL-2590,"Re-Issue for Approval - Pipeline Station Approach drawing -56""",25,P2543-R01-Oct24..1.EN.1.31,HE-PL-2580,HE-PL-2580: FS,HE-PL-2600,HE-PL-2600: FS,2024-04-26 00:00:00,2024-05-31 00:00:00,35
HE-PL-2600,"Obtain Company Approval - Pipeline Station Approach drawing -56""",9,P2543-R01-Oct24..1.EN.1.31,HE-PL-2590,HE-PL-2590: FS,HE-PL-2610,HE-PL-2610: FS,2024-06-01 00:00:00,2024-06-14 00:00:00,13
HE-PL-2630,"Issue ICR - Pipeline Station Approach drawing -52""",15,P2543-R01-Oct24..1.EN.1.37,"HE-PL-2450, HE-PI-0390, HE-TS-0010, HE-TS-280","HE-PL-2450: FS, HE-PI-0390: FS, HE-TS-0010: FS, HE-TS-280: FS","HE-PL-2640, HE-PL-2810","HE-PL-2640: FS, HE-PL-2810: FS",2024-03-31 00:00:00,2024-04-26 00:00:00,26
HE-PL-2640,"Receive Company Comments - Pipeline Station Approach drawing -52""",21,P2543-R01-Oct24..1.EN.1.37,HE-PL-2630,HE-PL-2630: FS,HE-PL-2650,HE-PL-2650: FS,2024-04-26 07:30:00,2024-05-25 17:30:00,29
HE-PL-2650,"Re-Issue for Approval - Pipeline Station Approach drawing -52""",7,P2543-R01-Oct24..1.EN.1.37,HE-PL-2640,HE-PL-2640: FS,HE-PL-2660,HE-PL-2660: FS,2024-05-27 07:30:00,2024-06-04 17:30:00,8
HE-PL-2660,"Obtain Company Approval - Pipeline Station Approach drawing -52""",19,P2543-R01-Oct24..1.EN.1.37,HE-PL-2650,HE-PL-2650: FS,HE-PL-2670,HE-PL-2670: FS,2024-06-05 07:30:00,2024-07-04 17:30:00,29
HE-PL-2690,"Issue ICR - Pipeline Station Approach drawing -4""",28,P2543-R01-Oct24..1.EN.1.15,"HE-PL-2510, HE-PI-0460, HE-TS-0010, HE-TS-330","HE-PL-2510: FS, HE-PI-0460: FS, HE-TS-0010: FS, HE-TS-330: FS",HE-PL-2700,HE-PL-2700: FS,2024-03-29 00:00:00,2024-05-14 00:00:00,46
HE-PL-2700,"Receive Company Comments - Pipeline Station Approach drawing -4""",10,P2543-R01-Oct24..1.EN.1.15,HE-PL-2690,HE-PL-2690: FS,HE-PL-2710,HE-PL-2710: FS,2024-05-15 00:00:00,2024-05-29 00:00:00,14
HE-PL-2710,"Re-Issue for Approval - Pipeline Station Approach drawing -4""",24,P2543-R01-Oct24..1.EN.1.15,HE-PL-2700,HE-PL-2700: FS,HE-PL-2720,HE-PL-2720: FS,2024-05-30 00:00:00,2024-07-08 17:30:00,39
HE-PL-2720,"Obtain Company Approval - Pipeline Station Approach drawing -4""",5,P2543-R01-Oct24..1.EN.1.15,HE-PL-2710,HE-PL-2710: FS,HE-PL-2730,HE-PL-2730: FS,2024-07-09 07:30:00,2024-07-15 17:30:00,6
HE-PL-3580,"Issue ICR - Pipeline Station Approach drawing -4""",29,P2543-R01-Oct24..1.EN.1.12,"HE-PI-0460, HE-TS-0010, HE-PL-2510, HE-TS-330","HE-PI-0460: FS, HE-TS-0010: FS, HE-PL-2510: FS, HE-TS-330: FS",HE-PL-3590,HE-PL-3590: FS,2024-03-29 07:30:00,2024-05-14 17:30:00,46
HE-PL-3590,"Receive Company Comments - Pipeline Station Approach drawing -4""",11,P2543-R01-Oct24..1.EN.1.12,HE-PL-3580,HE-PL-3580: FS,HE-PL-3600,HE-PL-3600: FS,2024-05-15 07:30:00,2024-05-29 17:30:00,14
HE-PL-3600,"Re-Issue for Approval - Pipeline Station Approach drawing -4""",63,P2543-R01-Oct24..1.EN.1.12,HE-PL-3590,HE-PL-3590: FS,HE-PL-3610,HE-PL-3610: FS,2024-05-30 07:30:00,2024-09-02 00:00:00,94
HE-PL-3610,"Obtain Company Approval - Pipeline Station Approach drawing -4""",9,P2543-R01-Oct24..1.EN.1.12,HE-PL-3600,HE-PL-3600: FS,HE-PL-3620,HE-PL-3620: FS,2024-09-03 07:30:00,2024-09-13 17:30:00,10
HE-PL-2750,Issue ICR - Pipeline Route Verification and Selection Report,10,P2543-R01-Oct24..1.EN.1.1,"HE-TS-0010, HE-PL-2390, HE-PL-2450, HE-PL-3530","HE-TS-0010: FS, HE-PL-2390: FS, HE-PL-2450: FS, HE-PL-3530: FS",HE-PL-2760,HE-PL-2760: FS,2024-05-06 07:30:00,2024-05-20 00:00:00,13
HE-PL-2760,Receive Company Comments - Pipeline Route Verification and Selection Report,9,P2543-R01-Oct24..1.EN.1.1,HE-PL-2750,HE-PL-2750: FS,HE-PL-2770,HE-PL-2770: FS,2024-05-21 07:30:00,2024-05-31 17:30:00,10
HE-PL-2770,Re-Issue for Approval - Pipeline Route Verification and Selection Report,10,P2543-R01-Oct24..1.EN.1.1,HE-PL-2760,HE-PL-2760: FS,HE-PL-2780,HE-PL-2780: FS,2024-06-03 07:30:00,2024-06-17 17:30:00,14
HE-PL-2780,Obtain Company Approval - Pipeline Route Verification and Selection Report,69,P2543-R01-Oct24..1.EN.1.1,HE-PL-2770,HE-PL-2770: FS,HE-PL-2790,HE-PL-2790: FS,2024-06-18 07:30:00,2024-09-26 07:30:00,100
HE-PL-2790,Final Issue for Design/ Construction-Pipeline Route Verification and Selection Report,11,P2543-R01-Oct24..1.EN.1.1,"HE-TS-0050, HE-PL-2780","HE-TS-0050: FS, HE-PL-2780: FS",CAB-4480,CAB-4480: FS,2024-10-07 07:30:00,2024-10-21 17:30:00,14
HE-PL-2810,Issue ICR - Pipeline Stress Analysis Report,8,P2543-R01-Oct24..1.EN.1.5,"HE-PL-0610, HE-PL-0670, HE-PL-2570, HE-PL-2630","HE-PL-0610: FS, HE-PL-0670: FS, HE-PL-2570: FS, HE-PL-2630: FS","HE-CS-1710, HE-PI-1140, HE-PL-2820, HE-PL-1510","HE-CS-1710: FF 10, HE-PI-1140: SS, HE-PL-2820: FS, HE-PL-1510: FS",2024-05-06 00:00:00,2024-05-16 00:00:00,10
HE-PL-2820,Receive Company Comments - Pipeline Stress Analysis Report,5,P2543-R01-Oct24..1.EN.1.5,HE-PL-2810,HE-PL-2810: FS,HE-PL-2830,HE-PL-2830: FS,2024-05-17 00:00:00,2024-05-24 00:00:00,7
HE-PL-2830,Re-Issue for Approval - Pipeline Stress Analysis Report,4,P2543-R01-Oct24..1.EN.1.5,HE-PL-2820,HE-PL-2820: FS,"HE-PI-1160, HE-PL-2840","HE-PI-1160: SS, HE-PL-2840: FS",2024-05-26 00:00:00,2024-05-31 00:00:00,5
HE-PL-2840,Obtain Company Approval - Pipeline Stress Analysis Report,11,P2543-R01-Oct24..1.EN.1.5,HE-PL-2830,HE-PL-2830: FS,HE-PL-2850,HE-PL-2850: FS,2024-06-01 00:00:00,2024-06-21 00:00:00,20
HE-PL-2870,"Issue ICR - Detailed crossing drawings - 56""",33,P2543-R01-Oct24..1.EN.1.30,"HE-PL-0050, HE-PL-2420, HE-PL-2390","HE-PL-0050: FS, HE-PL-2420: FS 30, HE-PL-2390: FS",HE-PL-2880,HE-PL-2880: FS,2024-02-09 00:00:00,2024-03-29 00:00:00,49
HE-PL-2880,"Receive Company Comments - Detailed crossing drawings - 56""",95,P2543-R01-Oct24..1.EN.1.30,HE-PL-2870,HE-PL-2870: FS,HE-PL-2890,HE-PL-2890: FF,2024-03-21 00:00:00,2024-08-13 17:30:00,145
HE-PL-2890,"Re-Issue for Approval - Detailed crossing drawings - 56""",107,P2543-R01-Oct24..1.EN.1.30,HE-PL-2880,HE-PL-2880: FF,"HE-PL-2900, C-PER-1470, C-PER-1420","HE-PL-2900: FF 10, C-PER-1470: SS 7, C-PER-1420: FF",2024-05-13 00:00:00,2024-10-14 17:30:00,154
HE-PL-2900,"Obtain Company Approval - Detailed crossing drawings - 56""",105,P2543-R01-Oct24..1.EN.1.30,HE-PL-2890,HE-PL-2890: FF 10,HE-PL-2910,HE-PL-2910: FF 5,2024-05-26 07:30:00,2024-10-24 17:30:00,151
HE-PL-2930,"Issue ICR - Crossing Schedule - 56""",6,P2543-R01-Oct24..1.EN.1.32,HE-PL-2390,HE-PL-2390: FS,HE-PL-2940,HE-PL-2940: FS,2024-02-09 07:30:00,2024-02-16 17:30:00,7
HE-PL-2940,"Receive Company Comments - Crossing Schedule - 56""",54,P2543-R01-Oct24..1.EN.1.32,HE-PL-2930,HE-PL-2930: FS,HE-PL-2950,HE-PL-2950: FS,2024-02-17 07:30:00,2024-05-10 17:30:00,83
HE-PL-2950,"Re-Issue for Approval - Crossing Schedule - 56""",15,P2543-R01-Oct24..1.EN.1.32,HE-PL-2940,HE-PL-2940: FS,HE-PL-2960,HE-PL-2960: FS,2024-05-13 07:30:00,2024-05-31 17:30:00,18
HE-PL-2960,"Obtain Company Approval - Crossing Schedule - 56""",10,P2543-R01-Oct24..1.EN.1.32,HE-PL-2950,HE-PL-2950: FS,HE-PL-2970,HE-PL-2970: FS,2024-06-03 07:30:00,2024-06-14 17:30:00,11
HE-PL-2990,"Issue ICR - Detailed crossing drawings-52""",29,P2543-R01-Oct24..1.EN.1.36,"HE-PL-2470, HE-PL-2450","HE-PL-2470: FS 2, HE-PL-2450: FS","HE-PL-3000, C-PER-1020, C-PER-1040, C-PER-1050, C-PER-1060, C-PER-1080, C-PER-1090, C-PER-1100, C-PER-1110, C-PER-1040, C-PER-1050, C-PER-1090","HE-PL-3000: FS, C-PER-1020: FS, C-PER-1040: FS, C-PER-1050: FS, C-PER-1060: FS, C-PER-1080: FS, C-PER-1090: FS, C-PER-1100: FS, C-PER-1110: FS, C-PER-1040: FF, C-PER-1050: FF, C-PER-1090: FF",2024-02-09 00:00:00,2024-03-22 00:00:00,42
HE-PL-3000,"Receive Company Comments - Detailed crossing drawings-52""",117,P2543-R01-Oct24..1.EN.1.36,HE-PL-2990,HE-PL-2990: FS,HE-PL-3010,HE-PL-3010: FF,2024-03-15 00:00:00,2024-09-07 17:30:00,176
HE-PL-3010,"Re-Issue for Approval - Detailed crossing drawings-52""",138,P2543-R01-Oct24..1.EN.1.36,HE-PL-3000,HE-PL-3000: FF,HE-PL-3020,HE-PL-3020: FF 10,2024-03-04 00:00:00,2024-09-26 07:30:00,206
HE-PL-3050,"Issue ICR - Crossing Schedule-52""",35,P2543-R01-Oct24..1.EN.1.38,HE-PL-2450,HE-PL-2450: FS,HE-PL-3060,HE-PL-3060: FS,2024-02-23 07:30:00,2024-04-20 17:30:00,57
HE-PL-3060,"Receive Company Comments - Crossing Schedule-52""",11,P2543-R01-Oct24..1.EN.1.38,HE-PL-3050,HE-PL-3050: FS,HE-PL-3070,HE-PL-3070: FS,2024-04-22 07:30:00,2024-05-06 17:30:00,14
HE-PL-3070,"Re-Issue for Approval - Crossing Schedule-52""",15,P2543-R01-Oct24..1.EN.1.38,HE-PL-3060,HE-PL-3060: FS,HE-PL-3080,HE-PL-3080: FS,2024-05-07 07:30:00,2024-05-27 17:30:00,20
HE-PL-3080,"Obtain Company Approval - Crossing Schedule-52""",68,P2543-R01-Oct24..1.EN.1.38,HE-PL-3070,HE-PL-3070: FS,HE-PL-3090,HE-PL-3090: FS,2024-05-28 07:30:00,2024-09-04 17:30:00,99
HE-PL-3110,"Issue ICR - Detailed crossing drawings-4""",20,P2543-R01-Oct24..1.EN.1.44,"HE-PL-3530, HE-PL-2540, HE-PL-2510, HE-PL-3550","HE-PL-3530: FS, HE-PL-2540: FS, HE-PL-2510: FS, HE-PL-3550: FS","HE-PL-3120, HE-PL-3170","HE-PL-3120: FS, HE-PL-3170: FS",2024-02-23 00:00:00,2024-03-25 00:00:00,31
HE-PL-3170,"Issue ICR - Crossing Schedule-4""",38,P2543-R01-Oct24..1.EN.1.55,"HE-PL-3530, HE-PL-2510, HE-PL-3110","HE-PL-3530: FS, HE-PL-2510: FS, HE-PL-3110: FS",HE-PL-3180,HE-PL-3180: FS,2024-03-01 07:30:00,2024-05-01 17:30:00,61
HE-PL-3180,"Receive Company Comments - Crossing Schedule-4""",18,P2543-R01-Oct24..1.EN.1.55,HE-PL-3170,HE-PL-3170: FS,HE-PL-3190,HE-PL-3190: FS,2024-05-02 07:30:00,2024-05-27 17:30:00,25
HE-PL-3330,Issue ICR - Pipeline Tie In List,14,P2543-R01-Oct24..1.EN.1.58,HE-PL-2570,HE-PL-2570: FS,"HE-PL-3340, HE-PL-3780","HE-PL-3340: FS, HE-PL-3780: FS",2024-02-26 00:00:00,2024-03-17 00:00:00,20
HE-PL-3340,Receive Company Comments - Pipeline Tie In List,5,P2543-R01-Oct24..1.EN.1.58,HE-PL-3330,HE-PL-3330: FS,HE-PL-3350,HE-PL-3350: FS,2024-03-31 00:00:00,2024-04-09 00:00:00,9
HE-PL-3350,Re-Issue for Approval - Pipeline Tie In List,2,P2543-R01-Oct24..1.EN.1.58,HE-PL-3340,HE-PL-3340: FS,HE-PL-3360,HE-PL-3360: FS,2024-04-10 00:00:00,2024-04-16 00:00:00,6
HE-PL-3360,Obtain Company Approval - Pipeline Tie In List,9,P2543-R01-Oct24..1.EN.1.58,HE-PL-3350,HE-PL-3350: FS,HE-PL-3370,HE-PL-3370: FS,2024-04-17 00:00:00,2024-04-30 00:00:00,13
HE-PL-3370,Final Issue for Design/ Construction-Pipeline Tie In List,22,P2543-R01-Oct24..1.EN.1.58,HE-PL-3360,HE-PL-3360: FS,HE-PL-3270,HE-PL-3270: FS,2024-05-14 00:00:00,2024-06-13 00:00:00,30
HE-PL-3780,Issue ICR - Pipeline Support Schedule,2,P2543-R01-Oct24..1.EN.1.16,HE-PL-3330,HE-PL-3330: FS,HE-PL-3790,HE-PL-3790: FS,2024-04-05 00:00:00,2024-04-12 00:00:00,7
HE-PL-3790,Receive Company Comments - Pipeline Support Schedule,9,P2543-R01-Oct24..1.EN.1.16,HE-PL-3780,HE-PL-3780: FS,HE-PL-3800,HE-PL-3800: FS,2024-04-13 00:00:00,2024-04-26 00:00:00,13
HE-PL-3800,Re-Issue for Approval - Pipeline Support Schedule,9,P2543-R01-Oct24..1.EN.1.16,HE-PL-3790,HE-PL-3790: FS,HE-PL-3810,HE-PL-3810: FS,2024-04-27 00:00:00,2024-05-10 00:00:00,13
HE-PL-3810,Obtain Company Approval - Pipeline Support Schedule,9,P2543-R01-Oct24..1.EN.1.16,HE-PL-3800,HE-PL-3800: FS,HE-PL-3820,HE-PL-3820: FS,2024-05-11 00:00:00,2024-05-24 00:00:00,13
HE-PL-3820,Final Issue for Design/ Construction- Pipeline Support Schedule,58,P2543-R01-Oct24..1.EN.1.16,HE-PL-3810,HE-PL-3810: FS,HE-PL-2970,HE-PL-2970: FS,2024-06-07 00:00:00,2024-09-02 17:30:00,87
HE-PL-3230,"Issue ICR - Pipeline MTO - 56""",10,P2543-R01-Oct24..1.EN.1.33,"HE-PL-1630, HE-PL-2390","HE-PL-1630: FS, HE-PL-2390: FS","HP-BK-0380, HE-PL-3240, HE-PL-3730","HP-BK-0380: FS, HE-PL-3240: FS, HE-PL-3730: SS",2024-02-16 00:00:00,2024-03-01 00:00:00,14
HE-PL-3240,"Receive Company Comments - Pipeline MTO - 56""",8,P2543-R01-Oct24..1.EN.1.33,HE-PL-3230,HE-PL-3230: FS,HE-PL-3250,HE-PL-3250: FS,2024-03-02 00:00:00,2024-03-15 00:00:00,13
HE-PL-3250,"Re-Issue for Approval - Pipeline MTO - 56""",3,P2543-R01-Oct24..1.EN.1.33,HE-PL-3240,HE-PL-3240: FS,HE-PL-3260,HE-PL-3260: FS,2024-03-16 00:00:00,2024-03-22 00:00:00,6
HE-PL-3260,"Obtain Company Approval - Pipeline MTO - 56""",0,P2543-R01-Oct24..1.EN.1.33,HE-PL-3250,HE-PL-3250: FS,"HE-PL-3270, HP-BK-0380","HE-PL-3270: FS, HP-BK-0380: FS",2024-03-22 00:00:00,2024-03-22 00:00:00,1
HE-PL-3270,"Final Issue for Design/ Construction-Pipeline MTO - 56"" and 52""",10,P2543-R01-Oct24..1.EN.1.33,"HE-GS-0010, HE-PL-3260, HE-PL-3370","HE-GS-0010: FS, HE-PL-3260: FS, HE-PL-3370: FS","HP-BK-0390, CAB-4480","HP-BK-0390: FS, CAB-4480: FS",2024-03-20 00:00:00,2024-04-05 00:00:00,16
HE-PL-3730,Issue ICR - Pipeline Coating MTO,10,P2543-R01-Oct24..1.EN.1.14,HE-PL-3230,HE-PL-3230: SS,HE-PL-3740,HE-PL-3740: FS,2024-02-16 00:00:00,2024-03-01 00:00:00,14
HE-PL-3740,Receive Company Comments - Pipeline Coating MTO,8,P2543-R01-Oct24..1.EN.1.14,HE-PL-3730,HE-PL-3730: FS,HE-PL-3750,HE-PL-3750: FS,2024-03-02 00:00:00,2024-03-15 00:00:00,13
HE-PL-3750,Re-Issue for Approval - Pipeline Coating MTO,3,P2543-R01-Oct24..1.EN.1.14,HE-PL-3740,HE-PL-3740: FS,HE-PL-3760,HE-PL-3760: FS,2024-03-16 00:00:00,2024-03-22 00:00:00,6
HE-PL-3760,Obtain Company Approval - Pipeline Coating MTO,1,P2543-R01-Oct24..1.EN.1.14,HE-PL-3750,HE-PL-3750: FS,HE-PL-3770,HE-PL-3770: FS,2024-03-20 00:00:00,2024-03-22 00:00:00,2
HE-PL-3770,Final Issue for Design/ Construction-Pipeline Coating MTO,9,P2543-R01-Oct24..1.EN.1.14,HE-PL-3760,HE-PL-3760: FS,HM-PL-0035,HM-PL-0035: FS,2024-03-22 00:00:00,2024-04-05 00:00:00,14
HE-DB-130,Issue ICR-Design Basis,7,P2543-R01-Oct24..1.EN.7.56,HE-DB-0010,HE-DB-0010: FS 5,"HE-DB-140, HE-PI-3440, HE-PI-0200","HE-DB-140: FS, HE-PI-3440: FS, HE-PI-0200: FS",2023-08-06 00:00:00,2023-08-16 00:00:00,10
HE-DB-140,Receive Company Comments-Design Basis,7,P2543-R01-Oct24..1.EN.7.56,HE-DB-130,HE-DB-130: FS,HE-DB-100,HE-DB-100: FS,2023-08-16 00:00:00,2023-08-25 00:00:00,9
HE-DB-100,Re-Issue for Approval-Design Basis,4,P2543-R01-Oct24..1.EN.7.56,HE-DB-140,HE-DB-140: FS,HE-DB-120,HE-DB-120: FS,2023-09-11 00:00:00,2023-09-15 00:00:00,4
HE-DB-120,Obtain Company Approval-Design Basis,5,P2543-R01-Oct24..1.EN.7.56,HE-DB-100,HE-DB-100: FS,HE-DB-110,HE-DB-110: FS,2023-09-18 00:00:00,2023-09-25 00:00:00,7
HE-DB-110,Final Issue for Design/ Construction-Design Basis,7,P2543-R01-Oct24..1.EN.7.56,HE-DB-120,HE-DB-120: FS,HE-PI-3440,HE-PI-3440: FS,2023-11-09 00:00:00,2023-11-20 00:00:00,11
HE-PI-3440,Issue ICR - Piping Specifications - Addendum to DGS,3,P2543-R01-Oct24..1.EN.7.21,"HE-DB-130, HE-DB-110","HE-DB-130: FS, HE-DB-110: FS",HE-PI-3450,HE-PI-3450: FS,2023-10-20 00:00:00,2023-10-25 00:00:00,5
HE-PI-3450,Receive Company Comments - Piping Specifications - Addendum to DGS,5,P2543-R01-Oct24..1.EN.7.21,HE-PI-3440,HE-PI-3440: FS,HE-PI-3460,HE-PI-3460: FS,2023-10-30 00:00:00,2023-11-06 00:00:00,7
HE-PI-3460,Re-Issue for Approval - Piping Specifications - Addendum to DGS,10,P2543-R01-Oct24..1.EN.7.21,HE-PI-3450,HE-PI-3450: FS,HE-PI-3470,HE-PI-3470: FS,2023-11-07 00:00:00,2023-11-21 00:00:00,14
HE-PI-3470,Obtain Company Approval - Piping Specifications - Addendum to DGS,14,P2543-R01-Oct24..1.EN.7.21,HE-PI-3460,HE-PI-3460: FS,HE-PI-3430,HE-PI-3430: FS,2023-11-22 00:00:00,2023-12-13 00:00:00,21
HE-PI-3430,Final Issue for Design/ Construction-Piping Specifications - Addendum to DGS,77,P2543-R01-Oct24..1.EN.7.21,HE-PI-3470,HE-PI-3470: FS,"HE-PI-3480, HE-PI-3520","HE-PI-3480: FS, HE-PI-3520: FS",2023-11-24 00:00:00,2024-03-15 00:00:00,112
HE-PI-3480,Issue ICR-Piping Tie In Schedule,15,P2543-R01-Oct24..1.EN.7.23,HE-PI-3430,HE-PI-3430: FS,HE-PI-3490,HE-PI-3490: FS,2023-12-04 00:00:00,2023-12-23 00:00:00,19
HE-PI-3490,Receive Company Comments-Piping Tie In Schedule,14,P2543-R01-Oct24..1.EN.7.23,HE-PI-3480,HE-PI-3480: FS,HE-PI-3500,HE-PI-3500: FS,2023-12-25 00:00:00,2024-01-15 00:00:00,21
HE-PI-3500,Re-Issue for Approval-Piping Tie In Schedule,15,P2543-R01-Oct24..1.EN.7.23,HE-PI-3490,HE-PI-3490: FS,HE-PI-3510,HE-PI-3510: FS,2024-02-26 00:00:00,2024-03-18 00:00:00,21
HE-PI-3510,Obtain Company Approval-Piping Tie In Schedule,7,P2543-R01-Oct24..1.EN.7.23,HE-PI-3500,HE-PI-3500: FS,HE-PI-3520,HE-PI-3520: FS,2024-03-19 00:00:00,2024-03-30 00:00:00,11
HE-PI-3520,Final Issue for Design/ Construction-Piping Tie In Schedule,3,P2543-R01-Oct24..1.EN.7.23,"HE-PI-3510, HE-PI-3430","HE-PI-3510: FS, HE-PI-3430: FS","ML1219-B29, HE-PI-1240, HE-PI-0180, CAB-4480, C-COM-750, C-56-G-HT101-ME-1000, C-52-D-HT002-ME-1000, C-36-KM-HT03-ME-1000, C-36-KM-HT04-ME-1000, C-56-G-HT-CI-0100","ML1219-B29: FF, HE-PI-1240: FS, HE-PI-0180: FS, CAB-4480: FS, C-COM-750: FS, C-56-G-HT101-ME-1000: FS, C-52-D-HT002-ME-1000: FS, C-36-KM-HT03-ME-1000: FS, C-36-KM-HT04-ME-1000: FS, C-56-G-HT-CI-0100: FS",2024-04-03 00:00:00,2024-04-10 00:00:00,7
HE-PI-0010,Issue ICR-Piping Material Specifications,7,P2543-R01-Oct24..1.EN.7.1,"HE-DB-0010, HE-CP-200, HE-CP-0010, HE-PR-1030, HE-PI-0200, HE-CP-200","HE-DB-0010: FS, HE-CP-200: FF 5, HE-CP-0010: FF 5, HE-PR-1030: FF 5, HE-PI-0200: SS 5, HE-CP-200: SS","HE-PR-0110, HE-PI-0020, HE-PI-1020","HE-PR-0110: SS 5, HE-PI-0020: FS, HE-PI-1020: FS",2023-08-27 00:00:00,2023-09-06 00:00:00,10
HE-PI-0020,Receive Company Comments-Piping Material Specifications,8,P2543-R01-Oct24..1.EN.7.1,HE-PI-0010,HE-PI-0010: FS,"HE-PI-0030, HE-HV-2740","HE-PI-0030: FS, HE-HV-2740: FS",2023-09-06 00:00:00,2023-09-16 00:00:00,10
HE-PI-0030,Re-Issue for Approval-Piping Material Specifications,3,P2543-R01-Oct24..1.EN.7.1,HE-PI-0020,HE-PI-0020: FS,HE-PI-0040,HE-PI-0040: FS,2023-10-30 00:00:00,2023-11-02 00:00:00,3
HE-PI-0040,Obtain Company Approval-Piping Material Specifications,10,P2543-R01-Oct24..1.EN.7.1,HE-PI-0030,HE-PI-0030: FS,HE-PI-0050,HE-PI-0050: FS,2023-11-03 00:00:00,2023-11-17 00:00:00,14
HE-PI-0050,Final Issue for Design/ Construction-Piping Material Specification,71,P2543-R01-Oct24..1.EN.7.1,"HE-CP-240, HE-PI-0040","HE-CP-240: FS, HE-PI-0040: FS","CAB-4440, HE-IC-1130, HE-PR-0140, HE-PI-0262","CAB-4440: FS, HE-IC-1130: FS, HE-PR-0140: FS, HE-PI-0262: FS",2023-11-21 00:00:00,2024-03-01 00:00:00,101
HE-PI-0130,30% Model Review,1,P2543-R01-Oct24..1.EN.7.10,"HE-PR-1030, HE-PR-0040, HE-PR-1240, HE-PR-1250, HE-PR-0060, HS-GN-0110, HE-HS-0190, HE-WS-0020, HE-WS-0030, HE-PR-0110, HE-PI-0320, HE-PI-0460, HE-PI-0390, HE-PR-0130","HE-PR-1030: FS, HE-PR-0040: FS, HE-PR-1240: FS, HE-PR-1250: FS, HE-PR-0060: FS, HS-GN-0110: FS, HE-HS-0190: FS, HE-WS-0020: FS, HE-WS-0030: FS, HE-PR-0110: FS, HE-PI-0320: FS, HE-PI-0460: FS, HE-PI-0390: FS, HE-PR-0130: FS 10","HE-PI-1140, ML2059-B05, HE-PI-0140, HE-CS-1510","HE-PI-1140: FS, ML2059-B05: FF, HE-PI-0140: FS, HE-CS-1510: FS",2023-11-08 00:00:00,2023-11-09 00:00:00,1
HE-PI-0140,30% Model Review Report,8,P2543-R01-Oct24..1.EN.7.10,HE-PI-0130,HE-PI-0130: FS,"HE-PI-0150, HE-PI-0370","HE-PI-0150: FS, HE-PI-0370: FS",2023-11-10 00:00:00,2023-11-22 00:00:00,12
HE-PI-0150,60% Model Review,1,P2543-R01-Oct24..1.EN.7.10,"HE-PR-0040, HE-PR-1240, HE-PR-1250, HE-PR-0060, HE-PR-0130, HS-GN-0110, HE-HS-0190, HE-WS-0030, ML2059-B05, HE-PI-0140, HE-WS-0020, HE-PR-0140","HE-PR-0040: FS, HE-PR-1240: FS, HE-PR-1250: FS, HE-PR-0060: FS, HE-PR-0130: FS, HS-GN-0110: FS, HE-HS-0190: FS, HE-WS-0030: FS, ML2059-B05: FS, HE-PI-0140: FS, HE-WS-0020: FS, HE-PR-0140: FS","ML2069-B09, HE-PI-0160, HE-PI-1200, HE-PI-0740","ML2069-B09: FF, HE-PI-0160: FS, HE-PI-1200: FS, HE-PI-0740: FS",2024-03-25 00:00:00,2024-03-27 00:00:00,2
HE-PI-0160,60% Model Review Report,6,P2543-R01-Oct24..1.EN.7.10,HE-PI-0150,HE-PI-0150: FS,"HE-PI-0180, HE-PI-0170, HE-PI-0620","HE-PI-0180: FS, HE-PI-0170: FS, HE-PI-0620: FS",2024-03-22 00:00:00,2024-04-01 00:00:00,10
HE-PI-0170,90% Model Review,5,P2543-R01-Oct24..1.EN.7.10,"ML1027-B17, HE-PR-0040, HE-PR-1240, HE-PR-1250, HE-PR-0060, HE-WS-0030, HE-HS-0670, HE-PR-0070, HE-PR-1200, HE-PR-0650, ML2069-B09, HE-PI-0160, HM-ME-0410, HE-PR-0150","ML1027-B17: FF, HE-PR-0040: FS, HE-PR-1240: FS, HE-PR-1250: FS, HE-PR-0060: FS, HE-WS-0030: FS, HE-HS-0670: SS, HE-PR-0070: FS, HE-PR-1200: FS, HE-PR-0650: FS, ML2069-B09: FS, HE-PI-0160: FS, HM-ME-0410: FS, HE-PR-0150: FS","HE-PI-0180, ML2079-B13, HE-PI-1220, HE-PI-1200","HE-PI-0180: FS, ML2079-B13: FF, HE-PI-1220: FS, HE-PI-1200: FS",2024-07-22 00:00:00,2024-07-26 17:30:00,4
HE-PI-0180,90% Model Review Report,23,P2543-R01-Oct24..1.EN.7.10,"HE-PI-0170, ML2079-B13, HE-PI-0160, HE-PL-1370, HE-PI-3520, HS-GN-0230","HE-PI-0170: FS, ML2079-B13: FF, HE-PI-0160: FS, HE-PL-1370: FS, HE-PI-3520: FS, HS-GN-0230: FS","HE-PI-1200, HE-PI-0600, ML1219-B29, HE-PI-1210","HE-PI-1200: FS, HE-PI-0600: FS 10, ML1219-B29: FF, HE-PI-1210: FS",2024-07-27 07:30:00,2024-08-28 17:30:00,32
HE-PI-0200,Issue ICR-Pipe Wall Thickness Calculation,8,P2543-R01-Oct24..1.EN.7.3,"HE-DB-130, HE-CP-0010","HE-DB-130: FS, HE-CP-0010: FS","HE-PI-1140, HE-PI-0210, HE-PI-0010","HE-PI-1140: FS, HE-PI-0210: FS, HE-PI-0010: SS 5",2023-08-15 00:00:00,2023-08-25 00:00:00,10
HE-PI-0210,Receive Company Comments-Pipe Wall Thickness Calculation,9,P2543-R01-Oct24..1.EN.7.3,HE-PI-0200,HE-PI-0200: FS,HE-PI-0220,HE-PI-0220: FS,2023-09-11 00:00:00,2023-09-22 00:00:00,11
HE-PI-0220,Re-Issue for Approval-Pipe Wall Thickness Calculation,4,P2543-R01-Oct24..1.EN.7.3,HE-PI-0210,HE-PI-0210: FS,HE-PI-0230,HE-PI-0230: FS,2023-09-25 00:00:00,2023-09-29 00:00:00,4
HE-PI-0230,Obtain Company Approval-Pipe Wall Thickness Calculation,6,P2543-R01-Oct24..1.EN.7.3,HE-PI-0220,HE-PI-0220: FS,HE-PI-0240,HE-PI-0240: FS,2023-12-29 00:00:00,2024-01-09 00:00:00,11
HE-PI-0240,Final Issue for Design/ Construction-Pipe Wall Thickness Calculation,2,P2543-R01-Oct24..1.EN.7.3,HE-PI-0230,HE-PI-0230: FS,"HE-PI-1180, CAB-4440, C-COM-750, HE-PI-0262, HE-PI-0340","HE-PI-1180: FS, CAB-4440: FS, C-COM-750: FS, HE-PI-0262: FS, HE-PI-0340: FS",2024-01-12 00:00:00,2024-01-16 00:00:00,4
HE-PI-0262,Issue ICR-Critical line List,7,P2543-R01-Oct24..1.EN.7.16,"HE-PR-1090, HE-PR-1110, HE-PI-0240, HE-PI-0050","HE-PR-1090: FS 5, HE-PR-1110: FS 10, HE-PI-0240: FS, HE-PI-0050: FS","HE-PI-0272, HE-PI-1140","HE-PI-0272: FS, HE-PI-1140: FS",2023-11-06 00:00:00,2023-11-15 00:00:00,9
HE-PI-0272,Receive Company Comments-Critical line List,7,P2543-R01-Oct24..1.EN.7.16,HE-PI-0262,HE-PI-0262: FS,HE-PI-0282,HE-PI-0282: FS,2023-11-16 00:00:00,2023-11-25 00:00:00,9
HE-PI-0282,Re-Issue for Approval-Critical line List,17,P2543-R01-Oct24..1.EN.7.16,HE-PI-0272,HE-PI-0272: FS,"HE-PI-1160, HE-PI-0292","HE-PI-1160: FS, HE-PI-0292: FS",2023-11-28 00:00:00,2023-12-22 00:00:00,24
HE-PI-0292,Obtain Company Approval-Critical line List,10,P2543-R01-Oct24..1.EN.7.16,HE-PI-0282,HE-PI-0282: FS,HE-PI-0302,HE-PI-0302: FS,2024-01-10 00:00:00,2024-01-24 00:00:00,14
HE-PI-0302,Final Issue for Design/ Construction-Critical line List,94,P2543-R01-Oct24..1.EN.7.16,"HE-PI-0292, HE-PR-1130","HE-PI-0292: FS, HE-PR-1130: SS 10","CAB-4440, HE-PI-1180","CAB-4440: FS, HE-PI-1180: FS",2024-01-29 00:00:00,2024-06-19 17:30:00,142
HE-PI-0320,"Issue ICR- Overall Plot Plan- 56"" Pipeline Launcher and metering Station (Habshan Complex)",9,P2543-R01-Oct24..1.EN.7.24.11,"HE-PR-0040, HE-PR-1240, HE-PR-0050, HE-PR-1030, HE-PI-0390","HE-PR-0040: FS, HE-PR-1240: FS, HE-PR-0050: FS, HE-PR-1030: FS, HE-PI-0390: SS 5","HE-PI-0330, HE-PI-0130, HE-WS-0030, HE-WS-0050, HE-PL-2570, HE-PR-0970, HE-PI-0600, HC-GN-0250, HE-WS-0090, HE-PI-0460","HE-PI-0330: FS, HE-PI-0130: FS, HE-WS-0030: FS, HE-WS-0050: FS, HE-PL-2570: FS, HE-PR-0970: FS, HE-PI-0600: FS, HC-GN-0250: FS, HE-WS-0090: FS, HE-PI-0460: SS 5",2023-09-15 00:00:00,2023-09-28 00:00:00,13
HE-PI-0330,"Receive Company Comments- Overall Plot Plan- 56"" Pipeline Launcher and metering Station (Habshan Complex)",2,P2543-R01-Oct24..1.EN.7.24.11,HE-PI-0320,HE-PI-0320: FS,"HE-WS-0020, HE-PI-0340","HE-WS-0020: FS, HE-PI-0340: FS",2023-11-07 00:00:00,2023-11-09 00:00:00,2
HE-PI-0340,"Re-Issue for HAZOP Studies- Overall Plot Plan- 56"" Pipeline Launcher and metering Station (Habshan Complex)",3,P2543-R01-Oct24..1.EN.7.24.11,"HE-PR-1250, HE-PR-0060, HE-PI-0330, HE-GS-0010, HE-TS-0010, HE-PI-0240, HE-TS-230, HE-GS-140","HE-PR-1250: FS, HE-PR-0060: FS, HE-PI-0330: FS, HE-GS-0010: FS, HE-TS-0010: FS, HE-PI-0240: FS, HE-TS-230: FS, HE-GS-140: FS","HE-PI-0350, ML1012-B06","HE-PI-0350: FS, ML1012-B06: FS",2023-11-10 00:00:00,2023-11-15 00:00:00,5
HE-PI-0350,"Re-Issue after HAZOP /Review Comments- Overall Plot Plan- 56"" Pipeline Launcher and metering Station (Habshan Complex)",7,P2543-R01-Oct24..1.EN.7.24.11,"HE-TS-0010, HE-PI-0340, HE-PR-0070, HE-PR-1200, HE-TS-230","HE-TS-0010: FS, HE-PI-0340: FS, HE-PR-0070: FS, HE-PR-1200: FS, HE-TS-230: FS","HE-HS-0250, HE-CS-1270, HE-PI-0360, HE-CS-1030, HE-PI-0600","HE-HS-0250: FS, HE-CS-1270: FS, HE-PI-0360: FS, HE-CS-1030: FS, HE-PI-0600: FS",2023-11-28 00:00:00,2023-12-08 00:00:00,10
HE-PI-0360,"Obtain Company Approval- Overall Plot Plan- 56"" Pipeline Launcher and metering Station (Habshan Complex)",10,P2543-R01-Oct24..1.EN.7.24.11,HE-PI-0350,HE-PI-0350: FS,HE-PI-0370,HE-PI-0370: FS,2023-12-12 00:00:00,2023-12-26 00:00:00,14
HE-PI-0390,"Issue ICR- Overall Plot Plan-52"" Pipeline SWEIHAN CRS",5,P2543-R01-Oct24..1.EN.7.24.13,"HE-PR-0040, HE-PR-1240, HE-PR-0050, HE-PR-1040","HE-PR-0040: FS, HE-PR-1240: FS, HE-PR-0050: FS, HE-PR-1040: FS","HE-PI-0460, HE-PL-2570, HE-PR-0970, HE-PL-2630, HE-WS-0030, HE-PI-0400, HE-WS-0050, HE-PI-0130, HE-CS-0730, HC-GN-0250, HE-WS-0090, HE-PI-0320","HE-PI-0460: SS, HE-PL-2570: FS, HE-PR-0970: FS, HE-PL-2630: FS, HE-WS-0030: FS, HE-PI-0400: FS, HE-WS-0050: FS, HE-PI-0130: FS, HE-CS-0730: FS, HC-GN-0250: FS, HE-WS-0090: FS, HE-PI-0320: SS 5",2023-09-20 00:00:00,2023-09-27 00:00:00,7
HE-PI-0400,"Receive Company Comments- Overall Plot Plan - 52"" Pipeline SWEIHAN CRS",9,P2543-R01-Oct24..1.EN.7.24.13,HE-PI-0390,HE-PI-0390: FS,"HE-PI-0410, HE-WS-0020","HE-PI-0410: FS, HE-WS-0020: FS",2023-10-02 00:00:00,2023-10-13 00:00:00,11
HE-PI-0410,"Re-Issue for HAZOP Studies- Overall Plot Plan - 52"" Pipeline SWEIHAN CRS",6,P2543-R01-Oct24..1.EN.7.24.13,"HE-PR-1250, HE-PR-0060, HE-PI-0400","HE-PR-1250: FS, HE-PR-0060: FS, HE-PI-0400: FS","HE-PI-0420, ML1012-B06","HE-PI-0420: FS, ML1012-B06: FS",2023-10-30 00:00:00,2023-11-07 00:00:00,8
HE-PI-0420,"Re-Issue after incorporating HAZOP /Review Comments - 52"" Pipeline SWEIHAN CRS",10,P2543-R01-Oct24..1.EN.7.24.13,"HE-PI-0410, HE-PR-0070, HE-TS-0010, HE-PR-1200","HE-PI-0410: FS, HE-PR-0070: FS, HE-TS-0010: FS, HE-PR-1200: FS","HE-CS-1270, HE-PI-0430, HE-PI-0660, HE-HS-0250, HE-CS-1030, HE-PI-0490","HE-CS-1270: FS, HE-PI-0430: FS, HE-PI-0660: FS, HE-HS-0250: FS, HE-CS-1030: FS, HE-PI-0490: SS",2023-11-08 00:00:00,2023-11-22 00:00:00,14
HE-PI-0430,"Obtain Company Approval- Overall Plot Plan - 52"" Pipeline SWEIHAN CRS",10,P2543-R01-Oct24..1.EN.7.24.13,HE-PI-0420,HE-PI-0420: FS,HE-PI-0440,HE-PI-0440: FS,2024-01-09 00:00:00,2024-01-23 00:00:00,14
HE-PI-0460,"Issue ICR- Overall Plot Plan - 4"" N2 Source Pipeline",9,P2543-R01-Oct24..1.EN.7.24.14,"HE-PI-0390, HE-PR-0040, HE-PR-1240, HE-PI-0320","HE-PI-0390: SS, HE-PR-0040: FS, HE-PR-1240: FS, HE-PI-0320: SS 5","HE-PL-3580, HE-PI-0530, HE-PI-0470, HE-PL-2690, HE-WS-0030, HE-PI-0130, HE-WS-0050, HC-GN-0250, HE-WS-0090","HE-PL-3580: FS, HE-PI-0530: SS 5, HE-PI-0470: FS, HE-PL-2690: FS, HE-WS-0030: FS, HE-PI-0130: FS, HE-WS-0050: FS, HC-GN-0250: FS, HE-WS-0090: FS",2023-09-15 00:00:00,2023-09-28 00:00:00,13
HE-PI-0470,"Receive Company Comments- Overall Plot Plan - 4"" N2 Source Pipeline",9,P2543-R01-Oct24..1.EN.7.24.14,HE-PI-0460,HE-PI-0460: FS,"HE-PI-0480, HE-WS-0020","HE-PI-0480: FS, HE-WS-0020: FS",2023-10-02 00:00:00,2023-10-13 00:00:00,11
HE-PI-0480,"Re-Issue for HAZOP Studies- Overall Plot Plan - 4"" N2 Source Pipeline",6,P2543-R01-Oct24..1.EN.7.24.14,"HE-PR-1250, HE-PI-0470, HE-PR-0060","HE-PR-1250: FS, HE-PI-0470: FS, HE-PR-0060: FS","ML1012-B06, HE-PI-0490","ML1012-B06: FS, HE-PI-0490: FS",2023-10-30 00:00:00,2023-11-07 00:00:00,8
HE-PI-0490,"Re-Issue after incorporating HAZOP /Review Comments - 4"" N2 Source Pipeline",10,P2543-R01-Oct24..1.EN.7.24.14,"HE-PR-0070, HE-TS-0010, HE-PI-0480, HE-PI-0420, HE-PR-1200, HE-TS-330","HE-PR-0070: FS, HE-TS-0010: FS, HE-PI-0480: FS, HE-PI-0420: SS, HE-PR-1200: FS, HE-TS-330: FS","HE-PI-0500, HE-CS-1030, HE-CS-1270, HE-PI-0720, HE-HS-0250","HE-PI-0500: FS, HE-CS-1030: FS, HE-CS-1270: FS, HE-PI-0720: FS, HE-HS-0250: FS",2023-11-08 00:00:00,2023-11-22 00:00:00,14
HE-PI-0500,"Obtain Company Approval- Overall Plot Plan - 4"" N2 Source Pipeline",9,P2543-R01-Oct24..1.EN.7.24.14,HE-PI-0490,HE-PI-0490: FS,HE-PI-0510,HE-PI-0510: FS,2024-04-30 07:30:00,2024-05-10 17:30:00,10
HE-PI-0530,Issue ICR- Plot plan - BVS,9,P2543-R01-Oct24..1.EN.7.24.22,"HE-PI-0460, HE-PR-0040, HE-PR-1240","HE-PI-0460: SS 5, HE-PR-0040: FS, HE-PR-1240: FS","HE-EL-0070, HC-GN-0250, HE-PI-0540, HE-WS-0050, HE-WS-0030, HE-CS-1150, HE-WS-0090, HE-CS-1090","HE-EL-0070: FS, HC-GN-0250: FS, HE-PI-0540: FS, HE-WS-0050: FS, HE-WS-0030: FS, HE-CS-1150: FS, HE-WS-0090: FS, HE-CS-1090: FS",2023-09-15 00:00:00,2023-09-28 00:00:00,13
HE-PI-0540,Receive Company Comments- Plot plan - BVS,9,P2543-R01-Oct24..1.EN.7.24.22,HE-PI-0530,HE-PI-0530: FS,"HE-PI-0550, HE-WS-0020","HE-PI-0550: FS, HE-WS-0020: FS",2023-10-02 00:00:00,2023-10-13 00:00:00,11
HE-PI-0550,Re-Issue for HAZOP Studies- Plot plan - BVS,6,P2543-R01-Oct24..1.EN.7.24.22,"HE-PR-1250, HE-PI-0540, HE-PR-0060","HE-PR-1250: FS, HE-PI-0540: FS, HE-PR-0060: FS","HE-PI-0560, HE-PI-0840, ML1012-B06","HE-PI-0560: FS, HE-PI-0840: FS, ML1012-B06: FS",2023-10-30 00:00:00,2023-11-07 00:00:00,8
HE-PI-0560,Re-Issue after incorporating HAZOP / Review Comments- Plot plan - BVS,10,P2543-R01-Oct24..1.EN.7.24.22,"HE-PI-0550, HE-TS-0010, HE-PR-0070, HE-PR-1200","HE-PI-0550: FS, HE-TS-0010: FS, HE-PR-0070: FS, HE-PR-1200: FS","HE-EL-1630, HE-EL-1570, HE-PI-0570, HE-CS-0910, HE-HS-0250, HE-PI-0840, HE-PI-0780","HE-EL-1630: FS, HE-EL-1570: FS, HE-PI-0570: FS, HE-CS-0910: FS, HE-HS-0250: FS, HE-PI-0840: FS, HE-PI-0780: FS",2023-11-08 00:00:00,2023-11-22 00:00:00,14
HE-PI-0570,Obtain Company Approval- Plot plan - BVS,5,P2543-R01-Oct24..1.EN.7.24.22,HE-PI-0560,HE-PI-0560: FS,"HE-PI-0580, HE-CS-0430","HE-PI-0580: FS, HE-CS-0430: FS",2024-01-15 00:00:00,2024-01-22 00:00:00,7
HE-PI-0600,"Issue ICR-Piping GA-56"" Pipeline Launcher and metering Station (Habshan Complex)",5,P2543-R01-Oct24..1.EN.7.11.8,"HE-PI-0180, HE-PR-0610, HE-PI-0350, HE-PI-0320","HE-PI-0180: FS 10, HE-PR-0610: FS, HE-PI-0350: FS, HE-PI-0320: FS",HE-PI-0610,HE-PI-0610: FS,2024-09-29 07:30:00,2024-10-04 17:30:00,5
HE-PI-0610,"Receive Company Comments-56"" Pipeline Launcher and metering Station (Habshan Complex)",6,P2543-R01-Oct24..1.EN.7.11.8,HE-PI-0600,HE-PI-0600: FS,HE-PI-0620,HE-PI-0620: FS,2024-10-04 07:30:00,2024-10-11 17:30:00,7
HE-PI-0620,"Re-Issue for Approval-Piping GA -56"" Pipeline Launcher and metering Station (Habshan Complex)",6,P2543-R01-Oct24..1.EN.7.11.8,"HM-ME-0410, HE-PI-0610, HE-PR-0040, HE-PR-1240, HE-PR-1250, HE-PR-0060, HE-WS-0030, HE-HS-0670, HE-PR-0070, HE-PR-1200, HE-PR-0090, HE-PR-0650, HE-PR-1220, HE-PR-0830, HE-PR-0770, HE-PR-0140, HE-PR-0110, HE-PR-0730, HE-PR-0790, HE-PI-0160","HM-ME-0410: FS, HE-PI-0610: FS, HE-PR-0040: FS, HE-PR-1240: FS, HE-PR-1250: FS, HE-PR-0060: FS, HE-WS-0030: FS, HE-HS-0670: SS, HE-PR-0070: FS, HE-PR-1200: FS, HE-PR-0090: FS, HE-PR-0650: FS, HE-PR-1220: FS, HE-PR-0830: FS, HE-PR-0770: FS, HE-PR-0140: FS,",HE-PI-0630,HE-PI-0630: FS,2024-10-11 07:30:00,2024-10-18 17:30:00,7
HE-PI-0630,"Obtain Company Approval-Piping GA-56"" Pipeline Launcher and metering Station (Habshan Complex)",4,P2543-R01-Oct24..1.EN.7.11.8,HE-PI-0620,HE-PI-0620: FS,HE-PI-0640,HE-PI-0640: FS,2024-10-18 07:30:00,2024-10-23 17:30:00,5
HE-PI-0660,"Issue ICR-Piping GA for 52"" Pipeline SWEIHAN CRS",5,P2543-R01-Oct24..1.EN.7.11.25,"HE-PI-0420, HE-PR-0610","HE-PI-0420: FS, HE-PR-0610: FS","HE-PI-0720, HE-PI-0670","HE-PI-0720: FF, HE-PI-0670: FS",2024-09-02 07:30:00,2024-09-06 17:30:00,4
HE-PI-0670,"Receive Company Comments-Piping GA for 52"" Pipeline SWEIHAN CRS",5,P2543-R01-Oct24..1.EN.7.11.25,HE-PI-0660,HE-PI-0660: FS,"HE-PI-0680, HE-PI-0750, HE-PI-0730","HE-PI-0680: FS, HE-PI-0750: FS, HE-PI-0730: FS",2024-09-09 07:30:00,2024-09-13 17:30:00,4
HE-PI-0680,"Re-Issue for Approval-Piping GA for 52"" Pipeline SWEIHAN CRS",5,P2543-R01-Oct24..1.EN.7.11.25,"HE-PI-0670, HM-ME-0410","HE-PI-0670: FS, HM-ME-0410: FS","HE-PI-1220, HE-PI-0690","HE-PI-1220: FS, HE-PI-0690: FS",2024-09-16 07:30:00,2024-09-20 17:30:00,4
HE-PI-0690,"Obtain Company Approval-Piping GA for 52"" Pipeline SWEIHAN CRS",5,P2543-R01-Oct24..1.EN.7.11.25,HE-PI-0680,HE-PI-0680: FS,HE-PI-0700,HE-PI-0700: FS,2024-09-23 07:30:00,2024-09-27 17:30:00,4
HE-PI-0780,Issue ICR - Piping GA Drawings for 591-BVS-01,5,P2543-R01-Oct24..1.EN.7.11.4,"HE-PI-0560, HE-PR-0610","HE-PI-0560: FS, HE-PR-0610: FS","HE-PI-0840, HE-PI-0790","HE-PI-0840: FS, HE-PI-0790: FS",2024-09-02 07:30:00,2024-09-06 17:30:00,4
HE-PI-0790,Receive Company Comments-Piping GA Drawings for 591-BVS-01,5,P2543-R01-Oct24..1.EN.7.11.4,HE-PI-0780,HE-PI-0780: FS,"HE-PI-0800, HE-PI-0850","HE-PI-0800: FS, HE-PI-0850: FS",2024-09-09 07:30:00,2024-09-13 17:30:00,4
HE-PI-0800,Re-Issue for Approval-Piping GA Drawings for 591-BVS-01,5,P2543-R01-Oct24..1.EN.7.11.4,HE-PI-0790,HE-PI-0790: FS,"HE-PI-1220, HE-PI-0810","HE-PI-1220: FS, HE-PI-0810: FS",2024-09-16 07:30:00,2024-09-20 17:30:00,4
HE-PI-0810,Obtain Company Approval-Piping GA Drawings for 591-BVS-01,5,P2543-R01-Oct24..1.EN.7.11.4,HE-PI-0800,HE-PI-0800: FS,HE-PI-0820,HE-PI-0820: FS,2024-09-23 07:30:00,2024-09-27 17:30:00,4
HE-PI-0840,Issue ICR-Piping GA for 591-BVS-01 to 06,6,P2543-R01-Oct24..1.EN.7.11.28,"HE-PI-0780, HE-PR-0610, HE-PI-0550, HE-PI-0560","HE-PI-0780: FS, HE-PR-0610: FS, HE-PI-0550: FS, HE-PI-0560: FS",HE-PI-0850,HE-PI-0850: FS,2024-09-16 07:30:00,2024-09-23 17:30:00,7
HE-PI-0850,Receive Company Comments-Piping GA for 591-BVS-01 to 06,4,P2543-R01-Oct24..1.EN.7.11.28,"HE-PI-0840, HE-PI-0790","HE-PI-0840: FS, HE-PI-0790: FS",HE-PI-0860,HE-PI-0860: FS,2024-09-23 07:30:00,2024-09-26 17:30:00,3
HE-PI-0860,Re-Issue for Approval-Piping GA for 591-BVS-01 to 06,3,P2543-R01-Oct24..1.EN.7.11.28,HE-PI-0850,HE-PI-0850: FS,HE-PI-0870,HE-PI-0870: FS,2024-09-26 07:30:00,2024-09-30 17:30:00,4
HE-PI-0870,Obtain Company Approval-Piping GA for 591-BVS-01 to 06,5,P2543-R01-Oct24..1.EN.7.11.28,HE-PI-0860,HE-PI-0860: FS,HE-PI-0880,HE-PI-0880: FS,2024-09-30 07:30:00,2024-10-04 17:30:00,4
HE-PI-0900,Issue ICR-Data sheet for Ball Valves,4,P2543-R01-Oct24..1.EN.7.4.9,"HE-PR-1090, HE-PR-0110","HE-PR-1090: FF, HE-PR-0110: FS","HE-IC-1210, HE-IC-1090, HE-IC-1030, HE-PI-0910, HE-PI-1020, HE-PI-3580, HE-IC-1750, HE-IC-1770, HE-IC-1250, HE-IC-1790, CAB-4460","HE-IC-1210: FS, HE-IC-1090: FS, HE-IC-1030: FS, HE-PI-0910: FS, HE-PI-1020: FS, HE-PI-3580: FS 5, HE-IC-1750: FS, HE-IC-1770: FS, HE-IC-1250: FS, HE-IC-1790: FS, CAB-4460: FS",2023-09-22 00:00:00,2023-09-28 00:00:00,6
HE-PI-0910,Receive Company Comments-Data sheet for Ball Valves,7,P2543-R01-Oct24..1.EN.7.4.9,HE-PI-0900,HE-PI-0900: FS,HE-PI-0920,HE-PI-0920: FS,2023-09-30 00:00:00,2023-10-11 00:00:00,11
HE-PI-0920,Re-Issue for Approval-Data sheet for Ball Valves,5,P2543-R01-Oct24..1.EN.7.4.9,HE-PI-0910,HE-PI-0910: FS,"HE-PI-0930, HE-PI-1040","HE-PI-0930: FS, HE-PI-1040: FS",2023-10-31 00:00:00,2023-11-07 00:00:00,7
HE-PI-0930,Obtain Company Approval-Data sheet for Ball Valves,4,P2543-R01-Oct24..1.EN.7.4.9,HE-PI-0920,HE-PI-0920: FS,HE-PI-0940,HE-PI-0940: FS,2023-11-08 00:00:00,2023-11-14 00:00:00,6
HE-PI-0940,Final Issue for Design/ Construction-Datasheet for Ball valves,5,P2543-R01-Oct24..1.EN.7.4.9,HE-PI-0930,HE-PI-0930: FS,"HE-PI-1060, CAB-4440, HE-IC-1750","HE-PI-1060: FS, CAB-4440: FS, HE-IC-1750: FS 10",2023-11-15 00:00:00,2023-11-22 00:00:00,7
HE-PI-3580,Issue ICR-Data sheet for Check Valves,4,P2543-R01-Oct24..1.EN.7.4.1,HE-PI-0900,HE-PI-0900: FS 5,"HE-PI-3590, HE-PI-3630","HE-PI-3590: FS, HE-PI-3630: FS",2023-09-22 00:00:00,2023-09-28 00:00:00,6
HE-PI-3590,Receive Company Comments-Data sheet for Check Valves,8,P2543-R01-Oct24..1.EN.7.4.1,HE-PI-3580,HE-PI-3580: FS,HE-PI-3600,HE-PI-3600: FS,2023-10-05 00:00:00,2023-10-17 00:00:00,12
HE-PI-3600,Re-Issue for Approval-Data sheet for Check Valves,5,P2543-R01-Oct24..1.EN.7.4.1,HE-PI-3590,HE-PI-3590: FS,HE-PI-3610,HE-PI-3610: FS,2023-10-31 00:00:00,2023-11-07 00:00:00,7
HE-PI-3610,Obtain Company Approval-Data sheet for Check Valves,4,P2543-R01-Oct24..1.EN.7.4.1,HE-PI-3600,HE-PI-3600: FS,HE-PI-3620,HE-PI-3620: FS,2023-11-08 00:00:00,2023-11-14 00:00:00,6
HE-PI-3620,Final Issue for Design/ Construction-Datasheet for Check valves,5,P2543-R01-Oct24..1.EN.7.4.1,HE-PI-3610,HE-PI-3610: FS,HE-PI-3670,HE-PI-3670: FS,2023-11-15 00:00:00,2023-11-22 00:00:00,7
HE-PI-0960,Issue ICR- Datasheet for Plug Valves,4,P2543-R01-Oct24..1.EN.7.4.2,"HE-PR-0110, HE-PR-1090","HE-PR-0110: FS, HE-PR-1090: FF","HE-PI-0970, HE-PI-1020, HE-PI-1320, HE-IC-1090, HE-IC-1150","HE-PI-0970: FS, HE-PI-1020: FS, HE-PI-1320: FS, HE-IC-1090: FS, HE-IC-1150: FF",2023-09-22 00:00:00,2023-09-28 00:00:00,6
HE-PI-0970,Receive Company Comments- Datasheet for Plug Valves,7,P2543-R01-Oct24..1.EN.7.4.2,HE-PI-0960,HE-PI-0960: FS,HE-PI-0980,HE-PI-0980: FS,2023-09-30 00:00:00,2023-10-11 00:00:00,11
HE-PI-0980,Re-Issue for Approval- Datasheet for Plug Valves,5,P2543-R01-Oct24..1.EN.7.4.2,HE-PI-0970,HE-PI-0970: FS,"HE-PI-1040, HE-PI-0990","HE-PI-1040: FS, HE-PI-0990: FS",2023-10-31 00:00:00,2023-11-07 00:00:00,7
HE-PI-0990,Obtain Company Approval- Datasheet for Plug Valves,4,P2543-R01-Oct24..1.EN.7.4.2,HE-PI-0980,HE-PI-0980: FS,HE-PI-1000,HE-PI-1000: FS,2023-11-08 00:00:00,2023-11-14 00:00:00,6
HE-PI-1000,Final Issue for Design/ Construction-Datasheet for Plug valves,5,P2543-R01-Oct24..1.EN.7.4.2,HE-PI-0990,HE-PI-0990: FS,"HE-PI-1060, CAB-4440","HE-PI-1060: FS, CAB-4440: FS",2023-11-15 00:00:00,2023-11-22 00:00:00,7
HE-PI-1320,Issue ICR- Datasheet for Piping Special Items,22,P2543-R01-Oct24..1.EN.7.4.15,HE-PI-0960,HE-PI-0960: FS,"HE-PI-1330, HE-PI-3530","HE-PI-1330: FS, HE-PI-3530: FS",2023-11-16 00:00:00,2023-12-19 00:00:00,33
HE-PI-1330,Receive Company Comments- Datasheet for Piping Special Items,5,P2543-R01-Oct24..1.EN.7.4.15,HE-PI-1320,HE-PI-1320: FS,HE-PI-1340,HE-PI-1340: FS,2023-12-19 00:00:00,2023-12-26 00:00:00,7
HE-PI-1340,Re-Issue for Approval- Datasheet for Piping Special Items,12,P2543-R01-Oct24..1.EN.7.4.15,HE-PI-1330,HE-PI-1330: FS,HE-PI-1350,HE-PI-1350: FS,2024-01-29 00:00:00,2024-02-14 00:00:00,16
HE-PI-1350,Obtain Company Approval- Datasheet for Piping Special Items,9,P2543-R01-Oct24..1.EN.7.4.15,HE-PI-1340,HE-PI-1340: FS,HE-PI-1310,HE-PI-1310: FS,2024-02-26 00:00:00,2024-03-08 00:00:00,11
HE-PI-1310,Final Issue for Design/ Construction-Datasheet for Piping Special Items,73,P2543-R01-Oct24..1.EN.7.4.15,HE-PI-1350,HE-PI-1350: FS,HE-PI-3720,HE-PI-3720: FF,2024-03-10 00:00:00,2024-07-02 17:30:00,114
HE-PI-1030,Receive Company Comments-MR for Ball valves/ Plug Valves,7,P2543-R01-Oct24..1.EN.7.8.18,HE-PI-1020,HE-PI-1020: FS,"HE-PI-1040, HE-PI-1080","HE-PI-1040: FS, HE-PI-1080: FS",2023-11-29 00:00:00,2023-12-09 00:00:00,10
HE-PI-1020,Issue ICR-MR for Ball valves/ Plug Valves,11,P2543-R01-Oct24..1.EN.7.8.18,"HE-PI-0960, HE-PI-0900, HE-DB-0010, HE-PI-0010","HE-PI-0960: FS, HE-PI-0900: FS, HE-DB-0010: FS, HE-PI-0010: FS","HE-PI-1030, HP-ME-1070","HE-PI-1030: FS, HP-ME-1070: FS",2023-11-29 00:00:00,2023-12-15 00:00:00,16
HE-PI-1040,Re-Issue for Approval-MR for Ball valves/ Plug Valves,53,P2543-R01-Oct24..1.EN.7.8.18,"HE-PI-1030, HE-PI-0980, HE-PI-0920","HE-PI-1030: FS, HE-PI-0980: FS, HE-PI-0920: FS",HE-PI-1050,HE-PI-1050: FS,2023-12-04 00:00:00,2024-02-16 00:00:00,74
HE-PI-1050,Obtain Company Approval-MR for Ball valves/ Plug Valves,53,P2543-R01-Oct24..1.EN.7.8.18,HE-PI-1040,HE-PI-1040: FS,HE-PI-1060,HE-PI-1060: FS,2023-12-04 00:00:00,2024-02-16 00:00:00,74
HE-PI-1060,Final Issue for Design/ Construction-Material Requisition for Ball/ Plug Valves,15,P2543-R01-Oct24..1.EN.7.8.18,"HE-PI-0940, HE-PI-1050, HE-PI-1000","HE-PI-0940: FS, HE-PI-1050: FS, HE-PI-1000: FS","CAB-4440, HP-ME-1090","CAB-4440: FS, HP-ME-1090: FS",2024-02-16 00:00:00,2024-03-08 00:00:00,21
HE-PI-3630,Issue ICR-MR for Check Valves,7,P2543-R01-Oct24..1.EN.7.8.1,HE-PI-3580,HE-PI-3580: FS,"HE-PI-3640, HE-PI-3730","HE-PI-3640: FS, HE-PI-3730: FS",2023-12-06 00:00:00,2023-12-15 00:00:00,9
HE-PI-3640,Receive Company Comments-MR for Check Valves,5,P2543-R01-Oct24..1.EN.7.8.1,HE-PI-3630,HE-PI-3630: FS,"HE-PI-3650, HE-PI-3730","HE-PI-3650: FS, HE-PI-3730: FS",2023-12-29 00:00:00,2024-01-08 00:00:00,10
HE-PI-3650,Re-Issue for Approval-MR for Check Valves,14,P2543-R01-Oct24..1.EN.7.8.1,HE-PI-3640,HE-PI-3640: FS,HE-PI-3660,HE-PI-3660: FS,2024-02-26 00:00:00,2024-03-17 00:00:00,20
HE-PI-3660,Obtain Company Approval-MR for Check Valves,9,P2543-R01-Oct24..1.EN.7.8.1,HE-PI-3650,HE-PI-3650: FS,HE-PI-3670,HE-PI-3670: FS,2024-03-04 00:00:00,2024-03-17 00:00:00,13
HE-PI-3670,Final Issue for Design/ Construction-Material Requisition for Check Valves,9,P2543-R01-Oct24..1.EN.7.8.1,"HE-PI-3660, HE-PI-3620","HE-PI-3660: FS, HE-PI-3620: FS",HE-PI-3770,HE-PI-3770: FS,2024-03-04 00:00:00,2024-03-17 00:00:00,13
HE-PI-3680,Issue ICR-MR for Piping Special Items,4,P2543-R01-Oct24..1.EN.7.8.2,HE-PI-3530,HE-PI-3530: SS 5,"HE-PI-3690, HE-PI-1410","HE-PI-3690: FS, HE-PI-1410: FS",2023-12-29 00:00:00,2024-01-05 00:00:00,7
HE-PI-3690,Receive Company Comments-MR for Piping Special Items,5,P2543-R01-Oct24..1.EN.7.8.2,HE-PI-3680,HE-PI-3680: FS,"HE-PI-3700, HE-PI-1410","HE-PI-3700: FS, HE-PI-1410: FS",2024-01-08 00:00:00,2024-01-15 00:00:00,7
HE-PI-3700,Re-Issue for Approval-MR for Piping Special Items,43,P2543-R01-Oct24..1.EN.7.8.2,HE-PI-3690,HE-PI-3690: FS,HE-PI-3710,HE-PI-3710: FS,2024-01-16 00:00:00,2024-03-17 00:00:00,61
HE-PI-3710,Obtain Company Approval-MR for Piping Special Items,16,P2543-R01-Oct24..1.EN.7.8.2,HE-PI-3700,HE-PI-3700: FS,HE-PI-3720,HE-PI-3720: FS,2024-03-04 00:00:00,2024-03-28 00:00:00,24
HE-PI-3530,Issue ICR-MR for Piping Bulks,24,P2543-R01-Oct24..1.EN.7.8.6,HE-PI-1320,HE-PI-1320: FS,"HE-PI-3540, HE-PI-1360, HE-PI-3680","HE-PI-3540: FS, HE-PI-1360: FS, HE-PI-3680: SS 5",2023-12-12 00:00:00,2024-01-16 00:00:00,35
HE-PI-3540,Receive Company Comments-MR for Piping Bulks,7,P2543-R01-Oct24..1.EN.7.8.6,HE-PI-3530,HE-PI-3530: FS,"HE-PI-3550, HE-PI-1360","HE-PI-3550: FS, HE-PI-1360: FS",2024-01-17 00:00:00,2024-01-26 00:00:00,9
HE-PI-3550,Re-Issue for Approval-MR for Piping Bulks,66,P2543-R01-Oct24..1.EN.7.8.6,HE-PI-3540,HE-PI-3540: FS,HE-PI-3560,HE-PI-3560: FS,2024-01-16 00:00:00,2024-04-25 00:00:00,100
HE-PI-3560,Obtain Company Approval-MR for Piping Bulks,14,P2543-R01-Oct24..1.EN.7.8.6,HE-PI-3550,HE-PI-3550: FS,HE-PI-3570,HE-PI-3570: FS,2024-04-26 00:00:00,2024-05-16 00:00:00,20
HE-PI-3570,Final Issue for Design/ Construction-Material Requisition for Piping Bulks & Special Items,8,P2543-R01-Oct24..1.EN.7.8.6,HE-PI-3560,HE-PI-3560: FS,"HE-PI-1400, HE-PI-1450, HE-PI-1450, HE-PI-1260","HE-PI-1400: FS, HE-PI-1450: FS, HE-PI-1450: FF, HE-PI-1260: FS",2024-06-04 00:00:00,2024-06-14 00:00:00,10
HE-PI-1360,"Issue ICR- TBE for Piping Bulks (Pipe, Flange, etc)",46,P2543-R01-Oct24..1.EN.7.2.17,"HE-PI-3530, HE-PI-3540","HE-PI-3530: FS, HE-PI-3540: FS",HE-PI-1370,HE-PI-1370: FS,2024-01-29 00:00:00,2024-04-04 00:00:00,66
HE-PI-1370,"Receive Company Comments- TBE for Piping Bulks (Pipe, Flange, etc)",12,P2543-R01-Oct24..1.EN.7.2.17,HE-PI-1360,HE-PI-1360: FS,HE-PI-1380,HE-PI-1380: FS,2024-03-19 00:00:00,2024-04-06 00:00:00,18
HE-PI-1380,"Re-Issue for Approval- TBE for Piping Bulks (Pipe, Flange, etc)",30,P2543-R01-Oct24..1.EN.7.2.17,HE-PI-1370,HE-PI-1370: FS,HE-PI-1390,HE-PI-1390: FS,2024-04-25 00:00:00,2024-06-06 07:30:00,42
HE-PI-1390,"Obtain Company Approval- TBE for Piping Bulks (Pipe, Flange, etc)",20,P2543-R01-Oct24..1.EN.7.2.17,HE-PI-1380,HE-PI-1380: FS,HE-PI-1400,HE-PI-1400: FS,2024-06-07 07:30:00,2024-07-10 17:30:00,33
HE-PI-1400,"Final Issue for Design/ Construction-TBE for Piping Bulks (Pipe, Flange, etc)",6,P2543-R01-Oct24..1.EN.7.2.17,"HE-PI-1390, HE-PI-3570","HE-PI-1390: FS, HE-PI-3570: FS","ML1219-B29, HP-BK-0350","ML1219-B29: FF, HP-BK-0350: FS",2024-10-14 07:30:00,2024-10-21 17:30:00,7
HE-PI-1410,Issue ICR- TBE for Piping Special Items,22,P2543-R01-Oct24..1.EN.7.2.20,"HE-PI-3680, HE-PI-3690","HE-PI-3680: FS, HE-PI-3690: FS",HE-PI-1420,HE-PI-1420: FS,2024-06-26 00:00:00,2024-07-26 17:30:00,30
HE-PI-1420,Receive Company Comments- TBE for Piping Special Items,12,P2543-R01-Oct24..1.EN.7.2.20,HE-PI-1410,HE-PI-1410: FS,HE-PI-1430,HE-PI-1430: FS,2024-07-29 07:30:00,2024-08-13 17:30:00,15
HE-PI-1430,Re-Issue for Approval- TBE for Piping Special Items,31,P2543-R01-Oct24..1.EN.7.2.20,HE-PI-1420,HE-PI-1420: FS,HE-PI-1440,HE-PI-1440: FS,2024-08-14 07:30:00,2024-09-26 07:30:00,43
HE-PI-1080,Issue ICR- TBE for Ball valves/ Plug Valves,18,P2543-R01-Oct24..1.EN.7.2.6,"HP-ME-1070, HE-PI-1030","HP-ME-1070: FS, HE-PI-1030: FS","HE-PI-1090, HP-ME-1080","HE-PI-1090: FS, HP-ME-1080: SS",2024-01-30 00:00:00,2024-02-23 00:00:00,24
HE-PI-1090,Receive Company Comments- TBE for Ball valves/ Plug Valves,9,P2543-R01-Oct24..1.EN.7.2.6,HE-PI-1080,HE-PI-1080: FS,HE-PI-1100,HE-PI-1100: FS,2024-02-26 00:00:00,2024-03-08 00:00:00,11
HE-PI-1100,Re-Issue for Approval- TBE for Ball valves/ Plug Valves,9,P2543-R01-Oct24..1.EN.7.2.6,HE-PI-1090,HE-PI-1090: FS,HE-PI-1110,HE-PI-1110: FS,2024-03-10 00:00:00,2024-03-25 00:00:00,15
HE-PI-1110,Obtain Company Approval- TBE for Ball valves/ Plug Valves,32,P2543-R01-Oct24..1.EN.7.2.6,HE-PI-1100,HE-PI-1100: FS,"HE-PI-1120, HP-ME-1090, HP-ME-1080","HE-PI-1120: FS, HP-ME-1090: FS, HP-ME-1080: FF",2024-03-26 00:00:00,2024-05-16 00:00:00,51
HE-PI-3730,Issue ICR- TBE for Check Valves,25,P2543-R01-Oct24..1.EN.7.2.1,"HE-PI-3630, HE-PI-3640","HE-PI-3630: FS, HE-PI-3640: FS",HE-PI-3740,HE-PI-3740: FS,2024-02-06 00:00:00,2024-03-12 00:00:00,35
HE-PI-3740,Receive Company Comments- TBE for Check Valves,9,P2543-R01-Oct24..1.EN.7.2.1,HE-PI-3730,HE-PI-3730: FS,HE-PI-3750,HE-PI-3750: FS,2024-03-13 00:00:00,2024-03-28 00:00:00,15
HE-PI-3750,Re-Issue for Approval- TBE for Check Valves,9,P2543-R01-Oct24..1.EN.7.2.1,HE-PI-3740,HE-PI-3740: FS,HE-PI-3760,HE-PI-3760: FS,2024-03-31 00:00:00,2024-04-18 00:00:00,18
HE-PI-3760,Obtain Company Approval- TBE for Check Valves,13,P2543-R01-Oct24..1.EN.7.2.1,HE-PI-3750,HE-PI-3750: FS,HE-PI-3770,HE-PI-3770: FS,2024-04-28 00:00:00,2024-05-16 00:00:00,18
HE-PI-3770,Final Issue for Design/ Construction-TBE for Check Valves,8,P2543-R01-Oct24..1.EN.7.2.1,"HE-PI-3760, HE-PI-3670","HE-PI-3760: FS, HE-PI-3670: FS",HE-PI-1180,HE-PI-1180: FF,2024-07-18 07:30:00,2024-07-29 17:30:00,11
HE-PI-1140,Issue ICR-Piping Stress Analysis & Report,9,P2543-R01-Oct24..1.EN.7.12,"HM-ME-0410, HE-PI-0200, HE-PI-0262, HE-PL-2810, ML2059-B05, HE-PI-0130","HM-ME-0410: SS 15, HE-PI-0200: FS, HE-PI-0262: FS, HE-PL-2810: SS, ML2059-B05: FS, HE-PI-0130: FS",HE-PI-1150,HE-PI-1150: FS,2024-03-06 00:00:00,2024-03-19 00:00:00,13
HE-PI-1150,Receive Company Comments-Piping Stress Analysis & Report,6,P2543-R01-Oct24..1.EN.7.12,HE-PI-1140,HE-PI-1140: FS,HE-PI-1160,HE-PI-1160: FS,2024-03-20 00:00:00,2024-03-29 00:00:00,9
HE-PI-1160,Re-Issue for Approval-Piping Stress Analysis & Report,37,P2543-R01-Oct24..1.EN.7.12,"HE-PI-0282, HE-PI-1150, HE-PL-2830","HE-PI-0282: FS, HE-PI-1150: FS, HE-PL-2830: SS","HE-CS-1330, HE-PI-1170, HE-CS-1450, HE-CS-1390","HE-CS-1330: SS, HE-PI-1170: FS, HE-CS-1450: FS, HE-CS-1390: FS",2024-04-18 00:00:00,2024-06-10 00:00:00,53
HE-PI-1170,Obtain Company Approval-Piping Stress Analysis & Report,4,P2543-R01-Oct24..1.EN.7.12,HE-PI-1160,HE-PI-1160: FS,HE-PI-1180,HE-PI-1180: FS,2024-06-11 00:00:00,2024-06-18 00:00:00,7
HE-PI-1200,Issue ICR-Piping Isometrics,29,P2543-R01-Oct24..1.EN.7.5,"HE-PI-0180, HE-PI-0150, HE-PI-0170","HE-PI-0180: FS, HE-PI-0150: FS, HE-PI-0170: FS",HE-PI-1210,HE-PI-1210: FF 10,2024-09-02 07:30:00,2024-10-10 17:30:00,38
HE-PI-1210,Receive Company Comments-Piping Isometrics,21,P2543-R01-Oct24..1.EN.7.5,"HE-PI-1200, HE-PI-0180","HE-PI-1200: FF 10, HE-PI-0180: FS",HE-PI-1220,HE-PI-1220: FF 5,2024-09-16 07:30:00,2024-10-14 17:30:00,28
HE-PI-1220,Re-Issue for Approval-Piping Isometrics,21,P2543-R01-Oct24..1.EN.7.5,"HE-PI-1210, HE-PI-0680, HE-PI-0800, HE-PI-0170","HE-PI-1210: FF 5, HE-PI-0680: FS, HE-PI-0800: FS, HE-PI-0170: FS",HE-PI-1230,HE-PI-1230: FS,2024-09-21 07:30:00,2024-10-21 17:30:00,30
HE-PI-1230,Obtain Company Approval-Piping Isometrics,19,P2543-R01-Oct24..1.EN.7.5,HE-PI-1220,HE-PI-1220: FS,HE-PI-1240,HE-PI-1240: FS,2024-09-30 07:30:00,2024-10-24 17:30:00,24
HE-PI-1260,Piping MTO - 1st,6,P2543-R01-Oct24..1.EN.7.19,"ML2059-B05, HE-PI-3570","ML2059-B05: FS 10, HE-PI-3570: FS","HP-BK-0340, HP-BK-520, HE-PI-1280","HP-BK-0340: FS, HP-BK-520: FS, HE-PI-1280: FS",2024-06-29 07:30:00,2024-07-09 17:30:00,10
HE-PI-1280,Piping MTO - 2nd,17,P2543-R01-Oct24..1.EN.7.19,"ML2069-B09, HE-PI-1260","ML2069-B09: FS 10, HE-PI-1260: FS",HE-PI-1300,HE-PI-1300: FS,2024-08-21 07:30:00,2024-09-12 17:30:00,22
HE-PI-1300,Piping MTO - Final,8,P2543-R01-Oct24..1.EN.7.19,"ML2079-B13, HE-PI-1280","ML2079-B13: FS 10, HE-PI-1280: FS","CAB-4440, HP-BK-0350, C-56-PL-607-PI-1000, C-56-PL-607-PI-1200, C-56-PL-607-PI-1400, C-56-PL-607-PI-2000, C-56-G-HT-PI-1000, C-56-G-HT-PI-1200, C-56-G-HT-PI-1400, C-56-G-HT-PI-2000, C-56-PR-838-PI-1000, C-56-PR-838-PI-1200, C-56-PR-838-PI-1400, C-56-PR-838","CAB-4440: FS, HP-BK-0350: FF, C-56-PL-607-PI-1000: FS, C-56-PL-607-PI-1200: FS, C-56-PL-607-PI-1400: FS, C-56-PL-607-PI-2000: FS, C-56-G-HT-PI-1000: FS, C-56-G-HT-PI-1200: FS, C-56-G-HT-PI-1400: FS, C-56-G-HT-PI-2000: FS, C-56-PR-838-PI-1000: FS, C-56-PR-8",2024-10-01 07:30:00,2024-10-10 17:30:00,9
HE-ME-270,Issue ICR- Mechanical Design Basis,10,P2543-R01-Oct24..1.EN.5.1,"HE-DB-0010, ML1002","HE-DB-0010: FS, ML1002: SS","HP-ME-0860, HE-ME-0070, HE-ME-230, HE-ME-0130, HE-ME-480, HE-ME-0010","HP-ME-0860: FS, HE-ME-0070: SS, HE-ME-230: FS, HE-ME-0130: SS, HE-ME-480: SS, HE-ME-0010: FS",2023-08-06 00:00:00,2023-08-21 00:00:00,15
HE-ME-230,Receive Company Comments- Mechanical Design Basis,7,P2543-R01-Oct24..1.EN.5.1,HE-ME-270,HE-ME-270: FS,HE-ME-240,HE-ME-240: FS,2023-08-22 00:00:00,2023-08-31 00:00:00,9
HE-ME-240,Re-Issue for Approval- Mechanical Design Basis,10,P2543-R01-Oct24..1.EN.5.1,HE-ME-230,HE-ME-230: FS,HE-ME-250,HE-ME-250: FS,2023-09-11 00:00:00,2023-09-25 00:00:00,14
HE-ME-250,Obtain Company Approval- Mechanical Design Basis,6,P2543-R01-Oct24..1.EN.5.1,HE-ME-240,HE-ME-240: FS,HE-ME-260,HE-ME-260: FS,2023-09-26 00:00:00,2023-10-04 00:00:00,8
HE-ME-260,Final Issue for Design/ Construction- Mechanical Design Basis,4,P2543-R01-Oct24..1.EN.5.1,HE-ME-250,HE-ME-250: FS,"HE-ME-0110, HE-ME-0170, CAB-4430, HE-PR-0470, HE-ME-520, HE-ME-0050","HE-ME-0110: FS, HE-ME-0170: FS, CAB-4430: FS, HE-PR-0470: FS, HE-ME-520: FS, HE-ME-0050: FS",2023-10-05 00:00:00,2023-10-11 00:00:00,6
HE-ME-0010,Issue ICR-  Addendum to DGS,16,P2543-R01-Oct24..1.EN.5.12,"HE-ME-270, ML1002","HE-ME-270: FS, ML1002: SS","HE-ME-0070, HP-ME-0860, HE-ME-0020, HE-ME-0130, HE-ME-480, HE-ME-620","HE-ME-0070: FS, HP-ME-0860: FS, HE-ME-0020: FS, HE-ME-0130: SS 5, HE-ME-480: SS, HE-ME-620: SS 10",2023-09-01 00:00:00,2023-09-23 00:00:00,22
HE-ME-0020,Receive Company Comments-  Addendum to DGS,4,P2543-R01-Oct24..1.EN.5.12,HE-ME-0010,HE-ME-0010: FS,HE-ME-0030,HE-ME-0030: FS,2023-10-01 00:00:00,2023-10-06 00:00:00,5
HE-ME-0030,Re-Issue for Approval-  Addendum to DGS,5,P2543-R01-Oct24..1.EN.5.12,HE-ME-0020,HE-ME-0020: FS,HE-ME-0040,HE-ME-0040: FS,2023-10-07 00:00:00,2023-10-14 00:00:00,7
HE-ME-0040,Obtain Company Approval-  Addendum to DGS,5,P2543-R01-Oct24..1.EN.5.12,HE-ME-0030,HE-ME-0030: FS,HE-ME-0050,HE-ME-0050: FS,2023-10-15 00:00:00,2023-10-21 00:00:00,6
HE-ME-0050,Final Issue for Design/ Construction-  Addendum to DGS,4,P2543-R01-Oct24..1.EN.5.12,"HE-ME-0040, HE-ME-260","HE-ME-0040: FS, HE-ME-260: FS","HE-ME-0110, HE-ME-0170, CAB-4430, HE-PR-0470, HE-ME-520, HE-ME-610","HE-ME-0110: FS, HE-ME-0170: FS, CAB-4430: FS, HE-PR-0470: FS, HE-ME-520: FS, HE-ME-610: FS",2023-10-22 00:00:00,2023-10-27 00:00:00,5
HE-ME-620,Issue ICR-  Addendum to DGS,0,P2543-R01-Oct24..1.EN.5.4,HE-ME-0010,HE-ME-0010: SS 10,"HE-ME-580, HE-ME-670, HE-ME-300","HE-ME-580: FS, HE-ME-670: SS 15, HE-ME-300: FS",2023-09-23 00:00:00,2023-09-24 00:00:00,1
HE-ME-580,Receive Company Comments-  Addendum to DGS,2,P2543-R01-Oct24..1.EN.5.4,HE-ME-620,HE-ME-620: FS,HE-ME-590,HE-ME-590: FS,2023-09-24 00:00:00,2023-09-27 00:00:00,3
HE-ME-590,Re-Issue for Approval-  Addendum to DGS,4,P2543-R01-Oct24..1.EN.5.4,HE-ME-580,HE-ME-580: FS,HE-ME-600,HE-ME-600: FS,2023-09-28 00:00:00,2023-10-04 00:00:00,6
HE-ME-600,Obtain Company Approval-  Addendum to DGS,6,P2543-R01-Oct24..1.EN.5.4,HE-ME-590,HE-ME-590: FS,HE-ME-610,HE-ME-610: FS,2023-10-05 00:00:00,2023-10-13 00:00:00,8
HE-ME-610,Final Issue for Design/ Construction-  Addendum to DGS,9,P2543-R01-Oct24..1.EN.5.4,"HE-ME-600, HE-ME-0050","HE-ME-600: FS, HE-ME-0050: FS","ML1219-B29, CAB-4430, HE-ME-400","ML1219-B29: FF, CAB-4430: FS, HE-ME-400: FS",2023-10-14 00:00:00,2023-10-27 00:00:00,13
HE-ME-670,Issue ICR-  Pig Launcher/Receiver Length Report,11,P2543-R01-Oct24..1.EN.5.5,HE-ME-620,HE-ME-620: SS 15,"HE-ME-630, HE-ME-310","HE-ME-630: FS, HE-ME-310: FS",2023-10-10 00:00:00,2023-10-25 00:00:00,15
HE-ME-630,Receive Company Comments-  Pig Launcher/Receiver Length Report,4,P2543-R01-Oct24..1.EN.5.5,HE-ME-670,HE-ME-670: FS,HE-ME-640,HE-ME-640: FS,2023-11-19 00:00:00,2023-11-24 00:00:00,5
HE-ME-640,Re-Issue for Approval-  Pig Launcher/Receiver Length Report,6,P2543-R01-Oct24..1.EN.5.5,HE-ME-630,HE-ME-630: FS,HE-ME-650,HE-ME-650: FS,2023-11-21 00:00:00,2023-11-29 00:00:00,8
HE-ME-650,Obtain Company Approval-  Pig Launcher/Receiver Length Report,7,P2543-R01-Oct24..1.EN.5.5,HE-ME-640,HE-ME-640: FS,HE-ME-660,HE-ME-660: FS,2023-11-30 00:00:00,2023-12-12 00:00:00,12
HE-ME-660,Final Issue for Design/ Construction-  Pig Launcher/Receiver Length Report,5,P2543-R01-Oct24..1.EN.5.5,HE-ME-650,HE-ME-650: FS,"HE-ME-520, HE-ME-530","HE-ME-520: FS, HE-ME-530: FF",2023-12-29 00:00:00,2024-01-07 00:00:00,9
HE-ME-0070,Issue ICR-Datasheet for Sales Gas CRS Filters,7,P2543-R01-Oct24..1.EN.5.2.5,"HE-ME-0010, HE-PR-0430, HE-ME-270, HE-IC-620, HE-PR-0440","HE-ME-0010: FS, HE-PR-0430: FS, HE-ME-270: SS, HE-IC-620: SS, HE-PR-0440: FS","HE-ME-0080, HE-ME-0130, HE-ME-480","HE-ME-0080: FS, HE-ME-0130: FS, HE-ME-480: SS",2023-09-02 00:00:00,2023-09-13 00:00:00,11
HE-ME-0080,Receive Company Comments-Datasheet for Sales Gas CRS Filters,12,P2543-R01-Oct24..1.EN.5.2.5,HE-ME-0070,HE-ME-0070: FS,HE-ME-0090,HE-ME-0090: FS,2023-09-14 00:00:00,2023-10-02 00:00:00,18
HE-ME-0090,Re-Issue for Approval-Datasheet for Sales Gas CRS Filters,13,P2543-R01-Oct24..1.EN.5.2.5,"HE-ME-0080, HE-HS-0670","HE-ME-0080: FS, HE-HS-0670: FS","HE-ME-0150, HE-ME-0100, HE-ME-500","HE-ME-0150: FS, HE-ME-0100: FS, HE-ME-500: FS",2023-10-03 00:00:00,2023-10-20 00:00:00,17
HE-ME-0100,Obtain Company Approval-Datasheet for Sales Gas CRS Filters,5,P2543-R01-Oct24..1.EN.5.2.5,HE-ME-0090,HE-ME-0090: FS,HE-ME-0110,HE-ME-0110: FS,2023-11-07 00:00:00,2023-11-14 00:00:00,7
HE-ME-0110,Final Issue for Design/ Construction-Datasheet for Sales Gas CRS Filters,10,P2543-R01-Oct24..1.EN.5.2.5,"HE-ME-0050, HE-PR-0470, HE-ME-0100, HE-ME-260, HE-IC-610","HE-ME-0050: FS, HE-PR-0470: SS, HE-ME-0100: FS, HE-ME-260: FS, HE-IC-610: FS","CAB-4430, ML1015-B08, HE-ME-0170","CAB-4430: FS, ML1015-B08: FF, HE-ME-0170: FS",2024-01-10 00:00:00,2024-01-24 00:00:00,14
HE-ME-310,Issue ICR-Datasheet for PIG RECEIVER (839-V-101),9,P2543-R01-Oct24..1.EN.5.2.1,"HE-PR-0490, HE-ME-670, HE-PR-0530","HE-PR-0490: FS, HE-ME-670: FS, HE-PR-0530: FS","HE-ME-320, HE-ME-360","HE-ME-320: FS, HE-ME-360: SS 3",2023-09-14 00:00:00,2023-09-27 00:00:00,13
HE-ME-320,Receive Company Comments-Datasheet for PIG RECEIVER (839-V-101),5,P2543-R01-Oct24..1.EN.5.2.1,HE-ME-310,HE-ME-310: FS,HE-ME-280,HE-ME-280: FS,2023-09-28 00:00:00,2023-10-05 00:00:00,7
HE-ME-280,Re-Issue for Approval-Datasheet for PIG RECEIVER (839-V-101),10,P2543-R01-Oct24..1.EN.5.2.1,HE-ME-320,HE-ME-320: FS,HE-ME-290,HE-ME-290: FS,2023-10-06 00:00:00,2023-10-20 00:00:00,14
HE-ME-290,Obtain Company Approval-Datasheet for PIG RECEIVER (839-V-101),5,P2543-R01-Oct24..1.EN.5.2.1,HE-ME-280,HE-ME-280: FS,HE-ME-300,HE-ME-300: FS,2023-11-07 00:00:00,2023-11-14 00:00:00,7
HE-ME-300,Final Issue for Design/ Construction-Datasheet for PIG RECEIVER (839-V-101),9,P2543-R01-Oct24..1.EN.5.2.1,"HE-ME-290, HE-ME-620","HE-ME-290: FS, HE-ME-620: FS",HE-ME-350,HE-ME-350: FS,2024-07-01 07:30:00,2024-07-15 07:30:00,14
HE-ME-360,Issue ICR-Datasheet for PIG LAUNCHER (838-V-602),9,P2543-R01-Oct24..1.EN.5.2.2,"HE-PR-0490, HE-ME-310","HE-PR-0490: FS, HE-ME-310: SS 3","HE-ME-370, HE-ME-410","HE-ME-370: FS, HE-ME-410: SS 3",2023-09-14 00:00:00,2023-09-27 00:00:00,13
HE-ME-370,Receive Company Comments-Datasheet for PIG LAUNCHER (838-V-602),5,P2543-R01-Oct24..1.EN.5.2.2,HE-ME-360,HE-ME-360: FS,HE-ME-330,HE-ME-330: FS,2023-09-28 00:00:00,2023-10-05 00:00:00,7
HE-ME-330,Re-Issue for Approval-Datasheet for PIG LAUNCHER (838-V-602),10,P2543-R01-Oct24..1.EN.5.2.2,HE-ME-370,HE-ME-370: FS,HE-ME-340,HE-ME-340: FS,2023-10-06 00:00:00,2023-10-20 00:00:00,14
HE-ME-340,Obtain Company Approval-Datasheet for PIG LAUNCHER (838-V-602),5,P2543-R01-Oct24..1.EN.5.2.2,HE-ME-330,HE-ME-330: FS,HE-ME-350,HE-ME-350: FS,2023-11-07 00:00:00,2023-11-14 00:00:00,7
HE-ME-350,Final Issue for Design/ Construction-Datasheet for PIG LAUNCHER (838-V-602),5,P2543-R01-Oct24..1.EN.5.2.2,"HE-ME-340, HE-ME-300","HE-ME-340: FS, HE-ME-300: FS",HE-ME-400,HE-ME-400: FS,2024-07-12 07:30:00,2024-07-19 07:30:00,7
HE-ME-410,Issue ICR-Datasheet for PIG RECEIVER (838-V-601),9,P2543-R01-Oct24..1.EN.5.2.3,"HE-PR-0490, HE-ME-360","HE-PR-0490: FS, HE-ME-360: SS 3","HE-ME-420, HE-ME-460","HE-ME-420: FS, HE-ME-460: SS 3",2023-09-14 00:00:00,2023-09-27 00:00:00,13
HE-ME-420,Receive Company Comments-Datasheet for PIG RECEIVER (838-V-601),5,P2543-R01-Oct24..1.EN.5.2.3,HE-ME-410,HE-ME-410: FS,HE-ME-380,HE-ME-380: FS,2023-09-28 00:00:00,2023-10-05 00:00:00,7
HE-ME-380,Re-Issue for Approval-Datasheet for PIG RECEIVER (838-V-601),10,P2543-R01-Oct24..1.EN.5.2.3,HE-ME-420,HE-ME-420: FS,HE-ME-390,HE-ME-390: FS,2023-10-06 00:00:00,2023-10-20 00:00:00,14
HE-ME-390,Obtain Company Approval-Datasheet for PIG RECEIVER (838-V-601),5,P2543-R01-Oct24..1.EN.5.2.3,HE-ME-380,HE-ME-380: FS,HE-ME-400,HE-ME-400: FS,2023-11-07 00:00:00,2023-11-14 00:00:00,7
HE-ME-400,Final Issue for Design/ Construction-Datasheet for PIG RECEIVER (838-V-601),5,P2543-R01-Oct24..1.EN.5.2.3,"HE-ME-390, HE-ME-610, HE-ME-350","HE-ME-390: FS, HE-ME-610: FS, HE-ME-350: FS",HE-ME-450,HE-ME-450: FS,2024-07-12 07:30:00,2024-07-19 07:30:00,7
HE-ME-460,Issue ICR-Datasheet for PIG LAUNCHER (607-V-603),9,P2543-R01-Oct24..1.EN.5.2.4,"HE-PR-0490, HE-ME-410","HE-PR-0490: FS, HE-ME-410: SS 3","HE-ME-470, HE-ME-480","HE-ME-470: FS, HE-ME-480: FS",2023-09-14 00:00:00,2023-09-27 00:00:00,13
HE-ME-470,Receive Company Comments-Datasheet for PIG LAUNCHER (607-V-603),5,P2543-R01-Oct24..1.EN.5.2.4,HE-ME-460,HE-ME-460: FS,HE-ME-430,HE-ME-430: FS,2023-09-28 00:00:00,2023-10-05 00:00:00,7
HE-ME-430,Re-Issue for Approval-Datasheet for PIG LAUNCHER (607-V-603),10,P2543-R01-Oct24..1.EN.5.2.4,HE-ME-470,HE-ME-470: FS,HE-ME-440,HE-ME-440: FS,2023-10-06 00:00:00,2023-10-20 00:00:00,14
HE-ME-440,Obtain Company Approval-Datasheet for PIG LAUNCHER (607-V-603),5,P2543-R01-Oct24..1.EN.5.2.4,HE-ME-430,HE-ME-430: FS,HE-ME-450,HE-ME-450: FS,2023-11-07 00:00:00,2023-11-14 00:00:00,7
HE-ME-450,Final Issue for Design/ Construction-Datasheet for PIG LAUNCHER (607-V-603),9,P2543-R01-Oct24..1.EN.5.2.4,"HE-ME-440, HE-ME-400","HE-ME-440: FS, HE-ME-400: FS",CAB-4430,CAB-4430: FS,2024-07-01 07:30:00,2024-07-15 07:30:00,14
HE-ME-0130,Issue ICR-Material Requisitions for Sales Gas CRS Filters,8,P2543-R01-Oct24..1.EN.5.6.7,"HE-ME-0070, HE-ME-0010, HE-ME-270, HE-IC-620","HE-ME-0070: FS, HE-ME-0010: SS 5, HE-ME-270: SS, HE-IC-620: SS","HP-ME-0160, HE-ME-0140","HP-ME-0160: FS, HE-ME-0140: FS",2023-10-09 00:00:00,2023-10-19 00:00:00,10
HE-ME-0140,Receive Company Comments-Material Requisitions for Sales Gas CRS Filters,8,P2543-R01-Oct24..1.EN.5.6.7,HE-ME-0130,HE-ME-0130: FS,HE-ME-0150,HE-ME-0150: FS,2023-10-30 00:00:00,2023-11-09 00:00:00,10
HE-ME-0150,Re-Issue for Approval-Material Requisitions for Sales Gas CRS Filters,6,P2543-R01-Oct24..1.EN.5.6.7,"HE-ME-0090, HE-ME-0140","HE-ME-0090: FS, HE-ME-0140: FS",HE-ME-0160,HE-ME-0160: FS,2024-02-26 00:00:00,2024-03-05 00:00:00,8
HE-ME-0160,Obtain Company Approval-Material Requisitions for Sales Gas CRS Filters,6,P2543-R01-Oct24..1.EN.5.6.7,HE-ME-0150,HE-ME-0150: FS,HE-ME-0170,HE-ME-0170: FS,2024-03-06 00:00:00,2024-03-14 00:00:00,8
HE-ME-0170,Final Issue for Design/ Construction-Material Requisitions for Sales Gas CRS Filters,8,P2543-R01-Oct24..1.EN.5.6.7,"HE-ME-0050, HE-ME-0160, HE-ME-0110, HE-ME-260, HE-IC-610","HE-ME-0050: FS, HE-ME-0160: FS, HE-ME-0110: FS, HE-ME-260: FS, HE-IC-610: FS","CAB-4430, ML1017-B18, HM-ME-0320","CAB-4430: FS, ML1017-B18: FS, HM-ME-0320: FS",2024-03-15 00:00:00,2024-03-28 00:00:00,13
HE-ME-480,Issue ICR-Material Requisitions for Pig Launcher/Receiver,8,P2543-R01-Oct24..1.EN.5.6.3,"HE-ME-0070, HE-ME-0010, HE-ME-270, HE-IC-620, HE-ME-460","HE-ME-0070: SS, HE-ME-0010: SS, HE-ME-270: SS, HE-IC-620: SS, HE-ME-460: FS","HP-ME-0210, HE-ME-490","HP-ME-0210: FS, HE-ME-490: FS",2023-10-09 00:00:00,2023-10-19 00:00:00,10
HE-ME-490,Receive Company Comments-Material Requisitions for Pig Launcher/Receiver,6,P2543-R01-Oct24..1.EN.5.6.3,HE-ME-480,HE-ME-480: FS,HE-ME-500,HE-ME-500: FS,2023-11-07 00:00:00,2023-11-15 00:00:00,8
HE-ME-500,Re-Issue for Approval-Material Requisitions for Pig Launcher/Receiver,2,P2543-R01-Oct24..1.EN.5.6.3,"HE-ME-0090, HE-ME-490","HE-ME-0090: FS, HE-ME-490: FS",HE-ME-510,HE-ME-510: FS,2023-12-29 00:00:00,2024-01-03 00:00:00,5
HE-ME-510,Obtain Company Approval-Material Requisitions for Pig Launcher/Receiver,3,P2543-R01-Oct24..1.EN.5.6.3,HE-ME-500,HE-ME-500: FS,HE-ME-520,HE-ME-520: FS,2024-01-04 00:00:00,2024-01-09 00:00:00,5
HE-ME-520,Final Issue for Design/ Construction-Material Requisitions for Pig Launcher/Receiver,43,P2543-R01-Oct24..1.EN.5.6.3,"HE-ME-0050, HE-ME-510, HE-ME-260, HE-IC-610, HE-ME-660","HE-ME-0050: FS, HE-ME-510: FS, HE-ME-260: FS, HE-IC-610: FS, HE-ME-660: FS","CAB-4430, ML1017-B18, HM-ME-0320, HE-ME-570","CAB-4430: FS, ML1017-B18: FS, HM-ME-0320: FS, HE-ME-570: FS",2024-01-10 00:00:00,2024-03-09 00:00:00,59
HE-ME-0190,Issue ICR-TBEs for Sales Gas CRS Filters,4,P2543-R01-Oct24..1.EN.5.3.9,HP-ME-0160,HP-ME-0160: FS,"HE-ME-0200, HP-ME-0170","HE-ME-0200: FS, HP-ME-0170: SS",2023-12-04 00:00:00,2023-12-08 00:00:00,4
HE-ME-0200,Receive Company Comments-TBEs for Sales Gas CRS Filters,6,P2543-R01-Oct24..1.EN.5.3.9,HE-ME-0190,HE-ME-0190: FS,HE-ME-0210,HE-ME-0210: FS,2023-12-29 00:00:00,2024-01-09 00:00:00,11
HE-ME-0210,Re-Issue for Approval-TBEs for Sales Gas CRS Filters,13,P2543-R01-Oct24..1.EN.5.3.9,HE-ME-0200,HE-ME-0200: FS,HE-ME-0220,HE-ME-0220: FS,2024-01-10 00:00:00,2024-01-29 00:00:00,19
HE-ME-0220,Obtain Company Approval-TBEs for Sales Gas CRS Filters,8,P2543-R01-Oct24..1.EN.5.3.9,HE-ME-0210,HE-ME-0210: FS,"HP-ME-0180, HE-ME-0230, HP-ME-0170","HP-ME-0180: FS, HE-ME-0230: FS, HP-ME-0170: FF",2024-01-31 00:00:00,2024-02-12 00:00:00,12
HE-ME-0230,Final Issue for Design/ Construction-TBEs for Sales Gas CRS Filters,14,P2543-R01-Oct24..1.EN.5.3.9,HE-ME-0220,HE-ME-0220: FS,"HP-ME-0180, CAB-4430","HP-ME-0180: SS, CAB-4430: FS",2024-02-13 00:00:00,2024-03-04 00:00:00,20
HE-ME-530,Issue ICR-TBEs for Pig Launcher/Receiver,6,P2543-R01-Oct24..1.EN.5.3.3,"HP-ME-0160, HE-ME-660","HP-ME-0160: FS, HE-ME-660: FF",HE-ME-540,HE-ME-540: FS,2023-11-30 00:00:00,2023-12-11 00:00:00,11
HE-ME-540,Receive Company Comments-TBEs for Pig Launcher/Receiver,0,P2543-R01-Oct24..1.EN.5.3.3,HE-ME-530,HE-ME-530: FS,HE-ME-550,HE-ME-550: FS,2023-12-29 00:00:00,2023-12-29 00:00:00,1
HE-ME-550,Re-Issue for Approval-TBEs for Pig Launcher/Receiver,3,P2543-R01-Oct24..1.EN.5.3.3,HE-ME-540,HE-ME-540: FS,HE-ME-560,HE-ME-560: FS,2023-12-29 00:00:00,2024-01-04 00:00:00,6
HE-ME-560,Obtain Company Approval-TBEs for Pig Launcher/Receiver,7,P2543-R01-Oct24..1.EN.5.3.3,HE-ME-550,HE-ME-550: FS,"HE-ME-570, HP-ME-0220","HE-ME-570: FS, HP-ME-0220: FF",2024-01-05 00:00:00,2024-01-16 00:00:00,11
HE-ME-570,Final Issue for Design/ Construction-TBEs for Pig Launcher/Receiver,9,P2543-R01-Oct24..1.EN.5.3.3,"HE-ME-560, HE-ME-520","HE-ME-560: FS, HE-ME-520: FS","ML1219-B29, CAB-4430","ML1219-B29: FF, CAB-4430: FS",2024-08-01 07:30:00,2024-08-13 17:30:00,12
HE-CS-1560,Issued for Review - Civil / Structural Design Basis,5,P2543-R01-Oct24..1.EN.8.2,HE-DB-0010,HE-DB-0010: FS,"HE-CS-0070, HE-CS-1570","HE-CS-0070: FS, HE-CS-1570: FS",2023-08-23 00:00:00,2023-08-30 00:00:00,7
HE-CS-1570,Review Company Comments - Civil / Structural Design Basis,1,P2543-R01-Oct24..1.EN.8.2,HE-CS-1560,HE-CS-1560: FS,"HS-CN-0460, HE-CS-1580","HS-CN-0460: FS, HE-CS-1580: FS",2023-08-31 00:00:00,2023-09-01 00:00:00,1
HE-CS-1580,Re-Issue for Approval - Civil / Structural Design Basis,4,P2543-R01-Oct24..1.EN.8.2,HE-CS-1570,HE-CS-1570: FS,HE-CS-1590,HE-CS-1590: FS,2023-11-01 00:00:00,2023-11-07 00:00:00,6
HE-CS-1590,Obtain Company Approval - Civil / Structural Design Basis,5,P2543-R01-Oct24..1.EN.8.2,HE-CS-1580,HE-CS-1580: FS,"HE-CS-1600, HE-EL-0850","HE-CS-1600: FS, HE-EL-0850: FS",2023-11-08 00:00:00,2023-11-15 00:00:00,7
HE-CS-1600,Final Issue for Design/ Construction-Civil / Structural Design Basis,42,P2543-R01-Oct24..1.EN.8.2,HE-CS-1590,HE-CS-1590: FS,"HE-CS-0110, HE-EL-0890, CAB-4420, HE-CS-0110, HE-CS-0050","HE-CS-0110: FS, HE-EL-0890: FS, CAB-4420: FS, HE-CS-0110: FF, HE-CS-0050: FS",2023-11-21 00:00:00,2024-01-22 00:00:00,62
HE-CS-0010,Issued for Review - Addendum to DGs,44,P2543-R01-Oct24..1.EN.8.1,HE-DB-0010,HE-DB-0010: FS,"HE-BL-1000, HE-CS-0110, HE-CS-0070, HE-CS-0020","HE-BL-1000: FS, HE-CS-0110: FS, HE-CS-0070: FS, HE-CS-0020: FS",2023-08-07 00:00:00,2023-10-06 00:00:00,60
HE-CS-0020,Review Company Comments - Addendum to DGs,9,P2543-R01-Oct24..1.EN.8.1,HE-CS-0010,HE-CS-0010: FS,"HE-CS-0030, HE-CS-0070","HE-CS-0030: FS, HE-CS-0070: FS",2023-10-09 00:00:00,2023-10-20 00:00:00,11
HE-CS-0030,Re-Issue for Approval - Addendum to DGs,14,P2543-R01-Oct24..1.EN.8.1,HE-CS-0020,HE-CS-0020: FS,HE-CS-0040,HE-CS-0040: FS,2023-10-23 00:00:00,2023-11-10 00:00:00,18
HE-CS-0040,Obtain Company Approval - Addendum to DGs,9,P2543-R01-Oct24..1.EN.8.1,HE-CS-0030,HE-CS-0030: FS,"HE-CS-0050, HE-EL-0850","HE-CS-0050: FS, HE-EL-0850: FS 10",2023-11-13 00:00:00,2023-11-24 00:00:00,11
HE-CS-0050,Final Issue for Design/ Construction-Addendum to DGs,19,P2543-R01-Oct24..1.EN.8.1,"HE-CS-0040, HE-CS-1600","HE-CS-0040: FS, HE-CS-1600: FS","HE-CS-0110, HE-EL-0890, CAB-4420, HE-CS-0110","HE-CS-0110: FS, HE-EL-0890: FS, CAB-4420: FS, HE-CS-0110: FF",2023-11-27 00:00:00,2023-12-25 00:00:00,28
HE-CS-0070,Issued for Review - Standard drawings for Anchor bolt,7,P2543-R01-Oct24..1.EN.8.9,"HE-CS-0010, HE-CS-1560, HE-CS-0020","HE-CS-0010: FS, HE-CS-1560: FS, HE-CS-0020: FS",HE-CS-0080,HE-CS-0080: FS,2024-04-06 00:00:00,2024-04-19 17:30:00,13
HE-CS-0080,Review Company Comments - Standard drawings for Anchor bolt,11,P2543-R01-Oct24..1.EN.8.9,HE-CS-0070,HE-CS-0070: FS,HE-CS-0090,HE-CS-0090: FS,2024-04-22 07:30:00,2024-05-06 17:30:00,14
HE-CS-0090,Re-Issue for Approval - Standard drawings for Anchor bolt,19,P2543-R01-Oct24..1.EN.8.9,HE-CS-0080,HE-CS-0080: FS,HE-CS-0100,HE-CS-0100: FS,2024-05-07 07:30:00,2024-05-31 17:30:00,24
HE-CS-0100,Obtain Company Approval - Standard drawings for Anchor bolt,12,P2543-R01-Oct24..1.EN.8.9,HE-CS-0090,HE-CS-0090: FS,HE-CS-0110,HE-CS-0110: FS,2024-06-21 07:30:00,2024-07-09 17:30:00,18
HE-CS-1710,Issued for Review - Anchor Block Calculation,12,P2543-R01-Oct24..1.EN.8.5,HE-PL-2810,HE-PL-2810: FF 10,"HE-CS-1760, HE-CS-1720","HE-CS-1760: FS, HE-CS-1720: FS",2024-03-30 00:00:00,2024-04-23 00:00:00,24
HE-CS-1720,Review Company Comments - Anchor Block Calculation,9,P2543-R01-Oct24..1.EN.8.5,HE-CS-1710,HE-CS-1710: FS,HE-CS-1730,HE-CS-1730: FS,2024-04-23 00:00:00,2024-05-06 00:00:00,13
HE-CS-1730,Re-Issue for Approval - Anchor Block Calculation,13,P2543-R01-Oct24..1.EN.8.5,HE-CS-1720,HE-CS-1720: FS,HE-CS-1740,HE-CS-1740: FS,2024-06-14 00:00:00,2024-07-05 17:30:00,21
HE-CS-1740,Obtain Company Approval - Anchor Block Calculation,61,P2543-R01-Oct24..1.EN.8.5,HE-CS-1730,HE-CS-1730: FS,HE-CS-1750,HE-CS-1750: FS,2024-07-15 07:30:00,2024-10-07 17:30:00,84
HE-CS-1760,Issued for Review - Anchor Block Detail Drawings,12,P2543-R01-Oct24..1.EN.8.6,HE-CS-1710,HE-CS-1710: FS,HE-CS-1770,HE-CS-1770: FS,2024-03-30 00:00:00,2024-04-23 00:00:00,24
HE-CS-1770,Review Company Comments - Anchor Block Detail Drawings,42,P2543-R01-Oct24..1.EN.8.6,HE-CS-1760,HE-CS-1760: FS,HE-CS-1780,HE-CS-1780: FS,2024-05-06 00:00:00,2024-07-05 17:30:00,60
HE-CS-1780,Re-Issue for Approval - Anchor Block Detail Drawings,34,P2543-R01-Oct24..1.EN.8.6,HE-CS-1770,HE-CS-1770: FS,HE-CS-1790,HE-CS-1790: FS,2024-07-08 07:30:00,2024-08-23 17:30:00,46
HE-CS-1790,Obtain Company Approval - Anchor Block Detail Drawings,11,P2543-R01-Oct24..1.EN.8.6,HE-CS-1780,HE-CS-1780: FS,HE-CS-1800,HE-CS-1800: FS,2024-09-02 07:30:00,2024-09-16 17:30:00,14
HE-CS-0130,Issued for Review - Typical trench detail drawing,10,P2543-R01-Oct24..1.EN.8.14,HE-PL-0070,HE-PL-0070: FS,"HE-CS-0190, HE-CS-0140","HE-CS-0190: FS, HE-CS-0140: FS",2023-10-27 00:00:00,2023-11-10 00:00:00,14
HE-CS-0140,Review Company Comments - Typical trench detail drawing,14,P2543-R01-Oct24..1.EN.8.14,HE-CS-0130,HE-CS-0130: FS,HE-CS-0150,HE-CS-0150: FS,2023-11-13 00:00:00,2023-12-01 00:00:00,18
HE-CS-0150,Re-Issue for Approval - Typical trench detail drawing,0,P2543-R01-Oct24..1.EN.8.14,HE-CS-0140,HE-CS-0140: FS,HE-CS-0160,HE-CS-0160: FS,2023-12-01 00:00:00,2023-12-01 00:00:00,1
HE-CS-0160,Obtain Company Approval - Typical trench detail drawing,0,P2543-R01-Oct24..1.EN.8.14,HE-CS-0150,HE-CS-0150: FS,HE-CS-0170,HE-CS-0170: FS,2023-12-01 00:00:00,2023-12-01 00:00:00,1
HE-CS-0170,Final Issue for Design/ Construction-Typical trench detail drawing,9,P2543-R01-Oct24..1.EN.8.14,HE-CS-0160,HE-CS-0160: FS,"HE-CS-1550, ML1034-B25, ML1209-B27, CAB-4420, ML1032-B21, C-COM-750, ML1035-B26, HE-CS-0230, C-56-PL-607-CI-1000, C-56-EB2-CI-1000, C-56-G-HT-CI-1000, C-56-PR-838-CI-1000, C-56-591-01-CI-1000, C-52-598-06-CI-1000, C-52-598-05-CI-1000, C-52-598-04-CI-1000,","HE-CS-1550: FS, ML1034-B25: FS, ML1209-B27: FS, CAB-4420: FS, ML1032-B21: FS, C-COM-750: FS, ML1035-B26: FS, HE-CS-0230: FS, C-56-PL-607-CI-1000: FS, C-56-EB2-CI-1000: FS, C-56-G-HT-CI-1000: FS, C-56-PR-838-CI-1000: FS, C-56-591-01-CI-1000: FS, C-52-598-06",2023-12-04 00:00:00,2023-12-15 00:00:00,11
HE-CS-0190,Issued for Review - Typical duct bank detail drawing,6,P2543-R01-Oct24..1.EN.8.13,HE-CS-0130,HE-CS-0130: FS,"HE-CS-0250, HE-CS-0370, HE-CS-0200","HE-CS-0250: FS, HE-CS-0370: FS, HE-CS-0200: FS",2023-08-23 00:00:00,2023-08-31 00:00:00,8
HE-CS-0200,Review Company Comments - Typical duct bank detail drawing,4,P2543-R01-Oct24..1.EN.8.13,HE-CS-0190,HE-CS-0190: FS,HE-CS-0210,HE-CS-0210: FS,2023-09-01 00:00:00,2023-09-07 00:00:00,6
HE-CS-0210,Re-Issue for Approval - Typical duct bank detail drawing,5,P2543-R01-Oct24..1.EN.8.13,HE-CS-0200,HE-CS-0200: FS,HE-CS-0220,HE-CS-0220: FS,2023-09-08 00:00:00,2023-09-15 00:00:00,7
HE-CS-0220,Obtain Company Approval - Typical duct bank detail drawing,6,P2543-R01-Oct24..1.EN.8.13,HE-CS-0210,HE-CS-0210: FS,HE-CS-0230,HE-CS-0230: FS,2023-09-16 00:00:00,2023-09-26 00:00:00,10
HE-CS-0230,Final Issue for Design/ Construction-Typical duct bank detail drawing,4,P2543-R01-Oct24..1.EN.8.13,"HE-CS-0220, HE-CS-0170","HE-CS-0220: FS, HE-CS-0170: FS","HE-CS-1550, ML1034-B25, ML1035-B26, CAB-4420, C-COM-750, ML1209-B27, HP-BK-0260, HE-CS-0290, C-56-PL-607-CI-1400, C-56-PL-607-CI-1500, C-56-EB2-CI-1400, C-56-G-HT-CI-1600, C-56-PR-838-CI-1400, C-56-PR-838-CI-1410, C-56-PR-838-CI-1420, C-56-591-01-CI-1400,","HE-CS-1550: FS, ML1034-B25: FS, ML1035-B26: FS, CAB-4420: FS, C-COM-750: FS, ML1209-B27: FS, HP-BK-0260: FS, HE-CS-0290: FS, C-56-PL-607-CI-1400: FS, C-56-PL-607-CI-1500: FS, C-56-EB2-CI-1400: FF, C-56-G-HT-CI-1600: FS, C-56-PR-838-CI-1400: FS, C-56-PR-838",2023-09-27 00:00:00,2023-10-03 00:00:00,6
HE-CS-0250,Issued for Review - Typical Road and paving detail drawing,10,P2543-R01-Oct24..1.EN.8.15,HE-CS-0190,HE-CS-0190: FS,"HE-CS-0310, HE-CS-0260","HE-CS-0310: FS, HE-CS-0260: FS",2023-09-12 00:00:00,2023-09-26 00:00:00,14
HE-CS-0260,Review Company Comments - Typical Road and paving detail drawing,6,P2543-R01-Oct24..1.EN.8.15,HE-CS-0250,HE-CS-0250: FS,HE-CS-0270,HE-CS-0270: FS,2023-09-27 00:00:00,2023-10-05 00:00:00,8
HE-CS-0270,Re-Issue for Approval - Typical Road and paving detail drawing,2,P2543-R01-Oct24..1.EN.8.15,HE-CS-0260,HE-CS-0260: FS,HE-CS-0280,HE-CS-0280: FS,2023-10-06 00:00:00,2023-10-10 00:00:00,4
HE-CS-0280,Obtain Company Approval - Typical Road and paving detail drawing,3,P2543-R01-Oct24..1.EN.8.15,HE-CS-0270,HE-CS-0270: FS,HE-CS-0290,HE-CS-0290: FS,2023-10-11 00:00:00,2023-10-15 00:00:00,4
HE-CS-0290,Final Issue for Design/ Construction-Typical Road and paving detail drawing,2,P2543-R01-Oct24..1.EN.8.15,"HE-CS-0280, HE-CS-0230","HE-CS-0280: FS, HE-CS-0230: FS","ML1034-B25, ML1035-B26, ML1209-B27, HE-CS-1550, CAB-4420, C-COM-750, C-56-PL-607-CI-2600, C-56-EB2-CI-2010, C-56-G-HT-CI-2600, C-56-PR-838-CI-2600, C-56-591-01-CI-2600, C-52-598-06-CI-2600, C-52-598-05-CI-2600, C-52-598-03-CI-2600, C-52-598-02-CI-2600, C-5","ML1034-B25: FS, ML1035-B26: FS, ML1209-B27: FS, HE-CS-1550: FS, CAB-4420: FS, C-COM-750: FS, C-56-PL-607-CI-2600: FS, C-56-EB2-CI-2010: FS, C-56-G-HT-CI-2600: FS, C-56-PR-838-CI-2600: FS, C-56-591-01-CI-2600: FS, C-52-598-06-CI-2600: FS, C-52-598-05-CI-260",2023-10-16 00:00:00,2023-10-18 00:00:00,2
HE-CS-0310,Issued for Review - Typical Fence and gate detail drawing,9,P2543-R01-Oct24..1.EN.8.16,HE-CS-0250,HE-CS-0250: FS,HE-CS-0320,HE-CS-0320: FS,2023-08-24 00:00:00,2023-09-06 00:00:00,13
HE-CS-0320,Review Company Comments - Typical Fence and gate detail drawing,2,P2543-R01-Oct24..1.EN.8.16,HE-CS-0310,HE-CS-0310: FS,HE-CS-0330,HE-CS-0330: FS,2023-09-07 00:00:00,2023-09-11 00:00:00,4
HE-CS-0330,Re-Issue for Approval - Typical Fence and gate detail drawing,8,P2543-R01-Oct24..1.EN.8.16,HE-CS-0320,HE-CS-0320: FS,HE-CS-0340,HE-CS-0340: FS,2023-09-12 00:00:00,2023-09-22 00:00:00,10
HE-CS-0340,Obtain Company Approval - Typical Fence and gate detail drawing,3,P2543-R01-Oct24..1.EN.8.16,HE-CS-0330,HE-CS-0330: FS,HE-CS-0350,HE-CS-0350: FS,2023-09-22 00:00:00,2023-09-27 00:00:00,5
HE-CS-0350,Final Issue for Design/ Construction-Typical Fence and gate detail drawing,1,P2543-R01-Oct24..1.EN.8.16,HE-CS-0340,HE-CS-0340: FS,"ML1035-B26, C-COM-750, ML1034-B25, ML1209-B27, CAB-4420, ML1034-B25, ML1209-B27, HE-CS-1550, ML1035-B26, C-56-PL-607-CI-2220, C-56-591-01-CI-2200, C-52-HG01-FENCE-1000, C-52-06CR-FENCE-1000, C-52-598-06-CI-2200, C-52-598-05-CI-2200, C-52-598-04-CI-2200, C-","ML1035-B26: FF, C-COM-750: FF, ML1034-B25: FS, ML1209-B27: FS, CAB-4420: FS, ML1034-B25: FF, ML1209-B27: FF, HE-CS-1550: FS, ML1035-B26: FS, C-56-PL-607-CI-2220: FS, C-56-591-01-CI-2200: FS, C-52-HG01-FENCE-1000: FS 90, C-52-06CR-FENCE-1000: FS 28, C-52-59",2023-09-28 00:00:00,2023-09-29 00:00:00,1
HE-CS-0370,Issued for Review - Typical details of protection slab to protect existing UG pipe at road crossing,67,P2543-R01-Oct24..1.EN.8.17,HE-CS-0190,HE-CS-0190: FS,HE-CS-0380,HE-CS-0380: FS,2023-12-11 00:00:00,2024-03-15 00:00:00,95
HE-CS-0380,Review Company Comments - Typical details of protection slab to protect existing UG pipe at road crossing,8,P2543-R01-Oct24..1.EN.8.17,HE-CS-0370,HE-CS-0370: FS,HE-CS-0390,HE-CS-0390: FS,2024-03-16 00:00:00,2024-03-29 00:00:00,13
HE-CS-0390,Re-Issue for Approval - Typical details of protection slab to protect existing UG pipe at road crossing,3,P2543-R01-Oct24..1.EN.8.17,HE-CS-0380,HE-CS-0380: FS,HE-CS-0400,HE-CS-0400: FS,2024-03-30 00:00:00,2024-04-05 00:00:00,6
HE-CS-0400,Obtain Company Approval - Typical details of protection slab to protect existing UG pipe at road crossing,7,P2543-R01-Oct24..1.EN.8.17,HE-CS-0390,HE-CS-0390: FS,HE-CS-0410,HE-CS-0410: FS,2024-04-06 00:00:00,2024-04-20 00:00:00,14
HE-CS-0410,Final Issue for Design/ Construction-Typical details of protection slab to protect existing UG pipe at road crossing,6,P2543-R01-Oct24..1.EN.8.17,HE-CS-0400,HE-CS-0400: FS,"ML1035-B26, HE-CS-1550, ML1209-B27, ML1034-B25, CAB-4420, CCV-52-KM-1120","ML1035-B26: FS, HE-CS-1550: FS, ML1209-B27: FS, ML1034-B25: FS, CAB-4420: FS, CCV-52-KM-1120: FS",2024-10-07 07:30:00,2024-10-14 17:30:00,7
HE-CS-0430,"Issued for Review - Site grading, road, drainage and fence layout",53,P2543-R01-Oct24..1.EN.8.12,"HE-TS-0010, HE-PI-0570","HE-TS-0010: FS, HE-PI-0570: FS","HE-CS-0440, HE-CS-0490","HE-CS-0440: FS, HE-CS-0490: FS",2023-12-18 00:00:00,2024-03-01 00:00:00,74
HE-CS-0440,"Review Company Comments - Site grading, road, drainage and fence layout",7,P2543-R01-Oct24..1.EN.8.12,HE-CS-0430,HE-CS-0430: FS,HE-CS-0450,HE-CS-0450: FS,2024-07-18 07:30:00,2024-07-26 17:30:00,8
HE-CS-0450,"Re-Issue for Approval - Site grading, road, drainage and fence layout",6,P2543-R01-Oct24..1.EN.8.12,HE-CS-0440,HE-CS-0440: FS,HE-CS-0460,HE-CS-0460: FS,2024-09-02 07:30:00,2024-09-09 17:30:00,7
HE-CS-0460,"Obtain Company Approval - Site grading, road, drainage and fence layout",8,P2543-R01-Oct24..1.EN.8.12,HE-CS-0450,HE-CS-0450: FS,HE-CS-0470,HE-CS-0470: FS,2024-09-10 07:30:00,2024-09-19 17:30:00,9
HE-CS-0490,Issued for Review - Civil UG layout,17,P2543-R01-Oct24..1.EN.8.11,"HE-TS-0010, HE-CS-0430","HE-TS-0010: FS, HE-CS-0430: FS","HE-CS-0500, HE-CS-1640","HE-CS-0500: FS, HE-CS-1640: SS 10",2024-03-02 00:00:00,2024-03-29 00:00:00,27
HE-CS-0500,Review Company Comments - Civil UG layout,12,P2543-R01-Oct24..1.EN.8.11,HE-CS-0490,HE-CS-0490: FS,HE-CS-0510,HE-CS-0510: FS,2024-03-30 00:00:00,2024-04-23 00:00:00,24
HE-CS-0510,Re-Issue for Approval - Civil UG layout,4,P2543-R01-Oct24..1.EN.8.11,HE-CS-0500,HE-CS-0500: FS,HE-CS-0520,HE-CS-0520: FS,2024-10-01 00:00:00,2024-10-04 17:30:00,3
HE-CS-0520,Obtain Company Approval - Civil UG layout,5,P2543-R01-Oct24..1.EN.8.11,HE-CS-0510,HE-CS-0510: FS,HE-CS-0530,HE-CS-0530: FS,2024-10-05 07:30:00,2024-10-11 17:30:00,6
HE-CS-0530,Final Issue for Design/ Construction-Civil UG layout,5,P2543-R01-Oct24..1.EN.8.11,"HE-CS-0520, HE-TS-0050","HE-CS-0520: FS, HE-TS-0050: FS","CAB-4420, C-COM-790, HE-CS-1550, ML1015-B08, ML1035-B26, ML1209-B27, ML1034-B25, C-56-PR-838-CI-1800, C-56-591-01-CI-1800, C-52-HG01-PL-CA-5220, C-52-598-06-CI-1800, C-52-598-06-CI-1810, C-52-598-05-CI-1800, C-52-598-05-CI-1810, C-52-598-04-CI-1800, C-52-5","CAB-4420: FS, C-COM-790: FS, HE-CS-1550: FS, ML1015-B08: FS, ML1035-B26: FS, ML1209-B27: FS, ML1034-B25: FS, C-56-PR-838-CI-1800: FS, C-56-591-01-CI-1800: FS, C-52-HG01-PL-CA-5220: FS, C-52-598-06-CI-1800: FS, C-52-598-06-CI-1810: FS, C-52-598-05-CI-1800:",2024-10-12 07:30:00,2024-10-18 17:30:00,6
HE-CS-1640,Issued for Review - Civil GA Drawings,143,P2543-R01-Oct24..1.EN.8.3,HE-CS-0490,HE-CS-0490: SS 10,HE-CS-1650,HE-CS-1650: FF,2024-03-01 00:00:00,2024-10-01 17:30:00,214
HE-CS-1650,Review Company Comments - Civil GA Drawings,75,P2543-R01-Oct24..1.EN.8.3,HE-CS-1640,HE-CS-1640: FF,"HE-CS-1610, HE-CS-1610","HE-CS-1610: FF, HE-CS-1610: FS",2024-06-15 00:00:00,2024-10-03 17:30:00,110
HE-CS-1610,Re-Issue for Approval - Civil GA Drawings,31,P2543-R01-Oct24..1.EN.8.3,"HE-CS-1650, HE-CS-1650","HE-CS-1650: FF, HE-CS-1650: FS","HE-CS-1620, HE-CS-1620","HE-CS-1620: FF, HE-CS-1620: FS",2024-08-23 00:00:00,2024-10-05 00:00:00,43
HE-CS-1620,Obtain Company Approval - Civil GA Drawings,6,P2543-R01-Oct24..1.EN.8.3,"HE-CS-1610, HE-CS-1610","HE-CS-1610: FF, HE-CS-1610: FS",HE-CS-1630,HE-CS-1630: FS,2024-10-07 07:30:00,2024-10-14 17:30:00,7
HE-CS-0550,Issued for Review - Calculation for Pig launcher and receiver foundations,9,P2543-R01-Oct24..1.EN.8.28,"HE-GS-0010, HE-CS-0610","HE-GS-0010: FS, HE-CS-0610: SS","HE-CS-0560, ML1199-B24","HE-CS-0560: FS, ML1199-B24: FF",2024-03-31 00:00:00,2024-04-18 00:00:00,18
HE-CS-0560,Review Company Comments - Calculation for Pig launcher and receiver foundations,4,P2543-R01-Oct24..1.EN.8.28,HE-CS-0550,HE-CS-0550: FS,HE-CS-0570,HE-CS-0570: FS,2024-04-19 00:00:00,2024-04-25 00:00:00,6
HE-CS-0570,Re-Issue for Approval - Calculation for Pig launcher and receiver foundations,11,P2543-R01-Oct24..1.EN.8.28,HE-CS-0560,HE-CS-0560: FS,HE-CS-0580,HE-CS-0580: FS,2024-09-02 07:30:00,2024-09-16 17:30:00,14
HE-CS-0580,Obtain Company Approval - Calculation for Pig launcher and receiver foundations,11,P2543-R01-Oct24..1.EN.8.28,HE-CS-0570,HE-CS-0570: FS,HE-CS-0590,HE-CS-0590: FS,2024-09-16 07:30:00,2024-09-30 17:30:00,14
HE-CS-0670,Issued for Review - Design Cal. for Typical Skid Foundations,1,P2543-R01-Oct24..1.EN.8.24,HE-GS-0010,HE-GS-0010: FS,"HE-CS-0680, HE-CS-0730, HE-CS-0910, HE-CS-0850, HE-CS-0790, HE-CS-2090","HE-CS-0680: FS, HE-CS-0730: FS, HE-CS-0910: FS, HE-CS-0850: FS, HE-CS-0790: FS, HE-CS-2090: SS 5",2024-04-30 00:00:00,2024-05-01 00:00:00,1
HE-CS-0680,Review Company Comments - Design Cal. for Typical Skid  Foundations,12,P2543-R01-Oct24..1.EN.8.24,HE-CS-0670,HE-CS-0670: FS,HE-CS-0690,HE-CS-0690: FS,2024-05-02 00:00:00,2024-05-18 00:00:00,16
HE-CS-0690,Re-Issue for Approval - Design Cal. for Typical Skid  Foundations,6,P2543-R01-Oct24..1.EN.8.24,HE-CS-0680,HE-CS-0680: FS,HE-CS-0700,HE-CS-0700: FS,2024-09-02 07:30:00,2024-09-09 17:30:00,7
HE-CS-0700,Obtain Company Approval - Design Cal. for Typical Skid  Foundations,13,P2543-R01-Oct24..1.EN.8.24,HE-CS-0690,HE-CS-0690: FS,HE-CS-0710,HE-CS-0710: FS,2024-09-10 07:30:00,2024-09-26 17:30:00,16
HE-CS-2090,Issued for Review - Design Cal. for Typical Lighting Pole Foundations,30,P2543-R01-Oct24..1.EN.8.26,HE-CS-0670,HE-CS-0670: SS 5,"HE-CS-2100, HE-CS-1990, HE-CS-0970","HE-CS-2100: FS, HE-CS-1990: FS 30, HE-CS-0970: FS",2024-02-07 00:00:00,2024-03-21 00:00:00,43
HE-CS-2100,Review Company Comments - Design Cal. for Typical Lighting Pole Foundations,8,P2543-R01-Oct24..1.EN.8.26,HE-CS-2090,HE-CS-2090: FS,HE-CS-2060,HE-CS-2060: FS,2024-03-21 07:30:00,2024-04-02 17:30:00,12
HE-CS-1990,Issued for Review - Design Cal. for Jib Crane Foundations,1,P2543-R01-Oct24..1.EN.8.18,HE-CS-2090,HE-CS-2090: FS 30,"HE-CS-2000, HE-CS-2040, HE-CS-1030","HE-CS-2000: FS, HE-CS-2040: SS 5, HE-CS-1030: FF 20",2024-04-22 00:00:00,2024-04-23 00:00:00,1
HE-CS-2000,Review Company Comments - Design Cal. for Jib Crane Foundations,10,P2543-R01-Oct24..1.EN.8.18,HE-CS-1990,HE-CS-1990: FS,HE-CS-1960,HE-CS-1960: FS,2024-04-23 00:00:00,2024-05-06 17:30:00,13
HE-CS-1960,Re-Issue for Approval - Design Cal. for Jib Crane Foundations,5,P2543-R01-Oct24..1.EN.8.18,HE-CS-2000,HE-CS-2000: FS,HE-CS-1970,HE-CS-1970: FS,2024-09-30 07:30:00,2024-10-04 17:30:00,4
HE-CS-1970,Obtain Company Approval - Design Cal. for Jib Crane Foundations,14,P2543-R01-Oct24..1.EN.8.18,HE-CS-1960,HE-CS-1960: FS,HE-CS-1980,HE-CS-1980: FS,2024-10-04 07:30:00,2024-10-23 17:30:00,19
HE-CS-2040,Issued for Review - Design Cal. for Filter Package,13,P2543-R01-Oct24..1.EN.8.19,HE-CS-1990,HE-CS-1990: SS 5,"HE-CS-2050, HE-CS-0910","HE-CS-2050: FS, HE-CS-0910: FS",2024-02-24 00:00:00,2024-03-15 00:00:00,20
HE-CS-2050,Review Company Comments - Design Cal. for Filter Package,8,P2543-R01-Oct24..1.EN.8.19,HE-CS-2040,HE-CS-2040: FS,HE-CS-2010,HE-CS-2010: FS,2024-03-16 00:00:00,2024-03-28 17:30:00,12
HE-CS-2010,Re-Issue for Approval - Design Cal. for Filter Package,6,P2543-R01-Oct24..1.EN.8.19,HE-CS-2050,HE-CS-2050: FS,HE-CS-2020,HE-CS-2020: FS,2024-09-09 07:30:00,2024-09-16 17:30:00,7
HE-CS-2020,Obtain Company Approval - Design Cal. for Filter Package,10,P2543-R01-Oct24..1.EN.8.19,HE-CS-2010,HE-CS-2010: FS,HE-CS-2030,HE-CS-2030: FS,2024-09-17 00:00:00,2024-09-30 17:30:00,13
HE-CS-0730,Issued for Review - Pressure Reduction Skid and Leak Detection Drawings,4,P2543-R01-Oct24..1.EN.8.23,"HE-CS-0670, HE-PI-0390","HE-CS-0670: FS, HE-PI-0390: FS",HE-CS-0740,HE-CS-0740: FS,2024-04-01 00:00:00,2024-04-11 00:00:00,10
HE-CS-0740,Review Company Comments - Pressure Reduction Skid and Leak Detection Drawings,11,P2543-R01-Oct24..1.EN.8.23,HE-CS-0730,HE-CS-0730: FS,HE-CS-0750,HE-CS-0750: FS,2024-09-09 07:30:00,2024-09-23 17:30:00,14
HE-CS-0750,Re-Issue for Approval - Pressure Reduction Skid and Leak Detection Drawings,5,P2543-R01-Oct24..1.EN.8.23,HE-CS-0740,HE-CS-0740: FS,HE-CS-0760,HE-CS-0760: FS,2024-09-24 07:30:00,2024-09-30 17:30:00,6
HE-CS-0760,Obtain Company Approval - Pressure Reduction Skid and Leak Detection Drawings,6,P2543-R01-Oct24..1.EN.8.23,HE-CS-0750,HE-CS-0750: FS,HE-CS-0770,HE-CS-0770: FS,2024-09-30 07:30:00,2024-10-07 17:30:00,7
HE-CS-0610,"Issued for Review - Pig launcher and Receiver Foundation Details Drg. at Habshan, HGCP & Sweihan",14,P2543-R01-Oct24..1.EN.8.27,HM-ME-0410,HM-ME-0410: FS,"HE-CS-0620, HE-CS-0550, C-4N-H5-TPL-CI-0100","HE-CS-0620: FS, HE-CS-0550: SS, C-4N-H5-TPL-CI-0100: FS",2024-03-31 00:00:00,2024-04-25 00:00:00,25
HE-CS-0620,"Review Company Comments - Pig launcher and Receiver Foundation Details Drg. at Habshan, HGCP & Sweihan",5,P2543-R01-Oct24..1.EN.8.27,HE-CS-0610,HE-CS-0610: FS,HE-CS-0630,HE-CS-0630: FS,2024-04-26 07:30:00,2024-05-02 17:30:00,6
HE-CS-0630,"Re-Issue for Approval - Pig launcher and Receiver Foundation Details Drg. at Habshan, HGCP & Sweihan",6,P2543-R01-Oct24..1.EN.8.27,"HE-CS-0620, HM-ME-0410","HE-CS-0620: FS, HM-ME-0410: SS 20",HE-CS-0640,HE-CS-0640: FS,2024-09-02 07:30:00,2024-09-09 17:30:00,7
HE-CS-0640,"Obtain Company Approval - Pig launcher and Receiver Foundation Details Drg. at Habshan, HGCP & Sweihan",5,P2543-R01-Oct24..1.EN.8.27,HE-CS-0630,HE-CS-0630: FS,HE-CS-0650,HE-CS-0650: FS,2024-09-10 07:30:00,2024-09-16 17:30:00,6
HE-CS-0790,Issued for Review - Gas metering skid foundation drawings,14,P2543-R01-Oct24..1.EN.8.25,"HE-GS-0010, HE-CS-0670, HP-ME-0010","HE-GS-0010: FS, HE-CS-0670: FS, HP-ME-0010: FS","HE-CS-1840, HE-CS-0800","HE-CS-1840: FF, HE-CS-0800: FS",2024-03-31 00:00:00,2024-04-25 00:00:00,25
HE-CS-0800,Review Company Comments - Gas metering skid foundation drawings,15,P2543-R01-Oct24..1.EN.8.25,HE-CS-0790,HE-CS-0790: FS,HE-CS-0810,HE-CS-0810: FS,2024-04-26 07:30:00,2024-05-16 17:30:00,20
HE-CS-0810,Re-Issue for Approval - Gas metering skid foundation drawings,6,P2543-R01-Oct24..1.EN.8.25,HE-CS-0800,HE-CS-0800: FS,HE-CS-0820,HE-CS-0820: FS,2024-09-02 07:30:00,2024-09-09 17:30:00,7
HE-CS-0820,Obtain Company Approval - Gas metering skid foundation drawings,13,P2543-R01-Oct24..1.EN.8.25,HE-CS-0810,HE-CS-0810: FS,HE-CS-0830,HE-CS-0830: FF 10,2024-09-10 07:30:00,2024-09-26 17:30:00,16
HE-CS-0850,Issued for Review - Solar panel foundation details,8,P2543-R01-Oct24..1.EN.8.20,"HP-ME-0530, HE-EL-0370, HE-CS-0670","HP-ME-0530: SS, HE-EL-0370: FS, HE-CS-0670: FS",HE-CS-0860,HE-CS-0860: FS,2024-06-14 00:00:00,2024-06-28 17:30:00,14
HE-CS-0860,Review Company Comments - Solar panel foundation details,6,P2543-R01-Oct24..1.EN.8.20,HE-CS-0850,HE-CS-0850: FS,HE-CS-0870,HE-CS-0870: FS,2024-06-28 07:30:00,2024-07-05 17:30:00,7
HE-CS-0870,Re-Issue for Approval - Solar panel foundation details,9,P2543-R01-Oct24..1.EN.8.20,HE-CS-0860,HE-CS-0860: FS,HE-CS-0880,HE-CS-0880: FS,2024-10-14 07:30:00,2024-10-24 17:30:00,10
HE-CS-0910,Issued for Review - Typical Spill Pit General Arrangement And RC (type) Details,5,P2543-R01-Oct24..1.EN.8.33,"HE-PI-0560, HE-CS-0670, HE-CS-2040","HE-PI-0560: FS, HE-CS-0670: FS, HE-CS-2040: FS",HE-CS-0920,HE-CS-0920: FS,2024-07-08 00:00:00,2024-07-15 17:30:00,7
HE-CS-0920,Review Company Comments - Typical Spill Pit General Arrangement And RC (type) Details,4,P2543-R01-Oct24..1.EN.8.33,HE-CS-0910,HE-CS-0910: FS,HE-CS-0930,HE-CS-0930: FS,2024-07-16 07:30:00,2024-07-19 17:30:00,3
HE-CS-0930,Re-Issue for Approval - Typical Spill Pit General Arrangement And RC (type) Details,5,P2543-R01-Oct24..1.EN.8.33,HE-CS-0920,HE-CS-0920: FS,HE-CS-0940,HE-CS-0940: FS,2024-09-16 07:30:00,2024-09-20 17:30:00,4
HE-CS-0940,Obtain Company Approval - Typical Spill Pit General Arrangement And RC (type) Details,14,P2543-R01-Oct24..1.EN.8.33,HE-CS-0930,HE-CS-0930: FS,HE-CS-0950,HE-CS-0950: FS,2024-09-23 00:00:00,2024-10-10 17:30:00,17
HE-CS-0970,Issued for Review - Lighting pole foundation details,13,P2543-R01-Oct24..1.EN.8.21,HE-CS-2090,HE-CS-2090: FS,"HE-CS-0980, HE-CS-1090","HE-CS-0980: FS, HE-CS-1090: FS",2024-02-26 00:00:00,2024-03-15 00:00:00,18
HE-CS-0980,Review Company Comments - Lighting pole foundation details,86,P2543-R01-Oct24..1.EN.8.21,HE-CS-0970,HE-CS-0970: FS,HE-CS-0990,HE-CS-0990: FS,2024-04-01 00:00:00,2024-08-09 17:30:00,130
HE-CS-1030,Issued for Review - Typical Detailed Drawing - Jib Crane Foundation,7,P2543-R01-Oct24..1.EN.8.36,"HE-PI-0490, HE-PI-0420, HE-PI-0350, HE-CS-1990","HE-PI-0490: FS, HE-PI-0420: FS, HE-PI-0350: FS, HE-CS-1990: FF 20",HE-CS-1040,HE-CS-1040: FS,2024-03-12 00:00:00,2024-03-23 00:00:00,11
HE-CS-1040,Review Company Comments - Typical Detailed Drawing - Jib Crane Foundation,12,P2543-R01-Oct24..1.EN.8.36,HE-CS-1030,HE-CS-1030: FS,HE-CS-1050,HE-CS-1050: FS,2024-03-31 00:00:00,2024-04-23 00:00:00,23
HE-CS-1050,Re-Issue for Approval - Typical Detailed Drawing - Jib Crane Foundation,6,P2543-R01-Oct24..1.EN.8.36,HE-CS-1040,HE-CS-1040: FS,HE-CS-1060,HE-CS-1060: FS,2024-06-07 00:00:00,2024-06-18 00:00:00,11
HE-CS-1060,Obtain Company Approval - Typical Detailed Drawing - Jib Crane Foundation,4,P2543-R01-Oct24..1.EN.8.36,HE-CS-1050,HE-CS-1050: FS,HE-CS-1070,HE-CS-1070: FS,2024-06-19 07:30:00,2024-06-25 17:30:00,6
HE-CS-1070,Final Issue for Design/ Construction-Typical Detailed Drawing - Jib Crane Foundation,12,P2543-R01-Oct24..1.EN.8.36,HE-CS-1060,HE-CS-1060: FS,"ML1209-B27, HE-CS-1550, ML1034-B25, CAB-4420, ML1035-B26, C-56-PL-607-CI-1400, C-56-PR-838-CI-1400, C-52-PR-839-CI-1400, C-52-PL-838-CI-1400","ML1209-B27: FS, HE-CS-1550: FS, ML1034-B25: FS, CAB-4420: FS, ML1035-B26: FS, C-56-PL-607-CI-1400: FS, C-56-PR-838-CI-1400: FS, C-52-PR-839-CI-1400: FS, C-52-PL-838-CI-1400: FS",2024-06-26 00:00:00,2024-07-12 17:30:00,16
HE-CS-1090,Issued for Review - Calculations for Pipe supports,11,P2543-R01-Oct24..1.EN.8.30,"HE-GS-0010, HE-PI-0530, HE-CS-0970","HE-GS-0010: FS, HE-PI-0530: FS, HE-CS-0970: FS","HE-CS-1100, HE-CS-1330","HE-CS-1100: FS, HE-CS-1330: FF",2024-03-31 00:00:00,2024-04-22 00:00:00,22
HE-CS-1100,Review Company Comments - Calculations for Pipe supports,10,P2543-R01-Oct24..1.EN.8.30,HE-CS-1090,HE-CS-1090: FS,HE-CS-1110,HE-CS-1110: FS,2024-07-29 07:30:00,2024-08-09 17:30:00,11
HE-CS-1110,Re-Issue for Approval - Calculations for Pipe supports,21,P2543-R01-Oct24..1.EN.8.30,HE-CS-1100,HE-CS-1100: FS,HE-CS-1120,HE-CS-1120: FF 5,2024-09-02 07:30:00,2024-09-30 17:30:00,28
HE-CS-1840,Issued for Review - Calculations for Shelter,10,P2543-R01-Oct24..1.EN.8.7,HE-CS-0790,HE-CS-0790: FF,"HE-CS-1850, HE-CS-1890, HE-CS-1270","HE-CS-1850: FS, HE-CS-1890: SS 5, HE-CS-1270: FS",2023-11-27 00:00:00,2023-12-12 00:00:00,15
HE-CS-1850,Review Company Comments - Calculations for Shelter,8,P2543-R01-Oct24..1.EN.8.7,HE-CS-1840,HE-CS-1840: FS,HE-CS-1810,HE-CS-1810: FS,2023-12-13 00:00:00,2023-12-25 00:00:00,12
HE-CS-1810,Re-Issue for Approval - Calculations for Shelter,10,P2543-R01-Oct24..1.EN.8.7,HE-CS-1850,HE-CS-1850: FS,HE-CS-1820,HE-CS-1820: FS,2023-12-29 00:00:00,2024-01-15 00:00:00,17
HE-CS-1820,Obtain Company Approval - Calculations for Shelter,128,P2543-R01-Oct24..1.EN.8.7,HE-CS-1810,HE-CS-1810: FS,HE-CS-1830,HE-CS-1830: FS,2024-01-16 00:00:00,2024-07-26 07:30:00,192
HE-CS-1890,Issued for Review - Calculations for Valve Pit,10,P2543-R01-Oct24..1.EN.8.8,HE-CS-1840,HE-CS-1840: SS 5,"HE-CS-1900, HE-CS-1940","HE-CS-1900: FS, HE-CS-1940: FS 5",2024-04-23 00:00:00,2024-05-07 00:00:00,14
HE-CS-1900,Review Company Comments - Calculations for Valve Pit,10,P2543-R01-Oct24..1.EN.8.8,HE-CS-1890,HE-CS-1890: FS,HE-CS-1860,HE-CS-1860: FS,2024-07-29 07:30:00,2024-08-09 17:30:00,11
HE-CS-1860,Re-Issue for Approval - Calculations for Valve Pit,16,P2543-R01-Oct24..1.EN.8.8,HE-CS-1900,HE-CS-1900: FS,HE-CS-1870,HE-CS-1870: FS,2024-08-12 07:30:00,2024-09-02 17:30:00,21
HE-CS-1870,Obtain Company Approval - Calculations for Valve Pit,14,P2543-R01-Oct24..1.EN.8.8,HE-CS-1860,HE-CS-1860: FS,HE-CS-1880,HE-CS-1880: FS,2024-09-03 07:30:00,2024-09-22 17:30:00,19
HE-CS-1940,Issued for Review - Calculations for Impact Wall,21,P2543-R01-Oct24..1.EN.8.10,HE-CS-1890,HE-CS-1890: FS 5,"HE-CS-1950, HE-CS-1210","HE-CS-1950: FS, HE-CS-1210: FS",2024-03-29 00:00:00,2024-05-03 00:00:00,35
HE-CS-1950,Review Company Comments - Calculations for Impact Wall,16,P2543-R01-Oct24..1.EN.8.10,HE-CS-1940,HE-CS-1940: FS,HE-CS-1910,HE-CS-1910: FS,2024-05-16 00:00:00,2024-06-07 00:00:00,22
HE-CS-1910,Re-Issue for Approval - Calculations for Impact Wall,4,P2543-R01-Oct24..1.EN.8.10,HE-CS-1950,HE-CS-1950: FS,HE-CS-1920,HE-CS-1920: FS,2024-06-08 00:00:00,2024-06-14 00:00:00,6
HE-CS-1920,Obtain Company Approval - Calculations for Impact Wall,35,P2543-R01-Oct24..1.EN.8.10,HE-CS-1910,HE-CS-1910: FS,HE-CS-1930,HE-CS-1930: FS,2024-06-21 00:00:00,2024-08-09 17:30:00,49
HE-CS-1150,Issued for Review - Valve pit foundation GA and RC (type) details,16,P2543-R01-Oct24..1.EN.8.22,"HE-PL-2450, HE-PI-0530","HE-PL-2450: FF, HE-PI-0530: FS",HE-CS-1160,HE-CS-1160: FS,2024-03-26 00:00:00,2024-04-24 00:00:00,29
HE-CS-1160,Review Company Comments - Valve pit foundation GA and RC (type) details,36,P2543-R01-Oct24..1.EN.8.22,HE-CS-1150,HE-CS-1150: FS,HE-CS-1170,HE-CS-1170: FS,2024-06-14 00:00:00,2024-08-09 00:00:00,56
HE-CS-1170,Re-Issue for Approval - Valve pit foundation GA and RC (type) details,6,P2543-R01-Oct24..1.EN.8.22,HE-CS-1160,HE-CS-1160: FS,HE-CS-1180,HE-CS-1180: FS,2024-09-02 07:30:00,2024-09-09 17:30:00,7
HE-CS-1180,Obtain Company Approval - Valve pit foundation GA and RC (type) details,9,P2543-R01-Oct24..1.EN.8.22,HE-CS-1170,HE-CS-1170: FS,HE-CS-1190,HE-CS-1190: FS,2024-09-10 07:30:00,2024-09-21 17:30:00,11
HE-CS-1210,Issued for Review - Impact Wall GA and RC (type) details,17,P2543-R01-Oct24..1.EN.8.29,HE-CS-1940,HE-CS-1940: FS,HE-CS-1220,HE-CS-1220: FS,2024-03-29 00:00:00,2024-04-28 00:00:00,30
HE-CS-1220,Review Company Comments - Impact Wall GA and RC (type) details,14,P2543-R01-Oct24..1.EN.8.29,HE-CS-1210,HE-CS-1210: FS,HE-CS-1230,HE-CS-1230: FS,2024-05-16 00:00:00,2024-06-05 00:00:00,20
HE-CS-1230,Re-Issue for Approval - Impact Wall GA and RC (type) details,2,P2543-R01-Oct24..1.EN.8.29,HE-CS-1220,HE-CS-1220: FS,HE-CS-1240,HE-CS-1240: FS,2024-06-06 00:00:00,2024-06-08 00:00:00,2
HE-CS-1240,Obtain Company Approval - Impact Wall GA and RC (type) details,6,P2543-R01-Oct24..1.EN.8.29,HE-CS-1230,HE-CS-1230: FS,HE-CS-1250,HE-CS-1250: FS,2024-06-09 00:00:00,2024-06-21 00:00:00,12
HE-CS-1270,Issued for Review - Passive cooled shelter foundation GA and details,8,P2543-R01-Oct24..1.EN.8.37,"HE-PI-0420, HE-PI-0350, HE-PI-0490, HE-CS-1840","HE-PI-0420: FS, HE-PI-0350: FS, HE-PI-0490: FS, HE-CS-1840: FS",HE-CS-1280,HE-CS-1280: FS,2023-11-30 00:00:00,2023-12-13 00:00:00,13
HE-CS-1280,Review Company Comments - Passive cooled shelter foundation GA and details,9,P2543-R01-Oct24..1.EN.8.37,HE-CS-1270,HE-CS-1270: FS,HE-CS-1290,HE-CS-1290: FS,2023-12-14 00:00:00,2023-12-27 00:00:00,13
HE-CS-1290,Re-Issue for Approval - Passive cooled shelter foundation GA and details,3,P2543-R01-Oct24..1.EN.8.37,HE-CS-1280,HE-CS-1280: FS,HE-CS-1300,HE-CS-1300: FS,2024-01-31 00:00:00,2024-02-03 00:00:00,3
HE-CS-1300,Obtain Company Approval - Passive cooled shelter foundation GA and details,10,P2543-R01-Oct24..1.EN.8.37,HE-CS-1290,HE-CS-1290: FS,HE-CS-1310,HE-CS-1310: FS,2024-07-29 07:30:00,2024-08-09 17:30:00,11
HE-CS-1330,Issued for Review - Typical Structural Steel and Foundation details for pipe support,4,P2543-R01-Oct24..1.EN.8.40,"HE-PI-1160, HE-CS-1090","HE-PI-1160: SS, HE-CS-1090: FF","HE-CS-1450, HE-CS-1340","HE-CS-1450: SS, HE-CS-1340: FS",2024-02-10 00:00:00,2024-02-16 00:00:00,6
HE-CS-1340,Review Company Comments - Typical Structural Steel and Foundation details for pipe support,9,P2543-R01-Oct24..1.EN.8.40,HE-CS-1330,HE-CS-1330: FS,HE-CS-1350,HE-CS-1350: FS,2024-03-31 00:00:00,2024-04-18 00:00:00,18
HE-CS-1350,Re-Issue for Approval - Typical Structural Steel and Foundation details for pipe support,72,P2543-R01-Oct24..1.EN.8.40,HE-CS-1340,HE-CS-1340: FS,HE-CS-1360,HE-CS-1360: FS,2024-04-19 00:00:00,2024-08-02 17:30:00,105
HE-CS-1360,Obtain Company Approval - Typical Structural Steel and Foundation details for pipe support,10,P2543-R01-Oct24..1.EN.8.40,HE-CS-1350,HE-CS-1350: FS,HE-CS-1370,HE-CS-1370: FS,2024-09-30 07:30:00,2024-10-11 17:30:00,11
HE-CS-1450,Issued for Review - Misc. supports and civil/ structural details,5,P2543-R01-Oct24..1.EN.8.41,"HE-CS-1330, HE-PI-1160","HE-CS-1330: SS, HE-PI-1160: FS",HE-CS-1460,HE-CS-1460: FS,2024-03-01 00:00:00,2024-03-08 00:00:00,7
HE-CS-1460,Review Company Comments  - Misc. supports and civil/ structural details,6,P2543-R01-Oct24..1.EN.8.41,HE-CS-1450,HE-CS-1450: FS,HE-CS-1470,HE-CS-1470: FS,2024-03-11 00:00:00,2024-03-21 00:00:00,10
HE-CS-1470,Re-Issue for Approval  - Misc. supports and civil/ structural details,25,P2543-R01-Oct24..1.EN.8.41,HE-CS-1460,HE-CS-1460: FS,HE-CS-1480,HE-CS-1480: FS,2024-03-22 00:00:00,2024-05-03 00:00:00,42
HE-CS-1480,Obtain Company Approval  - Misc. supports and civil/ structural details,6,P2543-R01-Oct24..1.EN.8.41,HE-CS-1470,HE-CS-1470: FS,HE-CS-1490,HE-CS-1490: FS,2024-09-30 07:30:00,2024-10-07 17:30:00,7
HE-CS-1510,Issued - Civil MTO 1,6,P2543-R01-Oct24..1.EN.8.42,HE-PI-0130,HE-PI-0130: FS,"HP-BK-0300, HP-BK-0260, HE-CS-1550","HP-BK-0300: FS, HP-BK-0260: FS, HE-CS-1550: FS",2024-03-29 07:30:00,2024-04-09 17:30:00,11
HE-CP-50,Issue ICR - Material Selection & Corrosion Control Philosophy,8,P2543-R01-Oct24..1.EN.15.1,HE-PR-0040,HE-PR-0040: FF 6,"HE-CP-60, HE-CP-0010, HE-CP-100","HE-CP-60: FS, HE-CP-0010: FF 3, HE-CP-100: FS",2023-08-09 00:00:00,2023-08-21 00:00:00,12
HE-CP-60,Receive Company Comments - Material Selection & Corrosion Control Philosophy,5,P2543-R01-Oct24..1.EN.15.1,HE-CP-50,HE-CP-50: FS,HE-CP-70,HE-CP-70: FS,2023-08-22 00:00:00,2023-08-29 00:00:00,7
HE-CP-70,Re-Issue for Approval - Material Selection & Corrosion Control Philosophy,5,P2543-R01-Oct24..1.EN.15.1,HE-CP-60,HE-CP-60: FS,HE-CP-80,HE-CP-80: FS,2023-09-15 00:00:00,2023-09-22 00:00:00,7
HE-CP-80,Obtain Company Approval - Material Selection & Corrosion Control Philosophy,3,P2543-R01-Oct24..1.EN.15.1,HE-CP-70,HE-CP-70: FS,HE-CP-90,HE-CP-90: FS,2023-09-23 00:00:00,2023-09-28 00:00:00,5
HE-CP-90,Final Issue for Design/ Construction-Material Selection & Corrosion Control Philosophy,5,P2543-R01-Oct24..1.EN.15.1,HE-CP-80,HE-CP-80: FS,HE-CP-0040,HE-CP-0040: FS,2023-11-15 00:00:00,2023-11-22 00:00:00,7
HE-CP-0010,Issue ICR - Material Selection Diagram,6,P2543-R01-Oct24..1.EN.15.4,"HE-DB-0010, HE-CP-50","HE-DB-0010: FS, HE-CP-50: FF 3","HE-CP-0020, HE-CP-200, HE-PI-0010, HE-PI-0200","HE-CP-0020: FS, HE-CP-200: FS, HE-PI-0010: FF 5, HE-PI-0200: FS",2023-08-12 00:00:00,2023-08-22 00:00:00,10
HE-CP-0020,Receive Company Comments - Material Selection Diagram,4,P2543-R01-Oct24..1.EN.15.4,HE-CP-0010,HE-CP-0010: FS,HE-CP-0030,HE-CP-0030: FS,2023-08-23 00:00:00,2023-08-29 00:00:00,6
HE-CP-0030,Re-Issue for Approval - Material Selection Diagram,16,P2543-R01-Oct24..1.EN.15.4,HE-CP-0020,HE-CP-0020: FS,"HE-CP-0040, HE-WS-0310","HE-CP-0040: FS, HE-WS-0310: FS",2023-09-08 00:00:00,2023-10-02 00:00:00,24
HE-CP-0040,Obtain Company Approval - Material Selection Diagram,8,P2543-R01-Oct24..1.EN.15.4,"HE-CP-0030, HE-CP-90","HE-CP-0030: FS, HE-CP-90: FS","HE-CP-230, HE-CP-0050","HE-CP-230: FS, HE-CP-0050: FS",2023-10-03 00:00:00,2023-10-13 00:00:00,10
HE-CP-0050,Final Issue for Design/ Construction-Material Selection Diagram,9,P2543-R01-Oct24..1.EN.15.4,HE-CP-0040,HE-CP-0040: FS,"HE-CP-240, CAB-4450","HE-CP-240: FS, CAB-4450: FS",2023-11-09 00:00:00,2023-11-22 00:00:00,13
HE-CP-200,Issue ICR - Material Selection Report,8,P2543-R01-Oct24..1.EN.15.5,HE-CP-0010,HE-CP-0010: FS,"HE-CP-100, HE-CP-210, HE-PI-0010, HE-PI-0010","HE-CP-100: FS, HE-CP-210: FS, HE-PI-0010: FF 5, HE-PI-0010: SS",2023-08-22 00:00:00,2023-09-01 00:00:00,10
HE-CP-210,Receive Company Comments - Material Selection Report,4,P2543-R01-Oct24..1.EN.15.5,HE-CP-200,HE-CP-200: FS,HE-CP-220,HE-CP-220: FS,2023-09-01 00:00:00,2023-09-07 00:00:00,6
HE-CP-220,Re-Issue for Approval - Material Selection Report,16,P2543-R01-Oct24..1.EN.15.5,HE-CP-210,HE-CP-210: FS,"HE-CP-230, HE-WS-0310","HE-CP-230: FS, HE-WS-0310: FS",2023-09-08 00:00:00,2023-10-02 00:00:00,24
HE-CP-230,Obtain Company Approval - Material Selection Report,8,P2543-R01-Oct24..1.EN.15.5,"HE-CP-0040, HE-CP-220","HE-CP-0040: FS, HE-CP-220: FS","HS-CN-0210, HE-CP-240","HS-CN-0210: FS 10, HE-CP-240: FS",2023-10-03 00:00:00,2023-10-13 00:00:00,10
HE-CP-240,Final Issue for Design/ Construction-Material Selection Report,7,P2543-R01-Oct24..1.EN.15.5,"HE-CP-0050, HE-CP-230","HE-CP-0050: FS, HE-CP-230: FS",HE-PI-0050,HE-PI-0050: FS,2023-11-11 00:00:00,2023-11-22 00:00:00,11
HE-CP-100,Issue ICR - Scope of Work for RBI Study,11,P2543-R01-Oct24..1.EN.15.2,"HE-CP-200, HE-CP-50","HE-CP-200: FS, HE-CP-50: FS","HE-CP-250, HE-CP-110","HE-CP-250: SS 10, HE-CP-110: FS",2023-10-10 00:00:00,2023-10-25 00:00:00,15
HE-CP-110,Receive Company Comments - Scope of Work for RBI Study,6,P2543-R01-Oct24..1.EN.15.2,HE-CP-100,HE-CP-100: FS,HE-CP-120,HE-CP-120: FS,2023-11-08 00:00:00,2023-11-16 00:00:00,8
HE-CP-120,Re-Issue for Approval - Scope of Work for RBI Study,5,P2543-R01-Oct24..1.EN.15.2,HE-CP-110,HE-CP-110: FS,HE-CP-130,HE-CP-130: FS,2023-11-17 00:00:00,2023-11-24 00:00:00,7
HE-CP-130,Obtain Company Approval - Scope of Work for RBI Study,6,P2543-R01-Oct24..1.EN.15.2,HE-CP-120,HE-CP-120: FS,HE-CP-140,HE-CP-140: FS,2023-12-29 00:00:00,2024-01-09 00:00:00,11
HE-CP-140,Final Issue for Design/ Construction-Scope of Work for RBI Study,9,P2543-R01-Oct24..1.EN.15.2,HE-CP-130,HE-CP-130: FS,"HE-CP-300, HE-CP-150","HE-CP-300: FS, HE-CP-150: FS 20",2024-01-12 00:00:00,2024-01-25 00:00:00,13
HE-CP-250,Issue ICR - Material Coating & Painting Specification,11,P2543-R01-Oct24..1.EN.15.6,HE-CP-100,HE-CP-100: SS 10,HE-CP-260,HE-CP-260: FS,2023-10-12 00:00:00,2023-10-27 00:00:00,15
HE-CP-260,Receive Company Comments - Material Coating & Painting Specification,4,P2543-R01-Oct24..1.EN.15.6,HE-CP-250,HE-CP-250: FS,HE-CP-270,HE-CP-270: FS,2023-11-09 00:00:00,2023-11-15 00:00:00,6
HE-CP-270,Re-Issue for Approval - Material Coating & Painting Specification,5,P2543-R01-Oct24..1.EN.15.6,HE-CP-260,HE-CP-260: FS,HE-CP-280,HE-CP-280: FS,2023-11-16 00:00:00,2023-11-23 00:00:00,7
HE-CP-280,Obtain Company Approval - Material Coating & Painting Specification,6,P2543-R01-Oct24..1.EN.15.6,HE-CP-270,HE-CP-270: FS,HE-CP-290,HE-CP-290: FS,2023-12-29 00:00:00,2024-01-09 00:00:00,11
HE-CP-290,Final Issue for Design/ Construction-Material Coating & Painting Specification,7,P2543-R01-Oct24..1.EN.15.6,HE-CP-280,HE-CP-280: FS,"HE-CP-340, HE-CP-150","HE-CP-340: FS, HE-CP-150: FS",2024-01-12 00:00:00,2024-01-23 00:00:00,11
HE-CP-150,Issue ICR - TBE for RBI Study,4,P2543-R01-Oct24..1.EN.15.3,"HE-CP-140, HE-CP-290","HE-CP-140: FS 20, HE-CP-290: FS","HE-CP-160, HS-GN-0490","HE-CP-160: FS, HS-GN-0490: FS",2024-01-29 00:00:00,2024-02-02 00:00:00,4
HE-CP-160,Receive Company Comments - TBE  for RBI Study,9,P2543-R01-Oct24..1.EN.15.3,HE-CP-150,HE-CP-150: FS,HE-CP-170,HE-CP-170: FS,2024-02-03 00:00:00,2024-02-16 00:00:00,13
HE-CP-170,Re-Issue for Approval - TBE  for RBI Study,9,P2543-R01-Oct24..1.EN.15.3,HE-CP-160,HE-CP-160: FS,HE-CP-180,HE-CP-180: FS,2024-02-17 00:00:00,2024-03-01 00:00:00,13
HE-CP-180,Obtain Company Approval - TBE  for RBI Study,8,P2543-R01-Oct24..1.EN.15.3,HE-CP-170,HE-CP-170: FS,HE-CP-190,HE-CP-190: FS,2024-03-02 00:00:00,2024-03-15 00:00:00,13
HE-CP-190,Final Issue for Design/ Construction-TBE  for RBI Study,3,P2543-R01-Oct24..1.EN.15.3,HE-CP-180,HE-CP-180: FS,"HE-EL-1610, HE-CP-300","HE-EL-1610: FF, HE-CP-300: FS",2024-03-16 00:00:00,2024-03-22 00:00:00,6
HE-EL-180,Issue ICR-Design Basis,11,P2543-R01-Oct24..1.EN.9.56,HE-DB-0010,HE-DB-0010: FS,"HE-EL-190, HE-EL-0670","HE-EL-190: FS, HE-EL-0670: FS 10",2023-08-08 00:00:00,2023-08-23 00:00:00,15
HE-EL-190,Receive Company Comments-Design Basis,5,P2543-R01-Oct24..1.EN.9.56,HE-EL-180,HE-EL-180: FS,HE-EL-150,HE-EL-150: FS,2023-08-24 00:00:00,2023-08-31 00:00:00,7
HE-EL-150,Re-Issue for Approval-Design Basis,11,P2543-R01-Oct24..1.EN.9.56,HE-EL-190,HE-EL-190: FS,HE-EL-170,HE-EL-170: FS,2023-09-15 00:00:00,2023-09-30 00:00:00,15
HE-EL-170,Obtain Company Approval-Design Basis,4,P2543-R01-Oct24..1.EN.9.56,HE-EL-150,HE-EL-150: FS,HE-EL-160,HE-EL-160: FS,2023-10-02 00:00:00,2023-10-06 00:00:00,4
HE-EL-160,Final Issue for Design/ Construction-Design Basis,7,P2543-R01-Oct24..1.EN.9.56,HE-EL-170,HE-EL-170: FS,"HE-EL-0130, HE-EL-0250, HE-EL-0310, HE-EL-0190, HE-EL-0730, HE-EL-1870, HE-EL-0170, CAB-4450, HE-EL-0290, HE-EL-0830, HE-EL-0770, HE-EL-0650, HE-EL-0710, HE-EL-0350, HE-EL-0230, HE-EL-1950, HE-EL-1860","HE-EL-0130: FS, HE-EL-0250: FS, HE-EL-0310: FS, HE-EL-0190: FS, HE-EL-0730: FS, HE-EL-1870: FS, HE-EL-0170: FS, CAB-4450: FS, HE-EL-0290: FS, HE-EL-0830: FS, HE-EL-0770: FS, HE-EL-0650: FS, HE-EL-0710: FS, HE-EL-0350: FS, HE-EL-0230: FS, HE-EL-1950: FS, HE",2023-11-08 00:00:00,2023-11-17 00:00:00,9
HE-EL-0070,Issue ICR-Update /New Load List,11,P2543-R01-Oct24..1.EN.9.7,HE-PI-0530,HE-PI-0530: FS,"HE-EL-0080, HE-EL-0310, HE-EL-0190, HE-EL-0130, HE-EL-0250","HE-EL-0080: FS, HE-EL-0310: FS, HE-EL-0190: FS, HE-EL-0130: FS, HE-EL-0250: FS",2023-10-02 00:00:00,2023-10-17 00:00:00,15
HE-EL-0080,Receive Company Comments-Update /New Load List,6,P2543-R01-Oct24..1.EN.9.7,HE-EL-0070,HE-EL-0070: FS,"HE-EL-0090, HE-EL-0140","HE-EL-0090: FS, HE-EL-0140: FS",2023-10-18 00:00:00,2023-10-26 00:00:00,8
HE-EL-0090,Re-Issue for Approval-Update /New Load List,7,P2543-R01-Oct24..1.EN.9.7,"HE-EL-0080, HE-PR-0140","HE-EL-0080: FS, HE-PR-0140: FS","HE-EL-0970, HE-EL-0150, HE-EL-0100","HE-EL-0970: FS, HE-EL-0150: FS, HE-EL-0100: FS",2023-11-21 00:00:00,2023-11-30 00:00:00,9
HE-EL-0100,Obtain Company Approval-Update /New Load List,10,P2543-R01-Oct24..1.EN.9.7,HE-EL-0090,HE-EL-0090: FS,HE-EL-0110,HE-EL-0110: FS,2023-12-01 00:00:00,2023-12-18 00:00:00,17
HE-EL-0110,Final Issue for Design/ Construction-Load List,55,P2543-R01-Oct24..1.EN.9.7,HE-EL-0100,HE-EL-0100: FS,"HE-EL-0230, CAB-4450, HE-EL-0170","HE-EL-0230: FS, CAB-4450: FS, HE-EL-0170: FS",2023-12-25 00:00:00,2024-03-11 00:00:00,77
HE-EL-0130,Issue ICR- Adequacy report of the Power supply requirements,3,P2543-R01-Oct24..1.EN.9.A101,"HE-EL-0070, HE-DB-0010, HE-EL-160","HE-EL-0070: FS, HE-DB-0010: FS, HE-EL-160: FS",HE-EL-0140,HE-EL-0140: FS,2024-09-27 07:30:00,2024-10-01 17:30:00,4
HE-EL-5440,Issue ICR- Power Consumption Calculation (Instrumentation),6,P2543-R01-Oct24..1.EN.9.A37,"HE-IC-0210, HE-IC-0270, HE-TL-0090, HE-IC-0190, HE-IC-0250","HE-IC-0210: FS, HE-IC-0270: FS, HE-TL-0090: FS, HE-IC-0190: SS, HE-IC-0250: SS",HE-EL-5450,HE-EL-5450: FS,2024-10-14 07:30:00,2024-10-21 17:30:00,7
HE-EL-0190,Issue ICR-Single Line Diagrams for LV Switchgear,9,P2543-R01-Oct24..1.EN.9.2,"HE-EL-0070, HE-DB-0010, HE-EL-160","HE-EL-0070: FS, HE-DB-0010: FS, HE-EL-160: FS","HE-EL-0250, HE-EL-0200, HE-EL-0430, HE-EL-0490","HE-EL-0250: FS, HE-EL-0200: FS, HE-EL-0430: FS, HE-EL-0490: FS",2024-02-26 00:00:00,2024-03-08 00:00:00,11
HE-EL-0200,Receive Company Comments-Single Line Diagrams for LV Switchgear,9,P2543-R01-Oct24..1.EN.9.2,HE-EL-0190,HE-EL-0190: FS,HE-EL-0210,HE-EL-0210: FS,2024-03-10 00:00:00,2024-03-25 00:00:00,15
HE-EL-0210,Re-Issue for Approval-Single Line Diagrams for LV Switchgear,8,P2543-R01-Oct24..1.EN.9.2,HE-EL-0200,HE-EL-0200: FS,"HE-EL-0220, HE-EL-0510","HE-EL-0220: FS, HE-EL-0510: FS",2024-03-31 00:00:00,2024-04-17 00:00:00,17
HE-EL-0220,Obtain Company Approval-Single Line Diagrams for LV Switchgear,27,P2543-R01-Oct24..1.EN.9.2,HE-EL-0210,HE-EL-0210: FS,HE-EL-0230,HE-EL-0230: FS,2024-04-18 07:30:00,2024-05-25 17:30:00,37
HE-EL-0230,Final Issue for Design/ Construction-Single Line Diagrams for LV Distribution Board,102,P2543-R01-Oct24..1.EN.9.2,"HE-EL-0110, HE-EL-0220, HE-DB-0010, HE-EL-160","HE-EL-0110: FS, HE-EL-0220: FS, HE-DB-0010: FS, HE-EL-160: FS","HE-EL-5530, ML1031-B20, CAB-4450","HE-EL-5530: FF 5, ML1031-B20: FS, CAB-4450: FS",2024-05-31 00:00:00,2024-10-25 17:30:00,147
HE-EL-0250,Issue ICR - UPS SLD,8,P2543-R01-Oct24..1.EN.9.22,"HE-EL-0190, HE-EL-0070, HE-DB-0010, HE-EL-160","HE-EL-0190: FS, HE-EL-0070: FS, HE-DB-0010: FS, HE-EL-160: FS","HE-EL-0910, HE-EL-0260","HE-EL-0910: FS, HE-EL-0260: FS",2023-10-15 00:00:00,2023-10-26 00:00:00,11
HE-EL-0260,Receive Company Comments - UPS SLD,8,P2543-R01-Oct24..1.EN.9.22,HE-EL-0250,HE-EL-0250: FS,HE-EL-0270,HE-EL-0270: FS 30,2023-11-13 00:00:00,2023-11-23 00:00:00,10
HE-EL-0270,Re-Issue for Approval - UPS SLD,8,P2543-R01-Oct24..1.EN.9.22,HE-EL-0260,HE-EL-0260: FS 30,HE-EL-0280,HE-EL-0280: FS,2024-03-30 00:00:00,2024-04-17 00:00:00,18
HE-EL-0280,Obtain Company Approval - UPS SLD,6,P2543-R01-Oct24..1.EN.9.22,HE-EL-0270,HE-EL-0270: FS,HE-EL-0290,HE-EL-0290: FS,2024-05-27 00:00:00,2024-06-04 00:00:00,8
HE-EL-0290,Final Issue for Design/ Construction-UPS SLD,101,P2543-R01-Oct24..1.EN.9.22,"HE-EL-0280, HE-DB-0010, HE-EL-160","HE-EL-0280: FS, HE-DB-0010: FS, HE-EL-160: FS","ML1030, ML1859-E31, ML1749-E20, ML1219-B29, CAB-4450, ML1031-B20, HE-EL-1610, C-56-PL-607-EI-1400, C-56-PL-607-EI-2200, C-56-PL-607-EI-1800, C-52-PR-839-EI-1400, C-52-PR-839-EI-1800, C-52-PR-839-CA-1000, C-52-PR-839-TE-1410, PRECOM-52-PR-1000, C-56-PL-607-","ML1030: FS, ML1859-E31: FS, ML1749-E20: FS, ML1219-B29: FF, CAB-4450: FS, ML1031-B20: FS, HE-EL-1610: FS, C-56-PL-607-EI-1400: FS, C-56-PL-607-EI-2200: FS, C-56-PL-607-EI-1800: FS, C-52-PR-839-EI-1400: FS, C-52-PR-839-EI-1800: FS, C-52-PR-839-CA-1000: FF,",2024-05-31 07:30:00,2024-10-25 00:00:00,146
HE-EL-0310,Issue ICR-Solar Panel System SLDs,9,P2543-R01-Oct24..1.EN.9.14,"HE-EL-0070, HE-DB-0010, HE-EL-160","HE-EL-0070: FS, HE-DB-0010: FS, HE-EL-160: FS","HE-EL-0370, HE-EL-0320, HE-EL-0430, HE-EL-0490","HE-EL-0370: FS, HE-EL-0320: FS, HE-EL-0430: FS, HE-EL-0490: FS",2024-02-26 00:00:00,2024-03-08 00:00:00,11
HE-EL-0320,Receive Company Comments-Solar Panel System SLDs,9,P2543-R01-Oct24..1.EN.9.14,HE-EL-0310,HE-EL-0310: FS,HE-EL-0330,HE-EL-0330: FS,2024-03-10 00:00:00,2024-03-25 00:00:00,15
HE-EL-0330,Re-Issue for Approval-Solar Panel System SLDs,4,P2543-R01-Oct24..1.EN.9.14,HE-EL-0320,HE-EL-0320: FS,HE-EL-0340,HE-EL-0340: FS,2024-03-31 00:00:00,2024-04-07 00:00:00,7
HE-EL-0340,Obtain Company Approval-Solar Panel System SLDs,7,P2543-R01-Oct24..1.EN.9.14,HE-EL-0330,HE-EL-0330: FS,HE-EL-0350,HE-EL-0350: FS,2024-05-27 07:30:00,2024-06-04 17:30:00,8
HE-EL-0370,Issue ICR-Solar Panel Sizing calculation,6,P2543-R01-Oct24..1.EN.9.4,HE-EL-0310,HE-EL-0310: FS,"HE-CS-0850, HE-EL-0380","HE-CS-0850: FS, HE-EL-0380: FS",2024-04-01 07:30:00,2024-04-15 17:30:00,14
HE-EL-0380,Receive Company Comments-Solar Panel Sizing calculation,22,P2543-R01-Oct24..1.EN.9.4,HE-EL-0370,HE-EL-0370: FS,HE-EL-0390,HE-EL-0390: FS,2024-04-16 07:30:00,2024-05-15 17:30:00,29
HE-EL-0390,Re-Issue for Approval-Solar Panel Sizing calculation,83,P2543-R01-Oct24..1.EN.9.4,HE-EL-0380,HE-EL-0380: FS,HE-EL-0400,HE-EL-0400: FS,2024-06-16 07:30:00,2024-10-15 17:30:00,121
HE-EL-0430,Issue ICR-Cable Sizing Calculation,18,P2543-R01-Oct24..1.EN.9.9,"HE-EL-0190, HE-EL-0310","HE-EL-0190: FS, HE-EL-0310: FS","HE-EL-2010, HE-EL-1150, HE-EL-0440, HE-EL-0550, HE-EL-1960, HE-EL-2010, HE-EL-2060, HE-EL-2110, HE-EL-2160","HE-EL-2010: FF, HE-EL-1150: FS, HE-EL-0440: FS, HE-EL-0550: SS 5, HE-EL-1960: FS, HE-EL-2010: FS, HE-EL-2060: FS, HE-EL-2110: FS, HE-EL-2160: FS",2023-11-24 00:00:00,2023-12-21 00:00:00,27
HE-EL-0440,Receive Company Comments-Cable Sizing Calculation,10,P2543-R01-Oct24..1.EN.9.9,HE-EL-0430,HE-EL-0430: FS,HE-EL-0450,HE-EL-0450: FS,2023-12-21 00:00:00,2024-01-05 00:00:00,15
HE-EL-0450,Re-Issue for Approval-Cable Sizing Calculation,5,P2543-R01-Oct24..1.EN.9.9,HE-EL-0440,HE-EL-0440: FS,"HE-EL-1170, HE-EL-0460, HE-EL-0570, HE-EL-1980, HE-EL-2030, HE-EL-2080, HE-EL-2130, HE-EL-2180","HE-EL-1170: FS, HE-EL-0460: FS, HE-EL-0570: FS, HE-EL-1980: FS, HE-EL-2030: FS, HE-EL-2080: FS, HE-EL-2130: FS, HE-EL-2180: FS",2024-01-06 00:00:00,2024-01-13 00:00:00,7
HE-EL-0460,Obtain Company Approval-Cable Sizing Calculation,4,P2543-R01-Oct24..1.EN.9.9,HE-EL-0450,HE-EL-0450: FS,HE-EL-0470,HE-EL-0470: FS,2024-01-29 00:00:00,2024-02-02 00:00:00,4
HE-EL-0490,Issue ICR- Electrical Equipment Layout,44,P2543-R01-Oct24..1.EN.9.17,"HE-WS-0090, HE-EL-0190, HE-EL-0310","HE-WS-0090: FS, HE-EL-0190: FS, HE-EL-0310: FS","HE-EL-1630, HE-EL-1690, HE-EL-0500, HE-EL-1570, HE-EL-1810, HE-EL-1750","HE-EL-1630: FS 10, HE-EL-1690: FS, HE-EL-0500: FS, HE-EL-1570: FS, HE-EL-1810: FS, HE-EL-1750: FS",2024-01-08 00:00:00,2024-03-08 00:00:00,60
HE-EL-0500,Receive Company Comments- Electrical Equipment Layout,9,P2543-R01-Oct24..1.EN.9.17,HE-EL-0490,HE-EL-0490: FS,HE-EL-0510,HE-EL-0510: FS,2024-02-26 00:00:00,2024-03-08 00:00:00,11
HE-EL-0510,Re-Issue for Approval- Electrical Equipment Layout,4,P2543-R01-Oct24..1.EN.9.17,"HE-EL-0210, HE-EL-0500","HE-EL-0210: FS, HE-EL-0500: FS","HE-EL-0520, HE-EL-1590, HE-EL-1830","HE-EL-0520: FS, HE-EL-1590: SS, HE-EL-1830: FS",2024-03-04 00:00:00,2024-03-08 00:00:00,4
HE-EL-0520,Obtain Company Approval- Electrical Equipment Layout,9,P2543-R01-Oct24..1.EN.9.17,HE-EL-0510,HE-EL-0510: FS,HE-EL-0530,HE-EL-0530: FS,2024-02-26 00:00:00,2024-03-08 00:00:00,11
HE-EL-0530,Final Issue for Design/ Construction-Electrical Equipment Layout,64,P2543-R01-Oct24..1.EN.9.17,HE-EL-0520,HE-EL-0520: FS,"ML1030, ML1859-E31, ML1749-E20, ML1179-B11, CAB-4450, HE-EL-1610, ML1014-B10, HE-CO-200, C-56-PL-607-EI-1400, C-56-PL-607-EI-2200, C-56-PL-607-EI-1800, C-56-EB2-EI-1000, C-56-PR-838-EI-1010, C-56-PR-838-EI-1400, C-56-PR-838-EI-1810, C-56-PR-838-EI-2020, C-","ML1030: FS, ML1859-E31: FS, ML1749-E20: FS, ML1179-B11: FS, CAB-4450: FS, HE-EL-1610: SS, ML1014-B10: FS, HE-CO-200: FS, C-56-PL-607-EI-1400: FS, C-56-PL-607-EI-2200: FS, C-56-PL-607-EI-1800: FS, C-56-EB2-EI-1000: FS, C-56-PR-838-EI-1010: FS, C-56-PR-838-E",2024-07-23 07:30:00,2024-10-18 17:30:00,87
HE-EL-0560,Receive Company Comments-Cable Schedule,20,P2543-R01-Oct24..1.EN.9.10,HE-EL-0550,HE-EL-0550: FS,HE-EL-0570,HE-EL-0570: FS,2024-02-27 00:00:00,2024-03-27 00:00:00,29
HE-EL-0570,Re-Issue for Approval-Cable Schedule,20,P2543-R01-Oct24..1.EN.9.10,"HE-EL-0560, HE-EL-0450","HE-EL-0560: FS, HE-EL-0450: FS",HE-EL-0580,HE-EL-0580: FS,2024-02-27 00:00:00,2024-03-27 00:00:00,29
HE-EL-0580,Obtain Company Approval-Cable Schedule,20,P2543-R01-Oct24..1.EN.9.10,HE-EL-0570,HE-EL-0570: FS,HE-EL-0590,HE-EL-0590: FS,2024-02-27 00:00:00,2024-03-27 00:00:00,29
HE-EL-0550,Issue ICR-Cable Schedule,20,P2543-R01-Oct24..1.EN.9.10,HE-EL-0430,HE-EL-0430: SS 5,"HE-EL-1570, HE-EL-0560","HE-EL-1570: FS, HE-EL-0560: FS",2024-02-27 00:00:00,2024-03-27 00:00:00,29
HE-EL-0690,Re-Issue for Approval-Data sheet for Distribution Transformer,1,P2543-R01-Oct24..1.EN.9.31.23,HE-EL-0680,HE-EL-0680: FS,"HE-EL-0700, HE-EL-1050","HE-EL-0700: FS, HE-EL-1050: FS",2023-11-15 00:00:00,2023-11-16 00:00:00,1
HE-EL-0700,Obtain Company Approval-Data sheet for Distribution Transformer,1,P2543-R01-Oct24..1.EN.9.31.23,HE-EL-0690,HE-EL-0690: FS,HE-EL-0710,HE-EL-0710: FS,2023-11-15 00:00:00,2023-11-16 00:00:00,1
HE-EL-0670,Issue ICR- Data sheet for Distribution Transformer,1,P2543-R01-Oct24..1.EN.9.31.23,HE-EL-180,HE-EL-180: FS 10,"HE-EL-1030, HE-EL-0680, HE-EL-0610","HE-EL-1030: FS 15, HE-EL-0680: FS, HE-EL-0610: SS",2023-11-15 00:00:00,2023-11-16 00:00:00,1
HE-EL-0680,Receive Company Comments-Data sheet for Distribution Transformer,1,P2543-R01-Oct24..1.EN.9.31.23,HE-EL-0670,HE-EL-0670: FS,HE-EL-0690,HE-EL-0690: FS,2023-11-15 00:00:00,2023-11-16 00:00:00,1
HE-EL-0710,Final Issue for Design/ Construction-Data sheet for Distribution Transformer,7,P2543-R01-Oct24..1.EN.9.31.23,"HE-EL-0700, HE-DB-0010, HE-EL-160","HE-EL-0700: FS, HE-DB-0010: FS, HE-EL-160: FS","ML1030, ML1859-E31, ML1749-E20, ML1219-B29, CAB-4450, HE-EL-1070, C-56-PL-607-EI-1400, C-56-PL-607-EI-2200, C-56-PL-607-EI-1800, C-52-PR-839-EI-1400, C-52-PR-839-EI-1800, C-52-PR-839-CA-1000, C-52-PR-839-TE-1410, PRECOM-52-PR-1000, C-56-PL-607-EI-2410","ML1030: FS, ML1859-E31: FS, ML1749-E20: FS, ML1219-B29: FF, CAB-4450: FS, HE-EL-1070: FS, C-56-PL-607-EI-1400: FS, C-56-PL-607-EI-2200: FS, C-56-PL-607-EI-1800: FS, C-52-PR-839-EI-1400: FS, C-52-PR-839-EI-1800: FS, C-52-PR-839-CA-1000: FF, C-52-PR-839-TE-1",2023-12-29 00:00:00,2024-01-10 00:00:00,12
HE-EL-0610,Issue ICR- Data sheet for LV Distribution board,8,P2543-R01-Oct24..1.EN.9.31.5,HE-EL-0670,HE-EL-0670: SS,"HE-EL-0970, HE-EL-0620, HE-EL-1910","HE-EL-0970: FS, HE-EL-0620: FS, HE-EL-1910: SS",2023-10-10 00:00:00,2023-10-20 00:00:00,10
HE-EL-0620,Receive Company Comments-Data sheet for LV Distribution board,5,P2543-R01-Oct24..1.EN.9.31.5,HE-EL-0610,HE-EL-0610: FS,HE-EL-0630,HE-EL-0630: FS,2023-10-20 00:00:00,2023-10-27 00:00:00,7
HE-EL-0630,Re-Issue for Approval-Data sheet for LV Distribution board,0,P2543-R01-Oct24..1.EN.9.31.5,HE-EL-0620,HE-EL-0620: FS,"HE-EL-0990, HE-EL-0640","HE-EL-0990: FS, HE-EL-0640: FS",2023-12-08 00:00:00,2023-12-08 00:00:00,1
HE-EL-0640,Obtain Company Approval-Data sheet for LV Distribution board,0,P2543-R01-Oct24..1.EN.9.31.5,HE-EL-0630,HE-EL-0630: FS,"ML1030, ML1859-E31, ML1749-E20, HE-EL-0650, C-56-PL-607-EI-1400, C-56-PL-607-EI-2200, C-56-PL-607-EI-1800, C-56-PR-838-EI-1010, C-56-PR-838-EI-1400, C-56-PR-838-EI-1810, C-56-PR-838-EI-2020, C-56-PR-838-EI-2030, C-56-591-01-EI-1600, C-52-598-06-EI-1210, C-","ML1030: FS, ML1859-E31: FS, ML1749-E20: FS, HE-EL-0650: FS, C-56-PL-607-EI-1400: FS, C-56-PL-607-EI-2200: FS, C-56-PL-607-EI-1800: FS, C-56-PR-838-EI-1010: FS, C-56-PR-838-EI-1400: FS, C-56-PR-838-EI-1810: FS, C-56-PR-838-EI-2020: FS, C-56-PR-838-EI-2030:",2023-12-08 00:00:00,2023-12-08 00:00:00,1
HE-EL-0650,Final Issue for Design/ Construction-Data sheet for LV Distribution board,25,P2543-R01-Oct24..1.EN.9.31.5,"HE-EL-0640, HE-DB-0010, HE-EL-160","HE-EL-0640: FS, HE-DB-0010: FS, HE-EL-160: FS","HE-EL-0730, ML1030, ML1859-E31, ML1749-E20, ML1219-B29, CAB-4450, HE-EL-1010, C-56-PL-607-EI-1400, C-56-PL-607-EI-2200, C-56-PL-607-EI-1800, C-52-PR-839-EI-1400, C-52-PR-839-EI-1800, C-52-PR-839-CA-1000, C-52-PR-839-TE-1410, PRECOM-52-PR-1000, C-56-PL-607-","HE-EL-0730: FS, ML1030: FS, ML1859-E31: FS, ML1749-E20: FS, ML1219-B29: FF 20, CAB-4450: FS, HE-EL-1010: FS, C-56-PL-607-EI-1400: FS, C-56-PL-607-EI-2200: FS, C-56-PL-607-EI-1800: FS, C-52-PR-839-EI-1400: FS, C-52-PR-839-EI-1800: FS, C-52-PR-839-CA-1000: F",2023-12-08 00:00:00,2024-01-14 00:00:00,37
HE-EL-0730,Issue ICR- Datasheet for Solar panel system,8,P2543-R01-Oct24..1.EN.9.31.1,"HE-EL-0650, HE-DB-0010, HE-EL-160","HE-EL-0650: FS, HE-DB-0010: FS, HE-EL-160: FS","HE-EL-1870, HE-EL-0740, HE-EL-1090","HE-EL-1870: FF 3, HE-EL-0740: FS, HE-EL-1090: FS",2023-11-15 00:00:00,2023-11-27 00:00:00,12
HE-EL-0740,Receive Company Comments- Datasheet for Solar panel system,12,P2543-R01-Oct24..1.EN.9.31.1,HE-EL-0730,HE-EL-0730: FS,HE-EL-0750,HE-EL-0750: FS,2023-11-28 00:00:00,2023-12-15 00:00:00,17
HE-EL-0750,Re-Issue for Approval- Datasheet for Solar panel system,9,P2543-R01-Oct24..1.EN.9.31.1,HE-EL-0740,HE-EL-0740: FS,"HE-EL-1090, HE-EL-0760, HE-EL-1110","HE-EL-1090: FS, HE-EL-0760: FS, HE-EL-1110: FS",2023-12-18 00:00:00,2023-12-29 00:00:00,11
HE-EL-0760,Obtain Company Approval- Datasheet for Solar panel system,4,P2543-R01-Oct24..1.EN.9.31.1,HE-EL-0750,HE-EL-0750: FS,HE-EL-0770,HE-EL-0770: FS,2023-12-29 00:00:00,2024-01-05 00:00:00,7
HE-EL-0770,Final Issue for Design/ Construction-Data Sheet for Solar Panel System,5,P2543-R01-Oct24..1.EN.9.31.1,"HE-EL-0760, HE-DB-0010, HE-EL-160","HE-EL-0760: FS, HE-DB-0010: FS, HE-EL-160: FS","CAB-4450, C-56-591-01-EI-1600, C-52-598-06-EI-1210, C-52-598-06-EI-1400, C-52-598-05-EI-1210, C-52-598-05-EI-1400, C-52-598-04-EI-1210, C-52-598-04-EI-1400, C-52-598-03-EI-1210, C-52-598-03-EI-1400, C-52-598-02-EI-1210, C-52-598-02-EI-1400, C-52-598-01-EI-","CAB-4450: FS, C-56-591-01-EI-1600: FS, C-52-598-06-EI-1210: FS, C-52-598-06-EI-1400: FS, C-52-598-05-EI-1210: FS, C-52-598-05-EI-1400: FS, C-52-598-04-EI-1210: FS, C-52-598-04-EI-1400: FS, C-52-598-03-EI-1210: FS, C-52-598-03-EI-1400: FS, C-52-598-02-EI-12",2024-09-27 07:30:00,2024-10-03 17:30:00,6
HE-EL-1910,Issue ICR-Data Sheet for HV cables,15,P2543-R01-Oct24..1.EN.9.31.3,HE-EL-0610,HE-EL-0610: SS,"HE-EL-1150, HE-EL-1920, HE-EL-1960, HE-EL-2010, HE-EL-2060, HE-EL-2110, HE-EL-2160, HE-EL-0790","HE-EL-1150: FS, HE-EL-1920: FS 15, HE-EL-1960: FS, HE-EL-2010: FS, HE-EL-2060: FS, HE-EL-2110: FS, HE-EL-2160: FS, HE-EL-0790: FS",2023-11-05 00:00:00,2023-11-27 00:00:00,22
HE-EL-1920,Receive Company Comments-Data Sheet for HV cables,1,P2543-R01-Oct24..1.EN.9.31.3,HE-EL-1910,HE-EL-1910: FS 15,HE-EL-1930,HE-EL-1930: FS,2023-11-28 00:00:00,2023-11-29 00:00:00,1
HE-EL-1930,Re-Issue for Approval-Data Sheet for HV cables,2,P2543-R01-Oct24..1.EN.9.31.3,HE-EL-1920,HE-EL-1920: FS,HE-EL-1940,HE-EL-1940: FS,2023-12-01 00:00:00,2023-12-06 00:00:00,5
HE-EL-1940,Obtain Company Approval-Data Sheet for HV cables,5,P2543-R01-Oct24..1.EN.9.31.3,HE-EL-1930,HE-EL-1930: FS,HE-EL-1950,HE-EL-1950: FS,2023-12-07 00:00:00,2023-12-14 00:00:00,7
HE-EL-1950,Final Issue for Design/ Construction-Data Sheet for HV cables,21,P2543-R01-Oct24..1.EN.9.31.3,"HE-EL-1940, HE-DB-0010, HE-EL-160","HE-EL-1940: FS, HE-DB-0010: FS, HE-EL-160: FS","CAB-4450, HE-EL-2050, HE-EL-2100, HE-EL-2150, HE-EL-2200, HE-EL-0830, C-56-PL-607-EI-2000, C-56-EB2-EI-1200, C-56-EB2-EI-1210, C-56-EB2-EI-1220, C-56-PR-838-CA-1000, C-56-PR-838-CA-1030, C-56-PR-838-EI-2000, C-56-PR-838-EI-2010, C-56-PR-838-EI-2040, C-56-5","CAB-4450: FS, HE-EL-2050: FS, HE-EL-2100: FS, HE-EL-2150: FS, HE-EL-2200: FS, HE-EL-0830: FS, C-56-PL-607-EI-2000: FS, C-56-EB2-EI-1200: FS, C-56-EB2-EI-1210: FS, C-56-EB2-EI-1220: FS, C-56-PR-838-CA-1000: FS, C-56-PR-838-CA-1030: FS, C-56-PR-838-EI-2000:",2023-12-15 00:00:00,2024-01-16 00:00:00,32
HE-EL-0790,Issue ICR-Data Sheet for LV cables,7,P2543-R01-Oct24..1.EN.9.31.6,HE-EL-1910,HE-EL-1910: FS,"HE-EL-1150, HE-EL-0800, HE-EL-1960, HE-EL-2010, HE-EL-2060, HE-EL-2110, HE-EL-2160, HE-EL-1870","HE-EL-1150: FS, HE-EL-0800: FS, HE-EL-1960: FS, HE-EL-2010: FS, HE-EL-2060: FS, HE-EL-2110: FS, HE-EL-2160: FS, HE-EL-1870: FS",2023-11-20 00:00:00,2023-11-29 00:00:00,9
HE-EL-0800,Receive Company Comments-Data Sheet for LV cables,10,P2543-R01-Oct24..1.EN.9.31.6,HE-EL-0790,HE-EL-0790: FS,HE-EL-0810,HE-EL-0810: FS,2023-11-30 00:00:00,2023-12-15 00:00:00,15
HE-EL-0810,Re-Issue for Approval-Data Sheet for LV cables,3,P2543-R01-Oct24..1.EN.9.31.6,HE-EL-0800,HE-EL-0800: FS,HE-EL-0820,HE-EL-0820: FS,2023-12-29 00:00:00,2024-01-04 00:00:00,6
HE-EL-0820,Obtain Company Approval-Data Sheet for LV cables,14,P2543-R01-Oct24..1.EN.9.31.6,HE-EL-0810,HE-EL-0810: FS,HE-EL-0830,HE-EL-0830: FS,2024-01-05 00:00:00,2024-01-25 00:00:00,20
HE-EL-0830,Final Issue for Design/ Construction-Data Sheet for LV cables,8,P2543-R01-Oct24..1.EN.9.31.6,"HE-EL-0820, HE-DB-0010, HE-EL-160, HE-EL-1950","HE-EL-0820: FS, HE-DB-0010: FS, HE-EL-160: FS, HE-EL-1950: FS","CAB-4450, C-56-PL-607-EI-2000, C-56-EB2-EI-1200, C-56-EB2-EI-1210, C-56-EB2-EI-1220, C-56-PR-838-CA-1000, C-56-PR-838-CA-1030, C-56-PR-838-EI-2000, C-56-PR-838-EI-2010, C-56-PR-838-EI-2040, C-56-591-01-EI-2000, C-56-591-01-EI-2010, C-52-598-06-EI-2000, C-5","CAB-4450: FS, C-56-PL-607-EI-2000: FS, C-56-EB2-EI-1200: FS, C-56-EB2-EI-1210: FS, C-56-EB2-EI-1220: FS, C-56-PR-838-CA-1000: FS, C-56-PR-838-CA-1030: FS, C-56-PR-838-EI-2000: FS, C-56-PR-838-EI-2010: FS, C-56-PR-838-EI-2040: FS, C-56-591-01-EI-2000: FS, C",2024-10-14 07:30:00,2024-10-23 17:30:00,9
HE-EL-1870,Issue ICR- Datasheet for AC UPS,8,P2543-R01-Oct24..1.EN.9.31.2,"HE-EL-0730, HE-DB-0010, HE-EL-160, HE-EL-0790","HE-EL-0730: FF 3, HE-DB-0010: FS, HE-EL-160: FS, HE-EL-0790: FS","HE-EL-1880, HE-EL-1090","HE-EL-1880: FS, HE-EL-1090: FS",2023-10-10 00:00:00,2023-10-20 00:00:00,10
HE-EL-1880,Receive Company Comments- Datasheet for AC UPS,5,P2543-R01-Oct24..1.EN.9.31.2,HE-EL-1870,HE-EL-1870: FS,HE-EL-1890,HE-EL-1890: FS,2023-10-20 00:00:00,2023-10-27 00:00:00,7
HE-EL-1890,Re-Issue for Approval- Datasheet for AC UPS,4,P2543-R01-Oct24..1.EN.9.31.2,HE-EL-1880,HE-EL-1880: FS,"HE-EL-1090, HE-EL-1900, HE-EL-1110","HE-EL-1090: FS, HE-EL-1900: FS, HE-EL-1110: FS",2024-01-29 00:00:00,2024-02-02 00:00:00,4
HE-EL-1900,Obtain Company Approval- Datasheet for AC UPS,4,P2543-R01-Oct24..1.EN.9.31.2,HE-EL-1890,HE-EL-1890: FS,HE-EL-1860,HE-EL-1860: FS,2024-01-29 00:00:00,2024-02-02 00:00:00,4
HE-EL-1860,Final Issue for Design/ Construction-Data Sheet for AC UPS,8,P2543-R01-Oct24..1.EN.9.31.2,"HE-EL-1900, HE-DB-0010, HE-EL-160","HE-EL-1900: FS, HE-DB-0010: FS, HE-EL-160: FS","CAB-4450, HE-EL-0950, C-56-591-01-EI-1600, C-52-598-06-EI-1210, C-52-598-06-EI-1400, C-52-598-05-EI-1210, C-52-598-05-EI-1400, C-52-598-04-EI-1210, C-52-598-04-EI-1400, C-52-598-03-EI-1210, C-52-598-03-EI-1400, C-52-598-02-EI-1210, C-52-598-02-EI-1400, C-5","CAB-4450: FS, HE-EL-0950: FS, C-56-591-01-EI-1600: FS, C-52-598-06-EI-1210: FS, C-52-598-06-EI-1400: FS, C-52-598-05-EI-1210: FS, C-52-598-05-EI-1400: FS, C-52-598-04-EI-1210: FS, C-52-598-04-EI-1400: FS, C-52-598-03-EI-1210: FS, C-52-598-03-EI-1400: FS, C",2024-02-02 00:00:00,2024-02-14 00:00:00,12
HE-EL-0910,Issue ICR-Material Requisition for UPS System,5,P2543-R01-Oct24..1.EN.9.1.18,HE-EL-0250,HE-EL-0250: FS,"HP-ME-0360, HE-EL-0920","HP-ME-0360: FS, HE-EL-0920: FS",2023-12-05 00:00:00,2023-12-12 00:00:00,7
HE-EL-0920,Receive Company Comments-Material Requisition for UPS System,11,P2543-R01-Oct24..1.EN.9.1.18,HE-EL-0910,HE-EL-0910: FS,"HP-ME-0360, HE-EL-0930","HP-ME-0360: FS, HE-EL-0930: FS",2023-12-12 00:00:00,2023-12-27 00:00:00,15
HE-EL-0930,Re-Issue for Approval-Material Requisition for UPS System,22,P2543-R01-Oct24..1.EN.9.1.18,HE-EL-0920,HE-EL-0920: FS,HE-EL-0940,HE-EL-0940: FS,2024-02-26 00:00:00,2024-03-29 00:00:00,32
HE-EL-0940,Obtain Company Approval-Material Requisition for UPS System,14,P2543-R01-Oct24..1.EN.9.1.18,HE-EL-0930,HE-EL-0930: FS,HE-EL-0950,HE-EL-0950: FS,2024-03-07 00:00:00,2024-03-29 00:00:00,22
HE-EL-0950,Final Issue for Design/ Construction-Material Requisition for UPS System,15,P2543-R01-Oct24..1.EN.9.1.18,"HE-EL-0940, HE-EL-1860","HE-EL-0940: FS, HE-EL-1860: FS","CAB-4450, HM-ME-0730, HE-EL-1370","CAB-4450: FS, HM-ME-0730: FS, HE-EL-1370: FS",2024-07-01 07:30:00,2024-07-22 17:30:00,21
HE-EL-0970,Issue ICR-Material Requisition for Distribution Boards,16,P2543-R01-Oct24..1.EN.9.1.15,"HE-EL-0090, HE-EL-0610","HE-EL-0090: FS, HE-EL-0610: FS","HE-EL-1090, HE-EL-0980, HP-ME-0410","HE-EL-1090: FS, HE-EL-0980: FS, HP-ME-0410: FS",2024-01-29 00:00:00,2024-02-20 00:00:00,22
HE-EL-0980,Receive Company Comments-Material Requisition for Distribution Boards,4,P2543-R01-Oct24..1.EN.9.1.15,HE-EL-0970,HE-EL-0970: FS,HE-EL-0990,HE-EL-0990: FS,2024-02-26 00:00:00,2024-03-01 00:00:00,4
HE-EL-0990,Re-Issue for Approval-Material Requisition for Distribution Boards,27,P2543-R01-Oct24..1.EN.9.1.15,"HE-EL-0630, HE-EL-0980","HE-EL-0630: FS, HE-EL-0980: FS",HE-EL-1000,HE-EL-1000: FS,2024-03-04 00:00:00,2024-04-18 00:00:00,45
HE-EL-1000,Obtain Company Approval-Material Requisition for Distribution Boards,5,P2543-R01-Oct24..1.EN.9.1.15,HE-EL-0990,HE-EL-0990: FS,HE-EL-1010,HE-EL-1010: FS,2024-04-19 00:00:00,2024-04-26 00:00:00,7
HE-EL-1010,Final Issue for Design/ Construction-Material Requisition for Distribution Boards,16,P2543-R01-Oct24..1.EN.9.1.15,"HE-EL-1000, HE-EL-0650","HE-EL-1000: FS, HE-EL-0650: FS","ML1030, ML1859-E31, ML1749-E20, ML1219-B29, ML1027-B17, CAB-4450, HE-EL-1430, C-56-PL-607-EI-1400, C-56-PL-607-EI-2200, C-56-PL-607-EI-1800, C-56-PR-838-EI-1010, C-56-PR-838-EI-1400, C-56-PR-838-EI-1810, C-56-PR-838-EI-2020, C-56-PR-838-EI-2030, C-56-591-0","ML1030: FS, ML1859-E31: FS, ML1749-E20: FS, ML1219-B29: FF, ML1027-B17: FS, CAB-4450: FS, HE-EL-1430: FS, C-56-PL-607-EI-1400: FS, C-56-PL-607-EI-2200: FS, C-56-PL-607-EI-1800: FS, C-56-PR-838-EI-1010: FS, C-56-PR-838-EI-1400: FS, C-56-PR-838-EI-1810: FS,",2024-04-26 00:00:00,2024-05-18 00:00:00,22
HE-EL-1030,Issue ICR-Material Requisition for Distribution Transformer,1,P2543-R01-Oct24..1.EN.9.1.25,HE-EL-0670,HE-EL-0670: FS 15,"HP-ME-0460, HE-EL-1040","HP-ME-0460: FS, HE-EL-1040: FS",2023-11-15 00:00:00,2023-11-16 00:00:00,1
HE-EL-1040,Receive Company Comments-Material Requisition for Distribution Transformer,9,P2543-R01-Oct24..1.EN.9.1.25,HE-EL-1030,HE-EL-1030: FS,HE-EL-1050,HE-EL-1050: FS,2023-11-13 00:00:00,2023-11-24 00:00:00,11
HE-EL-1050,Re-Issue for Approval-Material Requisition for Distribution Transformer,0,P2543-R01-Oct24..1.EN.9.1.25,"HE-EL-1040, HE-EL-0690","HE-EL-1040: FS, HE-EL-0690: FS",HE-EL-1060,HE-EL-1060: FS,2023-12-08 00:00:00,2023-12-08 00:00:00,1
HE-EL-1060,Obtain Company Approval-Material Requisition for Distribution Transformer,0,P2543-R01-Oct24..1.EN.9.1.25,HE-EL-1050,HE-EL-1050: FS,HE-EL-1070,HE-EL-1070: FS,2023-12-22 00:00:00,2023-12-22 00:00:00,1
HE-EL-1070,Final Issue for Design/ Construction-Material Requisition for Distribution Transformer,4,P2543-R01-Oct24..1.EN.9.1.25,"HE-EL-1060, HE-EL-0710","HE-EL-1060: FS, HE-EL-0710: FS","ML1219-B29, ML1027-B17, CAB-4450, HM-ME-0930, HE-EL-1490","ML1219-B29: FF, ML1027-B17: FS, CAB-4450: FS, HM-ME-0930: FF, HE-EL-1490: FS",2024-01-29 00:00:00,2024-02-02 00:00:00,4
HE-EL-1090,Issue ICR-Material Requisition for Solar Panels,9,P2543-R01-Oct24..1.EN.9.1.24,"HE-EL-0970, HE-EL-0730, HE-EL-0750, HE-EL-1870, HE-EL-1890","HE-EL-0970: FS, HE-EL-0730: FS, HE-EL-0750: FS, HE-EL-1870: FS, HE-EL-1890: FS","HE-EL-1960, HE-EL-1150, HE-EL-1100, HP-ME-0510","HE-EL-1960: FS, HE-EL-1150: FS, HE-EL-1100: FS, HP-ME-0510: FS",2024-01-15 00:00:00,2024-01-26 00:00:00,11
HE-EL-1100,Receive Company Comments-Material Requisition for Solar Panels,9,P2543-R01-Oct24..1.EN.9.1.24,HE-EL-1090,HE-EL-1090: FS,HE-EL-1110,HE-EL-1110: FS,2024-03-04 00:00:00,2024-03-17 00:00:00,13
HE-EL-1110,Re-Issue for Approval-Material Requisition for Solar Panels,2,P2543-R01-Oct24..1.EN.9.1.24,"HE-EL-0750, HE-EL-1100, HE-EL-1890","HE-EL-0750: FS, HE-EL-1100: FS, HE-EL-1890: FS",HE-EL-1120,HE-EL-1120: FS,2024-06-12 00:00:00,2024-06-14 00:00:00,2
HE-EL-1120,Obtain Company Approval-Material Requisition for Solar Panels,1,P2543-R01-Oct24..1.EN.9.1.24,HE-EL-1110,HE-EL-1110: FS,"HP-ME-0520, HE-EL-1130","HP-ME-0520: FF, HE-EL-1130: FS",2024-06-14 00:00:00,2024-06-20 00:00:00,6
HE-EL-1130,Final Issue for Design/ Construction-Material Requisition for Solar Panels,7,P2543-R01-Oct24..1.EN.9.1.24,HE-EL-1120,HE-EL-1120: FS,"CAB-4450, HM-ME-1030, HE-EL-1310","CAB-4450: FS, HM-ME-1030: FS, HE-EL-1310: FS",2024-06-24 00:00:00,2024-07-02 17:30:00,8
HE-EL-1150,Issue ICR-Material Requisition for Power & Control Cables,7,P2543-R01-Oct24..1.EN.9.1.20,"HE-EL-1090, HE-EL-0790, HE-EL-0430, HE-EL-1910","HE-EL-1090: FS, HE-EL-0790: FS, HE-EL-0430: FS, HE-EL-1910: FS","HP-BK-0010, HE-EL-1160","HP-BK-0010: FS, HE-EL-1160: FS",2024-05-03 00:00:00,2024-05-14 00:00:00,11
HE-EL-1160,Receive Company Comments-Material Requisition for Power & Control Cables,31,P2543-R01-Oct24..1.EN.9.1.20,HE-EL-1150,HE-EL-1150: FS,HE-EL-1170,HE-EL-1170: FS,2024-04-09 00:00:00,2024-05-27 00:00:00,48
HE-EL-1170,Re-Issue for Approval-Material Requisition for Power & Control Cables,5,P2543-R01-Oct24..1.EN.9.1.20,"HE-EL-1160, HE-EL-0450","HE-EL-1160: FS, HE-EL-0450: FS",HE-EL-1180,HE-EL-1180: FS,2024-08-01 07:30:00,2024-08-07 17:30:00,6
HE-EL-1180,Obtain Company Approval-Material Requisition for Power & Control Cables,4,P2543-R01-Oct24..1.EN.9.1.20,HE-EL-1170,HE-EL-1170: FS,HE-EL-1190,HE-EL-1190: FS,2024-08-08 07:30:00,2024-08-14 00:00:00,5
HE-EL-1190,Final Issue for Design/ Construction-Material Requisition for Power & Control Cables,8,P2543-R01-Oct24..1.EN.9.1.20,HE-EL-1180,HE-EL-1180: FS,"HM-EL-0020, CAB-4450, HE-EL-1550","HM-EL-0020: FS, CAB-4450: FS, HE-EL-1550: FS",2024-08-15 07:30:00,2024-08-26 17:30:00,11
HE-EL-1960,Issue ICR-Material Requisition for LV Switchgear,8,P2543-R01-Oct24..1.EN.9.1.1,"HE-EL-1090, HE-EL-0790, HE-EL-0430, HE-EL-1910","HE-EL-1090: FS, HE-EL-0790: FS, HE-EL-0430: FS, HE-EL-1910: FS","HE-EL-2060, HP-ME-1330, HE-EL-1970, HP-BK-0210","HE-EL-2060: FS, HP-ME-1330: FS, HE-EL-1970: FS, HP-BK-0210: FS",2024-05-10 00:00:00,2024-05-22 00:00:00,12
HE-EL-1970,Receive Company Comments-Material Requisition for LV Switchgear,2,P2543-R01-Oct24..1.EN.9.1.1,HE-EL-1960,HE-EL-1960: FS,HE-EL-1980,HE-EL-1980: FS,2024-05-29 07:30:00,2024-05-30 17:30:00,1
HE-EL-1980,Re-Issue for Approval-Material Requisition for LV Switchgear,5,P2543-R01-Oct24..1.EN.9.1.1,"HE-EL-1970, HE-EL-0450","HE-EL-1970: FS, HE-EL-0450: FS",HE-EL-1990,HE-EL-1990: FS,2024-10-01 07:30:00,2024-10-07 17:30:00,6
HE-EL-1990,Obtain Company Approval-Material Requisition for LV Switchgear,5,P2543-R01-Oct24..1.EN.9.1.1,HE-EL-1980,HE-EL-1980: FS,HE-EL-2000,HE-EL-2000: FS,2024-10-08 07:30:00,2024-10-14 17:30:00,6
HE-EL-2060,Issue ICR-Material Requisition for MOV Isolator,7,P2543-R01-Oct24..1.EN.9.1.3,"HE-EL-1960, HE-EL-0790, HE-EL-0430, HE-EL-1910","HE-EL-1960: FS, HE-EL-0790: FS, HE-EL-0430: FS, HE-EL-1910: FS","HE-EL-2110, HE-EL-2070","HE-EL-2110: FS, HE-EL-2070: FS",2024-04-16 00:00:00,2024-04-25 00:00:00,9
HE-EL-2070,Receive Company Comments-Material Requisition for MOV Isolator,9,P2543-R01-Oct24..1.EN.9.1.3,HE-EL-2060,HE-EL-2060: FS,HE-EL-2080,HE-EL-2080: FS,2024-04-26 00:00:00,2024-05-09 00:00:00,13
HE-EL-2080,Re-Issue for Approval-Material Requisition for MOV Isolator,9,P2543-R01-Oct24..1.EN.9.1.3,"HE-EL-2070, HE-EL-0450","HE-EL-2070: FS, HE-EL-0450: FS",HE-EL-2090,HE-EL-2090: FS,2024-05-10 00:00:00,2024-05-23 00:00:00,13
HE-EL-2090,Obtain Company Approval-Material Requisition for MOV Isolator,9,P2543-R01-Oct24..1.EN.9.1.3,HE-EL-2080,HE-EL-2080: FS,HE-EL-2100,HE-EL-2100: FS,2024-05-24 00:00:00,2024-06-06 00:00:00,13
HE-EL-2100,Final Issue for Design/ Construction-Material Requisition for MOV Isolator,12,P2543-R01-Oct24..1.EN.9.1.3,"HE-EL-2090, HE-EL-1950","HE-EL-2090: FS, HE-EL-1950: FS","HM-EL-0020, CAB-4450, HE-EL-2300","HM-EL-0020: FS, CAB-4450: FS, HE-EL-2300: FS",2024-06-20 07:30:00,2024-07-05 17:30:00,15
HE-EL-2110,Issue ICR-Material Requisition for Electrical Bulks,5,P2543-R01-Oct24..1.EN.9.1.4,"HE-EL-2060, HE-EL-0790, HE-EL-0430, HE-EL-1910","HE-EL-2060: FS, HE-EL-0790: FS, HE-EL-0430: FS, HE-EL-1910: FS","HE-EL-2010, HE-EL-2120","HE-EL-2010: SS, HE-EL-2120: FS",2024-05-24 00:00:00,2024-05-31 00:00:00,7
HE-EL-2120,Receive Company Comments-Material Requisition for Electrical Bulks,5,P2543-R01-Oct24..1.EN.9.1.4,HE-EL-2110,HE-EL-2110: FS,HE-EL-2130,HE-EL-2130: FS,2024-05-31 00:00:00,2024-06-07 00:00:00,7
HE-EL-2130,Re-Issue for Approval-Material Requisition for Electrical Bulks,5,P2543-R01-Oct24..1.EN.9.1.4,"HE-EL-2120, HE-EL-0450","HE-EL-2120: FS, HE-EL-0450: FS",HE-EL-2140,HE-EL-2140: FS,2024-06-07 00:00:00,2024-06-14 00:00:00,7
HE-EL-2140,Obtain Company Approval-Material Requisition for Electrical Bulks,2,P2543-R01-Oct24..1.EN.9.1.4,HE-EL-2130,HE-EL-2130: FS,HE-EL-2150,HE-EL-2150: FS,2024-06-14 00:00:00,2024-06-21 00:00:00,7
HE-EL-2150,Final Issue for Design/ Construction-Material Requisition for Electrical Bulks,6,P2543-R01-Oct24..1.EN.9.1.4,"HE-EL-2140, HE-EL-1950","HE-EL-2140: FS, HE-EL-1950: FS","HM-EL-0020, CAB-4450, HE-EL-2450","HM-EL-0020: FS, CAB-4450: FS, HE-EL-2450: FS",2024-06-28 07:30:00,2024-07-05 17:30:00,7
HE-EL-2010,Issue ICR-Material Requisition for Glanding & Termination,30,P2543-R01-Oct24..1.EN.9.1.2,"HE-EL-2110, HE-EL-0430, HE-EL-0790, HE-EL-0430, HE-EL-1910","HE-EL-2110: SS, HE-EL-0430: FF, HE-EL-0790: FS, HE-EL-0430: FS, HE-EL-1910: FS","HE-EL-2020, HP-BK-550","HE-EL-2020: FS, HP-BK-550: FS",2024-05-06 07:30:00,2024-06-17 17:30:00,42
HE-EL-2020,Receive Company Comments-Material Requisition for Glanding & Termination,7,P2543-R01-Oct24..1.EN.9.1.2,HE-EL-2010,HE-EL-2010: FS,HE-EL-2030,HE-EL-2030: FS,2024-06-18 00:00:00,2024-06-28 17:30:00,10
HE-EL-2030,Re-Issue for Approval-Material Requisition for Glanding & Termination,6,P2543-R01-Oct24..1.EN.9.1.2,"HE-EL-2020, HE-EL-0450","HE-EL-2020: FS, HE-EL-0450: FS",HE-EL-2040,HE-EL-2040: FS,2024-06-28 00:00:00,2024-07-08 17:30:00,10
HE-EL-2040,Obtain Company Approval-Material Requisition for Glanding & Termination,9,P2543-R01-Oct24..1.EN.9.1.2,HE-EL-2030,HE-EL-2030: FS,HE-EL-2050,HE-EL-2050: FS,2024-07-09 07:30:00,2024-07-19 17:30:00,10
HE-EL-2050,Final Issue for Design/ Construction-Material Requisition for Glanding & Termination,8,P2543-R01-Oct24..1.EN.9.1.2,"HE-EL-2040, HE-EL-1950","HE-EL-2040: FS, HE-EL-1950: FS","HM-EL-0020, CAB-4450, HE-EL-2400","HM-EL-0020: FS, CAB-4450: FS, HE-EL-2400: FS",2024-07-20 07:30:00,2024-07-31 17:30:00,11
HE-EL-2160,Issue ICR-Material Requisition for Modification Works,15,P2543-R01-Oct24..1.EN.9.1.5,"HE-EL-0790, HE-EL-0430, HE-EL-1910","HE-EL-0790: FS, HE-EL-0430: FS, HE-EL-1910: FS",HE-EL-2170,HE-EL-2170: FS,2024-03-01 00:00:00,2024-03-24 00:00:00,23
HE-EL-2170,Receive Company Comments-Material Requisition for Modification Works,9,P2543-R01-Oct24..1.EN.9.1.5,HE-EL-2160,HE-EL-2160: FS,HE-EL-2180,HE-EL-2180: FS,2024-03-31 00:00:00,2024-04-18 00:00:00,18
HE-EL-2180,Re-Issue for Approval-Material Requisition for Modification Works,3,P2543-R01-Oct24..1.EN.9.1.5,"HE-EL-2170, HE-EL-0450","HE-EL-2170: FS, HE-EL-0450: FS",HE-EL-2190,HE-EL-2190: FS,2024-04-19 00:00:00,2024-04-24 00:00:00,5
HE-EL-2190,Obtain Company Approval-Material Requisition for Modification Works,9,P2543-R01-Oct24..1.EN.9.1.5,HE-EL-2180,HE-EL-2180: FS,HE-EL-2200,HE-EL-2200: FS,2024-04-24 00:00:00,2024-05-07 00:00:00,13
HE-EL-2200,Final Issue for Design/ Construction-Material Requisition for Modification Works,2,P2543-R01-Oct24..1.EN.9.1.5,"HE-EL-2190, HE-EL-1950","HE-EL-2190: FS, HE-EL-1950: FS","HM-EL-0020, CAB-4450, HE-EL-2350","HM-EL-0020: FS, CAB-4450: FS, HE-EL-2350: FS",2024-06-13 00:00:00,2024-06-20 00:00:00,7
HE-EL-1270,Issue ICR-TBE for Solar Panels,46,P2543-R01-Oct24..1.EN.9.6.8,HP-ME-0510,HP-ME-0510: FS,"HE-EL-1280, HP-ME-0520","HE-EL-1280: FS, HP-ME-0520: SS",2024-02-29 00:00:00,2024-05-13 00:00:00,74
HE-EL-1280,Receive Company Comments-TBE for Solar Panels,5,P2543-R01-Oct24..1.EN.9.6.8,HE-EL-1270,HE-EL-1270: FS,HE-EL-1290,HE-EL-1290: FS,2024-06-05 00:00:00,2024-06-12 00:00:00,7
HE-EL-1290,Re-Issue for Approval-TBE for Solar Panels,10,P2543-R01-Oct24..1.EN.9.6.8,HE-EL-1280,HE-EL-1280: FS,HE-EL-1300,HE-EL-1300: FS,2024-09-02 07:30:00,2024-09-13 17:30:00,11
HE-EL-1300,Obtain Company Approval-TBE for Solar Panels,10,P2543-R01-Oct24..1.EN.9.6.8,HE-EL-1290,HE-EL-1290: FS,HE-EL-1310,HE-EL-1310: FS,2024-09-16 07:30:00,2024-09-27 17:30:00,11
HE-EL-1310,Final Issue for Design/ Construction-TBE for Solar Panels,5,P2543-R01-Oct24..1.EN.9.6.8,"HE-EL-1300, HE-EL-1130","HE-EL-1300: FS, HE-EL-1130: FS",CAB-4450,CAB-4450: FS,2024-09-27 07:30:00,2024-10-03 17:30:00,6
HE-EL-1330,Issue ICR-TBE for UPS System,63,P2543-R01-Oct24..1.EN.9.6.27,HP-ME-0360,HP-ME-0360: FS,"HE-EL-1340, HP-ME-0370","HE-EL-1340: FS, HP-ME-0370: SS",2023-12-15 00:00:00,2024-03-15 00:00:00,91
HE-EL-1340,Receive Company Comments-TBE for UPS System,4,P2543-R01-Oct24..1.EN.9.6.27,HE-EL-1330,HE-EL-1330: FS,HE-EL-1350,HE-EL-1350: FS,2024-03-19 00:00:00,2024-03-26 00:00:00,7
HE-EL-1350,Re-Issue for Approval-TBE for UPS System,21,P2543-R01-Oct24..1.EN.9.6.27,HE-EL-1340,HE-EL-1340: FS,HE-EL-1360,HE-EL-1360: FS,2024-03-24 00:00:00,2024-04-30 00:00:00,37
HE-EL-1360,Obtain Company Approval-TBE for UPS System,11,P2543-R01-Oct24..1.EN.9.6.27,HE-EL-1350,HE-EL-1350: FS,"HE-EL-1370, HP-ME-0370","HE-EL-1370: FS, HP-ME-0370: FF",2024-05-01 00:00:00,2024-05-16 00:00:00,15
HE-EL-1370,Final Issue for Design/ Construction-TBE for UPS System,5,P2543-R01-Oct24..1.EN.9.6.27,"HE-EL-1360, HE-EL-0950","HE-EL-1360: FS, HE-EL-0950: FS",CAB-4450,CAB-4450: FS,2024-08-26 07:30:00,2024-08-30 17:30:00,4
HE-EL-1390,Issue ICR-TBE for Distribution Boards,11,P2543-R01-Oct24..1.EN.9.6.28,"HP-ME-0410, HP-ME-0410","HP-ME-0410: FS, HP-ME-0410: FF","HE-EL-1400, HP-ME-0420","HE-EL-1400: FS, HP-ME-0420: SS",2024-05-15 00:00:00,2024-05-29 17:30:00,14
HE-EL-1400,Receive Company Comments-TBE for Distribution Boards,11,P2543-R01-Oct24..1.EN.9.6.28,HE-EL-1390,HE-EL-1390: FS,HE-EL-1410,HE-EL-1410: FS,2024-05-30 07:30:00,2024-06-13 17:30:00,14
HE-EL-1410,Re-Issue for Approval-TBE for Distribution Boards,8,P2543-R01-Oct24..1.EN.9.6.28,HE-EL-1400,HE-EL-1400: FS,HE-EL-1420,HE-EL-1420: FS,2024-06-14 07:30:00,2024-06-28 17:30:00,14
HE-EL-1420,Obtain Company Approval-TBE for Distribution Boards,16,P2543-R01-Oct24..1.EN.9.6.28,HE-EL-1410,HE-EL-1410: FS,"HE-EL-1430, HP-ME-0420","HE-EL-1430: FS, HP-ME-0420: FF",2024-07-01 07:30:00,2024-07-23 17:30:00,22
HE-EL-1430,Final Issue for Design/ Construction-TBE for Distribution Boards,5,P2543-R01-Oct24..1.EN.9.6.28,"HE-EL-1420, HE-EL-1010","HE-EL-1420: FS, HE-EL-1010: FS","HE-EL-1550, CAB-4450","HE-EL-1550: FS, CAB-4450: FS",2024-10-01 07:30:00,2024-10-07 17:30:00,6
HE-EL-1450,Issue ICR-TBE for Distribution Transformer,18,P2543-R01-Oct24..1.EN.9.6.30,HP-ME-0460,HP-ME-0460: FS,"HE-EL-1460, HP-ME-0470","HE-EL-1460: FS, HP-ME-0470: SS",2023-12-05 00:00:00,2023-12-29 00:00:00,24
HE-EL-1460,Receive Company Comments-TBE for Distribution Transformer,11,P2543-R01-Oct24..1.EN.9.6.30,HE-EL-1450,HE-EL-1450: FS,HE-EL-1470,HE-EL-1470: FS,2023-12-29 00:00:00,2024-01-16 00:00:00,18
HE-EL-1470,Re-Issue for Approval-TBE for Distribution Transformer,32,P2543-R01-Oct24..1.EN.9.6.30,HE-EL-1460,HE-EL-1460: FS,HE-EL-1480,HE-EL-1480: FS,2024-01-17 07:30:00,2024-02-29 17:30:00,43
HE-EL-1480,Obtain Company Approval-TBE for Distribution Transformer,9,P2543-R01-Oct24..1.EN.9.6.30,HE-EL-1470,HE-EL-1470: FS,HE-EL-1490,HE-EL-1490: FS,2024-03-01 07:30:00,2024-03-14 17:30:00,13
HE-EL-1490,Final Issue for Design/ Construction-TBE for Distribution Transformer,9,P2543-R01-Oct24..1.EN.9.6.30,"HE-EL-1480, HE-EL-1070","HE-EL-1480: FS, HE-EL-1070: FS",CAB-4450,CAB-4450: FS,2024-03-15 07:30:00,2024-03-28 17:30:00,13
HE-EL-1510,Issue ICR-TBE for Power & Control Cables,3,P2543-R01-Oct24..1.EN.9.6.26,HP-BK-0010,HP-BK-0010: FS,"HE-EL-1520, HP-BK-0120","HE-EL-1520: FS, HP-BK-0120: SS",2024-06-01 07:30:00,2024-06-05 17:30:00,4
HE-EL-1520,Receive Company Comments-TBE for Power & Control Cables,3,P2543-R01-Oct24..1.EN.9.6.26,HE-EL-1510,HE-EL-1510: FS,HE-EL-1530,HE-EL-1530: FS,2024-06-05 07:30:00,2024-06-08 17:30:00,3
HE-EL-1530,Re-Issue for Approval-TBE for Power & Control Cables,67,P2543-R01-Oct24..1.EN.9.6.26,HE-EL-1520,HE-EL-1520: FS,HE-EL-1540,HE-EL-1540: FS,2024-06-09 07:30:00,2024-09-16 17:30:00,99
HE-EL-1540,Obtain Company Approval-TBE for Power & Control Cables,5,P2543-R01-Oct24..1.EN.9.6.26,HE-EL-1530,HE-EL-1530: FS,HE-EL-1550,HE-EL-1550: FS,2024-10-01 07:30:00,2024-10-07 17:30:00,6
HE-EL-1550,Final Issue for Design/ Construction-TBE for Power & Control Cables,5,P2543-R01-Oct24..1.EN.9.6.26,"HE-EL-1430, HE-EL-1540, HE-EL-1190","HE-EL-1430: FS, HE-EL-1540: FS, HE-EL-1190: FS","C-DBV6-EI-2000, C-MAQTA-EI-2000, C-541CR-EI-1000, CAB-4450","C-DBV6-EI-2000: FS, C-MAQTA-EI-2000: FS, C-541CR-EI-1000: FS, CAB-4450: FS",2024-10-08 07:30:00,2024-10-14 17:30:00,6
HE-EL-2210,Issue ICR-TBE for LV Switchgear,88,P2543-R01-Oct24..1.EN.9.6.1,HP-ME-1330,HP-ME-1330: FS,"HP-ME-1350, HE-EL-2220, HP-BK-0220","HP-ME-1350: FS, HE-EL-2220: FS, HP-BK-0220: SS",2024-05-24 00:00:00,2024-10-01 00:00:00,130
HE-EL-2220,Receive Company Comments-TBE for LV Switchgear,5,P2543-R01-Oct24..1.EN.9.6.1,HE-EL-2210,HE-EL-2210: FS,"HE-EL-2230, HP-ME-1350","HE-EL-2230: FS, HP-ME-1350: FF",2024-10-11 00:00:00,2024-10-18 00:00:00,7
HE-EL-2260,Issue ICR-TBE for MOV Isolator,16,P2543-R01-Oct24..1.EN.9.6.2,HP-BK-0010,HP-BK-0010: FS,HE-EL-2270,HE-EL-2270: FS,2024-05-24 00:00:00,2024-06-17 00:00:00,24
HE-EL-2270,Receive Company Comments-TBE for MOV Isolator,8,P2543-R01-Oct24..1.EN.9.6.2,HE-EL-2260,HE-EL-2260: FS,HE-EL-2280,HE-EL-2280: FS,2024-06-18 07:30:00,2024-07-01 17:30:00,13
HE-EL-2280,Re-Issue for Approval-TBE for MOV Isolator,9,P2543-R01-Oct24..1.EN.9.6.2,HE-EL-2270,HE-EL-2270: FS,HE-EL-2290,HE-EL-2290: FS,2024-07-02 07:30:00,2024-07-15 17:30:00,13
HE-EL-2290,Obtain Company Approval-TBE for MOV Isolator,10,P2543-R01-Oct24..1.EN.9.6.2,HE-EL-2280,HE-EL-2280: FS,HE-EL-2300,HE-EL-2300: FS,2024-07-16 07:30:00,2024-07-29 17:30:00,13
HE-EL-2300,Final Issue for Design/ Construction-TBE for MOV Isolator,8,P2543-R01-Oct24..1.EN.9.6.2,"HE-EL-2290, HE-EL-2100","HE-EL-2290: FS, HE-EL-2100: FS",CAB-4450,CAB-4450: FS,2024-09-02 07:30:00,2024-09-11 17:30:00,9
HE-EL-2410,Issue ICR-TBE for Electrical Bulks,25,P2543-R01-Oct24..1.EN.9.6.4,HP-BK-0010,HP-BK-0010: FS,"HE-EL-2420, HP-BK-0170","HE-EL-2420: FS, HP-BK-0170: SS",2024-05-09 00:00:00,2024-06-13 00:00:00,35
HE-EL-2420,Receive Company Comments-TBE for Electrical Bulks,8,P2543-R01-Oct24..1.EN.9.6.4,HE-EL-2410,HE-EL-2410: FS,HE-EL-2430,HE-EL-2430: FS,2024-06-14 07:30:00,2024-06-29 17:30:00,15
HE-EL-2430,Re-Issue for Approval-TBE for Electrical Bulks,9,P2543-R01-Oct24..1.EN.9.6.4,HE-EL-2420,HE-EL-2420: FS,HE-EL-2440,HE-EL-2440: FS,2024-06-30 07:30:00,2024-07-13 17:30:00,13
HE-EL-2440,Obtain Company Approval-TBE for Electrical Bulks,10,P2543-R01-Oct24..1.EN.9.6.4,HE-EL-2430,HE-EL-2430: FS,"HE-EL-2450, HP-BK-0170","HE-EL-2450: FS, HP-BK-0170: FF",2024-07-14 07:30:00,2024-07-27 17:30:00,13
HE-EL-2450,Final Issue for Design/ Construction-TBE for Electrical Bulks,5,P2543-R01-Oct24..1.EN.9.6.4,"HE-EL-2440, HE-EL-2150","HE-EL-2440: FS, HE-EL-2150: FS","CAB-4450, HP-BK-0180","CAB-4450: FS, HP-BK-0180: FS",2024-09-30 07:30:00,2024-10-04 17:30:00,4
HE-EL-2360,Issue ICR-TBE for Glanding & Termination,6,P2543-R01-Oct24..1.EN.9.6.5,"HP-BK-0010, HP-BK-550","HP-BK-0010: FS, HP-BK-550: FS","HE-EL-2370, HP-BK-540","HE-EL-2370: FS, HP-BK-540: FF",2024-08-01 07:30:00,2024-08-08 17:30:00,7
HE-EL-2370,Receive Company Comments-TBE for Glanding & Termination,5,P2543-R01-Oct24..1.EN.9.6.5,HE-EL-2360,HE-EL-2360: FS,HE-EL-2380,HE-EL-2380: FS,2024-08-09 07:30:00,2024-08-15 17:30:00,6
HE-EL-2380,Re-Issue for Approval-TBE for Glanding & Termination,5,P2543-R01-Oct24..1.EN.9.6.5,HE-EL-2370,HE-EL-2370: FS,HE-EL-2390,HE-EL-2390: FS,2024-10-01 07:30:00,2024-10-07 17:30:00,6
HE-EL-2390,Obtain Company Approval-TBE for Glanding & Termination,5,P2543-R01-Oct24..1.EN.9.6.5,HE-EL-2380,HE-EL-2380: FS,HE-EL-2400,HE-EL-2400: FS,2024-10-08 07:30:00,2024-10-14 17:30:00,6
HE-EL-2310,Issue ICR-TBE for Modification Works,15,P2543-R01-Oct24..1.EN.9.6.3,HP-BK-0010,HP-BK-0010: FS,HE-EL-2320,HE-EL-2320: FS,2024-05-13 00:00:00,2024-06-03 00:00:00,21
HE-EL-2320,Receive Company Comments-TBE for Modification Works,5,P2543-R01-Oct24..1.EN.9.6.3,HE-EL-2310,HE-EL-2310: FS,HE-EL-2330,HE-EL-2330: FS,2024-06-03 00:00:00,2024-06-08 00:00:00,5
HE-EL-2330,Re-Issue for Approval-TBE for Modification Works,4,P2543-R01-Oct24..1.EN.9.6.3,HE-EL-2320,HE-EL-2320: FS,HE-EL-2340,HE-EL-2340: FS,2024-06-09 00:00:00,2024-06-14 00:00:00,5
HE-EL-2340,Obtain Company Approval-TBE for Modification Works,1,P2543-R01-Oct24..1.EN.9.6.3,HE-EL-2330,HE-EL-2330: FS,HE-EL-2350,HE-EL-2350: FS,2024-06-14 00:00:00,2024-06-15 00:00:00,1
HE-EL-2350,Final Issue for Design/ Construction-TBE for Modification Works,6,P2543-R01-Oct24..1.EN.9.6.3,"HE-EL-2340, HE-EL-2200","HE-EL-2340: FS, HE-EL-2200: FS",CAB-4450,CAB-4450: FS,2024-06-21 07:30:00,2024-06-28 17:30:00,7
HE-EL-1570,Issue ICR-Cable Routing Layout,4,P2543-R01-Oct24..1.EN.9.11,"HE-EL-0550, HE-PI-0560, HE-EL-0490","HE-EL-0550: FS, HE-PI-0560: FS, HE-EL-0490: FS","HE-EL-1690, HE-EL-1580","HE-EL-1690: FS, HE-EL-1580: FS",2024-03-06 00:00:00,2024-03-11 00:00:00,5
HE-EL-1580,Receive Company Comments-Cable Routing Layout,2,P2543-R01-Oct24..1.EN.9.11,HE-EL-1570,HE-EL-1570: FS,HE-EL-1590,HE-EL-1590: FS,2024-03-12 00:00:00,2024-03-15 00:00:00,3
HE-EL-1590,Re-Issue for Approval-Cable Routing Layout,49,P2543-R01-Oct24..1.EN.9.11,"HE-EL-0510, HE-EL-1580","HE-EL-0510: SS, HE-EL-1580: FS",HE-EL-1600,HE-EL-1600: FS,2024-03-16 00:00:00,2024-05-31 00:00:00,76
HE-EL-1600,Obtain Company Approval-Cable Routing Layout,4,P2543-R01-Oct24..1.EN.9.11,HE-EL-1590,HE-EL-1590: FS,HE-EL-1610,HE-EL-1610: FS,2024-05-31 00:00:00,2024-06-06 00:00:00,6
HE-EL-1640,Receive Company Comments-Earthing Layout,8,P2543-R01-Oct24..1.EN.9.12,HE-EL-1630,HE-EL-1630: FS,HE-EL-1650,HE-EL-1650: FS,2024-03-04 00:00:00,2024-03-14 00:00:00,10
HE-EL-1630,Issue ICR-Earthing Layout,3,P2543-R01-Oct24..1.EN.9.12,"HE-PI-0560, HE-EL-0490","HE-PI-0560: FS, HE-EL-0490: FS 10","HP-BK-0110, HE-EL-1640, HP-BK-0160","HP-BK-0110: FS, HE-EL-1640: FS, HP-BK-0160: FS",2024-03-13 00:00:00,2024-03-18 00:00:00,5
HE-EL-1650,Re-Issue for Approval-Earthing Layout,2,P2543-R01-Oct24..1.EN.9.12,HE-EL-1640,HE-EL-1640: FS,HE-EL-1660,HE-EL-1660: FS,2024-03-15 00:00:00,2024-03-18 00:00:00,3
HE-EL-1660,Obtain Company Approval-Earthing Layout,1,P2543-R01-Oct24..1.EN.9.12,HE-EL-1650,HE-EL-1650: FS,HE-EL-1670,HE-EL-1670: FS,2024-03-19 00:00:00,2024-03-20 00:00:00,1
HE-EL-1690,Issue ICR-Lighting Layout,9,P2543-R01-Oct24..1.EN.9.13,"HE-EL-1570, HE-EL-0490","HE-EL-1570: FS, HE-EL-0490: FS",HE-EL-1700,HE-EL-1700: FS,2024-03-14 00:00:00,2024-03-28 00:00:00,14
HE-EL-1700,Receive Company Comments-Lighting Layout,8,P2543-R01-Oct24..1.EN.9.13,HE-EL-1690,HE-EL-1690: FS,HE-EL-1710,HE-EL-1710: FS,2024-04-10 00:00:00,2024-04-24 00:00:00,14
HE-EL-1710,Re-Issue for Approval-Lighting Layout,7,P2543-R01-Oct24..1.EN.9.13,HE-EL-1700,HE-EL-1700: FS,HE-EL-1720,HE-EL-1720: FS,2024-06-17 07:30:00,2024-06-30 17:30:00,13
HE-EL-1720,Obtain Company Approval-Lighting Layout,10,P2543-R01-Oct24..1.EN.9.13,HE-EL-1710,HE-EL-1710: FS,HE-EL-1730,HE-EL-1730: FS,2024-07-01 07:30:00,2024-07-15 17:30:00,14
HE-EL-1750,Issue ICR- Electrical Installation Drawings,42,P2543-R01-Oct24..1.EN.9.19,HE-EL-0490,HE-EL-0490: FS,HE-EL-1760,HE-EL-1760: FS,2024-02-14 00:00:00,2024-04-22 00:00:00,68
HE-EL-1760,Receive Company Comments- Electrical Installation Drawings,16,P2543-R01-Oct24..1.EN.9.19,HE-EL-1750,HE-EL-1750: FS,HE-EL-1770,HE-EL-1770: FS,2024-05-06 07:30:00,2024-05-27 17:30:00,21
HE-EL-1770,Re-Issue for Approval- Electrical Installation Drawings,14,P2543-R01-Oct24..1.EN.9.19,HE-EL-1760,HE-EL-1760: FS,HE-EL-1780,HE-EL-1780: FS,2024-05-28 00:00:00,2024-06-14 17:30:00,17
HE-EL-1780,Obtain Company Approval- Electrical Installation Drawings,7,P2543-R01-Oct24..1.EN.9.19,HE-EL-1770,HE-EL-1770: FS,HE-EL-1790,HE-EL-1790: FS,2024-06-17 07:30:00,2024-06-28 17:30:00,11
HE-EL-1810,Electrical 1st MTO,10,P2543-R01-Oct24..1.EN.9.16,HE-EL-0490,HE-EL-0490: FS,"HP-BK-0420, HE-EL-1830","HP-BK-0420: FS, HE-EL-1830: FS",2024-08-02 07:30:00,2024-08-15 17:30:00,13
HE-IC-620,Issue ICR- I&C Design Basis,16,P2543-R01-Oct24..1.EN.6.3,"HE-DB-0010, ML1002","HE-DB-0010: FS 5, ML1002: SS","CAB-4460, HE-IC-1190, HE-IC-1150, HP-ME-0860, HE-ME-0070, HE-IC-580, HE-ME-0130, HE-ME-480, HE-IC-0010, HE-IC-0070, HE-IC-0250, HS-GN-0310, HE-TL-0550, HE-TL-0190, HE-TL-0510, HE-TL-0570, HE-TL-0230, CAB-4470, ML1033-B22","CAB-4460: FS, HE-IC-1190: FS, HE-IC-1150: FS, HP-ME-0860: FS, HE-ME-0070: SS, HE-IC-580: FS, HE-ME-0130: SS, HE-ME-480: SS, HE-IC-0010: FS, HE-IC-0070: FS, HE-IC-0250: FS, HS-GN-0310: SS, HE-TL-0550: SS, HE-TL-0190: FS, HE-TL-0510: SS, HE-TL-0570: SS, HE-T",2023-08-14 00:00:00,2023-09-05 00:00:00,22
HE-IC-580,Receive Company Comments- I&C Design Basis,8,P2543-R01-Oct24..1.EN.6.3,HE-IC-620,HE-IC-620: FS,HE-IC-590,HE-IC-590: FS,2023-09-06 00:00:00,2023-09-16 00:00:00,10
HE-IC-590,Re-Issue for Approval- I&C Design Basis,10,P2543-R01-Oct24..1.EN.6.3,HE-IC-580,HE-IC-580: FS,HE-IC-600,HE-IC-600: FS,2023-09-17 00:00:00,2023-09-30 00:00:00,13
HE-IC-600,Obtain Company Approval- I&C Design Basis,5,P2543-R01-Oct24..1.EN.6.3,HE-IC-590,HE-IC-590: FS,HE-IC-610,HE-IC-610: FS,2023-10-02 00:00:00,2023-10-09 00:00:00,7
HE-IC-610,Final Issue for Design/ Construction- I&C Design Basis,9,P2543-R01-Oct24..1.EN.6.3,HE-IC-600,HE-IC-600: FS,"HE-ME-0110, HE-ME-0170, CAB-4430, HE-PR-0470, HE-ME-520, HE-IC-0050","HE-ME-0110: FS, HE-ME-0170: FS, CAB-4430: FS, HE-PR-0470: FS, HE-ME-520: FS, HE-IC-0050: FS",2023-11-09 00:00:00,2023-11-22 00:00:00,13
HE-IC-0010,Issue ICR- Addendum to DGs,12,P2543-R01-Oct24..1.EN.6.A91,"HE-DB-0010, HE-IC-620","HE-DB-0010: FS, HE-IC-620: FS","ML1030, ML1859-E31, ML1749-E20, HE-IC-1450, C-COM-790, C-COM-790, HE-IC-0020, HE-IC-1510, CAB-4460, HE-IC-1330, HE-IC-2940, C-56-PL-607-EI-1400, C-56-PL-607-EI-2200, C-56-PL-607-EI-1800, C-56-EB2-EI-1000, C-56-PR-838-EI-1010, C-56-PR-838-EI-1400, C-56-PR-8","ML1030: SS, ML1859-E31: SS, ML1749-E20: SS, HE-IC-1450: SS 10, C-COM-790: FS, C-COM-790: FF, HE-IC-0020: FS, HE-IC-1510: SS 10, CAB-4460: FS, HE-IC-1330: SS 10, HE-IC-2940: FS, C-56-PL-607-EI-1400: SS 10, C-56-PL-607-EI-2200: SS 10, C-56-PL-607-EI-1800: SS",2023-09-06 00:00:00,2023-09-22 00:00:00,16
HE-IC-0020,Receive Company Comments- Addendum to DGs,8,P2543-R01-Oct24..1.EN.6.A91,HE-IC-0010,HE-IC-0010: FS,HE-IC-0030,HE-IC-0030: FS,2023-09-23 00:00:00,2023-10-05 00:00:00,12
HE-IC-0030,Re-Issue for Approval- Addendum to DGs,11,P2543-R01-Oct24..1.EN.6.A91,HE-IC-0020,HE-IC-0020: FS,"HE-IC-0040, HE-IC-1390","HE-IC-0040: FS, HE-IC-1390: FS",2023-10-06 00:00:00,2023-10-23 00:00:00,17
HE-IC-0040,Obtain Company Approval- Addendum to DGs,5,P2543-R01-Oct24..1.EN.6.A91,HE-IC-0030,HE-IC-0030: FS,HE-IC-0050,HE-IC-0050: FS,2023-11-14 00:00:00,2023-11-21 00:00:00,7
HE-IC-0050,Final Issue for Design/ Construction-Addendum to DGs,9,P2543-R01-Oct24..1.EN.6.A91,"HE-IC-0040, HE-IC-610","HE-IC-0040: FS, HE-IC-610: FS","HE-IC-1490, HE-IC-1370, HE-IC-1550, HE-IC-1190, HE-IC-1430, HE-IC-1130, HE-IC-1250, HE-IC-1070, CAB-4460, HE-IC-1790, HE-IC-0110, HE-IC-0230, HE-IC-0290, HE-IC-1170","HE-IC-1490: FS, HE-IC-1370: FS, HE-IC-1550: FS, HE-IC-1190: FF, HE-IC-1430: FS, HE-IC-1130: FF, HE-IC-1250: FF, HE-IC-1070: FF, CAB-4460: FS, HE-IC-1790: FS, HE-IC-0110: FS, HE-IC-0230: FS, HE-IC-0290: FS, HE-IC-1170: FS",2023-11-22 00:00:00,2023-12-06 00:00:00,14
HE-IC-2940,Issue ICR- Addendum to DGs,13,P2543-R01-Oct24..1.EN.6.A911,HE-IC-0010,HE-IC-0010: FS,HE-IC-2950,HE-IC-2950: FS,2024-01-29 07:30:00,2024-02-14 17:30:00,16
HE-IC-2950,Receive Company Comments- Addendum to DGs,10,P2543-R01-Oct24..1.EN.6.A911,HE-IC-2940,HE-IC-2940: FS,HE-IC-2960,HE-IC-2960: FS,2024-02-15 00:00:00,2024-02-28 00:00:00,13
HE-IC-2960,Re-Issue for Approval- Addendum to DGs,2,P2543-R01-Oct24..1.EN.6.A911,HE-IC-2950,HE-IC-2950: FS,HE-IC-2970,HE-IC-2970: FS,2024-02-29 00:00:00,2024-03-04 00:00:00,4
HE-IC-2970,Obtain Company Approval- Addendum to DGs,9,P2543-R01-Oct24..1.EN.6.A911,HE-IC-2960,HE-IC-2960: FS,HE-IC-2980,HE-IC-2980: FS,2024-03-05 00:00:00,2024-03-18 00:00:00,13
HE-IC-2980,Final Issue for Design/ Construction-Addendum to DGs,4,P2543-R01-Oct24..1.EN.6.A911,HE-IC-2970,HE-IC-2970: FS,HE-IC-2750,HE-IC-2750: FS,2024-03-19 00:00:00,2024-03-25 00:00:00,6
HE-IC-3340,Issue ICR- Addendum to DGs - INSTRUMENT & THERMOCOUPLE CABLES (DGS 1511-036),9,P2543-R01-Oct24..1.EN.6.A9111,HE-IC-3240,HE-IC-3240: FS 7,"HE-IC-3300, HE-IC-3350","HE-IC-3300: FS, HE-IC-3350: FS",2024-04-29 07:30:00,2024-05-09 17:30:00,10
HE-IC-3350,Receive Company Comments- Addendum to DGs - INSTRUMENT & THERMOCOUPLE CABLES (DGS 1511-036),9,P2543-R01-Oct24..1.EN.6.A9111,HE-IC-3340,HE-IC-3340: FS,HE-IC-3360,HE-IC-3360: FS,2024-05-12 07:30:00,2024-05-23 17:30:00,11
HE-IC-3360,Re-Issue for Approval- Addendum to DGs - INSTRUMENT & THERMOCOUPLE CABLES (DGS 1511-036),4,P2543-R01-Oct24..1.EN.6.A9111,HE-IC-3350,HE-IC-3350: FS,HE-IC-3370,HE-IC-3370: FS,2024-05-26 07:30:00,2024-05-30 17:30:00,4
HE-IC-3370,Obtain Company Approval- Addendum to DGs - INSTRUMENT & THERMOCOUPLE CABLES (DGS 1511-036),9,P2543-R01-Oct24..1.EN.6.A9111,HE-IC-3360,HE-IC-3360: FS,HE-IC-3380,HE-IC-3380: FS,2024-06-02 07:30:00,2024-06-13 17:30:00,11
HE-IC-3380,Final Issue for Design/ Construction-Addendum to DGs - INSTRUMENT & THERMOCOUPLE CABLES (DGS 1511-036),1,P2543-R01-Oct24..1.EN.6.A9111,HE-IC-3370,HE-IC-3370: FS,"HE-IC-0790, HE-IC-0490","HE-IC-0790: FS, HE-IC-0490: FS",2024-06-16 07:30:00,2024-06-20 17:30:00,4
HE-IC-0070,Issue ICR- Specifications for PRS (Pressure Reduction System),12,P2543-R01-Oct24..1.EN.6.A111,"HE-PR-0110, HE-IC-620, ML1002","HE-PR-0110: FF 2, HE-IC-620: FS, ML1002: SS","HE-IC-1210, HE-IC-0080","HE-IC-1210: SS, HE-IC-0080: FS",2023-09-06 00:00:00,2023-09-22 00:00:00,16
HE-IC-0080,Receive Company Comments- Specifications for PRS (Pressure Reduction System),8,P2543-R01-Oct24..1.EN.6.A111,HE-IC-0070,HE-IC-0070: FS,HE-IC-0090,HE-IC-0090: FS,2023-09-23 00:00:00,2023-10-05 00:00:00,12
HE-IC-0090,Re-Issue for Approval- Specifications for PRS (Pressure Reduction System),15,P2543-R01-Oct24..1.EN.6.A111,HE-IC-0080,HE-IC-0080: FS,HE-IC-0100,HE-IC-0100: FS,2023-10-06 00:00:00,2023-10-27 00:00:00,21
HE-IC-0100,Obtain Company Approval- Specifications for PRS (Pressure Reduction System),7,P2543-R01-Oct24..1.EN.6.A111,HE-IC-0090,HE-IC-0090: FS,HE-IC-0110,HE-IC-0110: FS,2023-11-10 00:00:00,2023-11-21 00:00:00,11
HE-IC-0110,Final Issue for Design/ Construction-Specifications for PRS (Pressure Reduction System),12,P2543-R01-Oct24..1.EN.6.A111,"HE-IC-0100, HE-IC-0050","HE-IC-0100: FS, HE-IC-0050: FS","CAB-4460, HE-PR-0410, HE-IC-1240, C-56-HC01-PL-TE-8200, C-56-HC01-PL-TE-8400, C-56-PR-838-TE-1000, C-52-HG01-PL-TE-8200, C-52-598-04-TE-1000, C-52-PR-839-ME-2000, C-52-PR-839-ME-2010, C-52-PR-839-TE-1410, C-52-PL-838-TE-1000, C-4N-HG-TPR-TE-1410, C-MAQTA-T","CAB-4460: FS, HE-PR-0410: FS, HE-IC-1240: FS, C-56-HC01-PL-TE-8200: FS, C-56-HC01-PL-TE-8400: FS, C-56-PR-838-TE-1000: FS, C-52-HG01-PL-TE-8200: FS, C-52-598-04-TE-1000: FS, C-52-PR-839-ME-2000: FS, C-52-PR-839-ME-2010: FS, C-52-PR-839-TE-1410: FS, C-52-PL",2023-11-22 00:00:00,2023-12-11 00:00:00,19
HE-IC-0190,Issue ICR- Specification for RTU,4,P2543-R01-Oct24..1.EN.6.A20,HE-PR-0110,HE-PR-0110: FS 5,"HE-IC-3240, HS-GN-0430, HE-IC-0790, HE-IC-0200, CAB-4460, HE-TL-0070, HE-IC-2530, HE-IC-1990, HE-IC-0970, HE-IC-0910, HE-IC-2550, HE-IC-0750, HE-IC-0930, HE-IC-0990, HE-IC-1010, HE-IC-0950, HE-IC-2570, HE-IC-0770, HE-IC-2880, HE-TL-0370, HE-TL-0790, HE-TL-","HE-IC-3240: FS, HS-GN-0430: FS, HE-IC-0790: FS, HE-IC-0200: FS, CAB-4460: FS, HE-TL-0070: SS, HE-IC-2530: FS, HE-IC-1990: FS, HE-IC-0970: FS, HE-IC-0910: FS, HE-IC-2550: FS, HE-IC-0750: FS, HE-IC-0930: FS, HE-IC-0990: FS, HE-IC-1010: FS, HE-IC-0950: FS, HE",2023-11-17 00:00:00,2023-11-23 00:00:00,6
HE-IC-0200,Receive Company Comments- Specification for RTU,6,P2543-R01-Oct24..1.EN.6.A20,HE-IC-0190,HE-IC-0190: FS,HE-IC-0210,HE-IC-0210: FS,2023-11-24 00:00:00,2023-12-05 00:00:00,11
HE-IC-0210,Re-Issue for Approval- Specification for RTU,6,P2543-R01-Oct24..1.EN.6.A20,HE-IC-0200,HE-IC-0200: FS,"HE-EL-5440, HE-TL-0450, HE-IC-0810, HE-IC-0220, HE-IC-2550, HE-IC-0750, HE-IC-0930, HE-IC-0990, HE-IC-1010, HE-IC-0950, HE-IC-2570, HE-IC-0770, CAB-4460, C-56-PL-607-EI-2000, C-56-EB2-EI-1200, C-56-EB2-EI-1210, C-56-EB2-EI-1220, C-56-PR-838-CA-1000, C-56-P","HE-EL-5440: FS, HE-TL-0450: FS, HE-IC-0810: FS, HE-IC-0220: FS, HE-IC-2550: FS, HE-IC-0750: FS, HE-IC-0930: FS, HE-IC-0990: FS, HE-IC-1010: FS, HE-IC-0950: FS, HE-IC-2570: FS, HE-IC-0770: FS, CAB-4460: FS, C-56-PL-607-EI-2000: FS, C-56-EB2-EI-1200: FS, C-5",2023-12-29 00:00:00,2024-01-09 00:00:00,11
HE-IC-0220,Obtain Company Approval- Specification for RTU,3,P2543-R01-Oct24..1.EN.6.A20,HE-IC-0210,HE-IC-0210: FS,HE-IC-0230,HE-IC-0230: FS,2024-01-12 00:00:00,2024-01-17 00:00:00,5
HE-IC-0230,Final Issue for Design/ Construction-Specification for RTU,10,P2543-R01-Oct24..1.EN.6.A20,"HE-IC-0220, HE-IC-0050","HE-IC-0220: FS, HE-IC-0050: FS","HE-TL-0110, CAB-4460, HS-GN-0430, HE-EL-5480, HE-IC-0830, HE-IC-1010, HE-IC-0950, HE-IC-2570, HE-IC-0770, HE-TL-0410, HE-TL-0350, HE-TL-0590, CAB-4470, HE-TL-0830, HE-TL-0470, HE-TL-0530, ML1033-B22, HE-TL-0290, HE-TL-0230, C-56-PL-607-EI-2000, C-56-EB2-EI","HE-TL-0110: FS, CAB-4460: FS, HS-GN-0430: FS, HE-EL-5480: FS, HE-IC-0830: FS, HE-IC-1010: FS, HE-IC-0950: FS, HE-IC-2570: FS, HE-IC-0770: FS, HE-TL-0410: FS, HE-TL-0350: FS, HE-TL-0590: FS, CAB-4470: FS, HE-TL-0830: FS, HE-TL-0470: FS, HE-TL-0530: FS, ML10",2024-03-31 00:00:00,2024-04-19 00:00:00,19
HE-IC-3240,Issue ICR- Specification for HYBRID PASSIVE COOLED SHELTER,15,P2543-R01-Oct24..1.EN.6.A2021,HE-IC-0190,HE-IC-0190: FS,"HE-IC-3390, HE-IC-3340, HE-IC-3250","HE-IC-3390: FS, HE-IC-3340: FS 7, HE-IC-3250: FS",2023-10-20 00:00:00,2023-11-10 00:00:00,21
HE-IC-3250,Receive Company Comments- Specification for HYBRID PASSIVE COOLED SHELTER,11,P2543-R01-Oct24..1.EN.6.A2021,HE-IC-3240,HE-IC-3240: FS,HE-IC-3260,HE-IC-3260: FS,2023-11-13 00:00:00,2023-11-28 00:00:00,15
HE-IC-3260,Re-Issue for Approval- Specification for HYBRID PASSIVE COOLED SHELTER,18,P2543-R01-Oct24..1.EN.6.A2021,HE-IC-3250,HE-IC-3250: FS,HE-IC-3270,HE-IC-3270: FS,2023-11-29 00:00:00,2023-12-26 00:00:00,27
HE-IC-3270,Obtain Company Approval- Specification for HYBRID PASSIVE COOLED SHELTER,2,P2543-R01-Oct24..1.EN.6.A2021,HE-IC-3260,HE-IC-3260: FS,HE-IC-3280,HE-IC-3280: FS,2023-12-27 00:00:00,2023-12-29 00:00:00,2
HE-IC-3280,Final Issue for Design/ Construction-Specification for HYBRID PASSIVE COOLED SHELTER,11,P2543-R01-Oct24..1.EN.6.A2021,HE-IC-3270,HE-IC-3270: FS,HE-IC-0490,HE-IC-0490: FS,2024-02-26 00:00:00,2024-03-11 00:00:00,14
HE-IC-3190,Issue ICR- Specification for HSSD,10,P2543-R01-Oct24..1.EN.6.A202,HE-IC-2730,HE-IC-2730: FS,"HE-IC-3390, HE-IC-3200","HE-IC-3390: FF, HE-IC-3200: FS",2024-01-05 00:00:00,2024-01-19 00:00:00,14
HE-IC-3200,Receive Company Comments- Specification for HSSD,4,P2543-R01-Oct24..1.EN.6.A202,HE-IC-3190,HE-IC-3190: FS,HE-IC-3210,HE-IC-3210: FS,2024-01-20 00:00:00,2024-01-26 00:00:00,6
HE-IC-3210,Re-Issue for Approval- Specification for HSSD,14,P2543-R01-Oct24..1.EN.6.A202,HE-IC-3200,HE-IC-3200: FS,HE-IC-3220,HE-IC-3220: FS,2024-01-29 00:00:00,2024-02-16 00:00:00,18
HE-IC-3220,Obtain Company Approval- Specification for HSSD,9,P2543-R01-Oct24..1.EN.6.A202,HE-IC-3210,HE-IC-3210: FS,HE-IC-3230,HE-IC-3230: FS,2024-02-26 00:00:00,2024-03-08 00:00:00,11
HE-IC-3230,Final Issue for Design/ Construction-Specification for HSSD,21,P2543-R01-Oct24..1.EN.6.A202,HE-IC-3220,HE-IC-3220: FS,"HE-IC-0530, HE-IC-0530","HE-IC-0530: FF, HE-IC-0530: FS",2024-03-11 00:00:00,2024-04-18 00:00:00,38
HE-IC-0250,Issue ICR- Specification for Leak Detection System,3,P2543-R01-Oct24..1.EN.6.A201,"HE-PR-0110, HE-IC-620","HE-PR-0110: SS, HE-IC-620: FS","CAB-4460, HE-IC-0790, HE-TL-0070, HE-IC-0260, HS-GN-0430, HE-IC-2530, HE-IC-1990, HE-IC-0970, HE-IC-0910, HE-IC-2550, HE-IC-0750, HE-IC-0930, HE-IC-0990, HE-IC-1010, HE-IC-0950, HE-IC-2570, HE-IC-0770, HE-IC-1750, HE-IC-1770, HE-IC-1250, HE-IC-1790, HE-TL-","CAB-4460: FS, HE-IC-0790: FS, HE-TL-0070: SS, HE-IC-0260: FS, HS-GN-0430: FS, HE-IC-2530: FS, HE-IC-1990: FS, HE-IC-0970: FS, HE-IC-0910: FS, HE-IC-2550: FS, HE-IC-0750: FS, HE-IC-0930: FS, HE-IC-0990: FS, HE-IC-1010: FS, HE-IC-0950: FS, HE-IC-2570: FS, HE",2023-09-27 00:00:00,2023-10-02 00:00:00,5
HE-IC-0260,Receive Company Comments- Specification for Leak Detection System,9,P2543-R01-Oct24..1.EN.6.A201,HE-IC-0250,HE-IC-0250: FS,HE-IC-0270,HE-IC-0270: FS,2023-10-03 00:00:00,2023-10-15 00:00:00,12
HE-IC-0270,Re-Issue for Approval- Specification for Leak Detection System,28,P2543-R01-Oct24..1.EN.6.A201,HE-IC-0260,HE-IC-0260: FS,"HE-IC-0280, HE-EL-5440, HE-IC-0810, HE-TL-0450, HE-IC-2550, HE-IC-0750, HE-IC-0930, HE-IC-0990, HE-IC-1010, HE-IC-0950, HE-IC-2570, HE-IC-0770, CAB-4460, C-56-PL-607-EI-2000, C-56-EB2-EI-1200, C-56-EB2-EI-1210, C-56-EB2-EI-1220, C-56-PR-838-CA-1000, C-56-P","HE-IC-0280: FS, HE-EL-5440: FS, HE-IC-0810: FS, HE-TL-0450: FS, HE-IC-2550: FS, HE-IC-0750: FS, HE-IC-0930: FS, HE-IC-0990: FS, HE-IC-1010: FS, HE-IC-0950: FS, HE-IC-2570: FS, HE-IC-0770: FS, CAB-4460: FS, C-56-PL-607-EI-2000: FS, C-56-EB2-EI-1200: FS, C-5",2023-10-17 00:00:00,2023-11-24 00:00:00,38
HE-IC-0280,Obtain Company Approval- Specification for Leak Detection System,10,P2543-R01-Oct24..1.EN.6.A201,HE-IC-0270,HE-IC-0270: FS,HE-IC-0290,HE-IC-0290: FS,2023-11-25 00:00:00,2023-12-12 00:00:00,17
HE-IC-0290,Final Issue for Design/ Construction-Specification for Leak Detection System,4,P2543-R01-Oct24..1.EN.6.A201,"HE-IC-0280, HE-IC-0050","HE-IC-0280: FS, HE-IC-0050: FS","HE-EL-5480, HE-IC-0830, HE-TL-0110, HS-GN-0430, CAB-4460, HE-IC-1010, HE-IC-0950, HE-IC-2570, HE-IC-0770, HE-IC-1790, HE-TL-0410, HE-TL-0350, HE-TL-0590, CAB-4470, HE-TL-0830, HE-TL-0470, HE-TL-0530, ML1033-B22, HE-TL-0290, HE-TL-0230, HE-IC-1750, C-56-PL-","HE-EL-5480: FS, HE-IC-0830: FS, HE-TL-0110: FS, HS-GN-0430: FS, CAB-4460: FS, HE-IC-1010: FS, HE-IC-0950: FS, HE-IC-2570: FS, HE-IC-0770: FS, HE-IC-1790: FS, HE-TL-0410: FS, HE-TL-0350: FS, HE-TL-0590: FS, CAB-4470: FS, HE-TL-0830: FS, HE-TL-0470: FS, HE-T",2024-02-26 00:00:00,2024-03-01 00:00:00,4
HE-IC-0490,Issue ICR-Instrument index -Update,8,P2543-R01-Oct24..1.EN.6.A2,"HE-IC-3380, HE-IC-3280, HE-PR-0110, HE-HS-0250","HE-IC-3380: FS, HE-IC-3280: FS, HE-PR-0110: FS, HE-HS-0250: FS 15","ML1030, ML1859-E31, ML1749-E20, HE-IC-0500, C-COM-790, HE-IC-0610, HE-IC-2530, HE-IC-0670, CAB-4460, C-COM-790, HE-IC-0550, HE-IC-2750, C-56-PL-607-EI-1400, C-56-PL-607-EI-2200, C-56-PL-607-EI-1800, C-56-EB2-EI-1000, C-56-PR-838-EI-1010, C-56-PR-838-EI-140","ML1030: FS, ML1859-E31: FS, ML1749-E20: FS, HE-IC-0500: FS, C-COM-790: FF, HE-IC-0610: FS, HE-IC-2530: FS, HE-IC-0670: FS, CAB-4460: FS, C-COM-790: FS, HE-IC-0550: FS, HE-IC-2750: FS, C-56-PL-607-EI-1400: FS, C-56-PL-607-EI-2200: FS, C-56-PL-607-EI-1800: F",2023-12-25 00:00:00,2024-01-05 00:00:00,11
HE-IC-0500,Receive Company Comments-Instrument index -Update,8,P2543-R01-Oct24..1.EN.6.A2,HE-IC-0490,HE-IC-0490: FS,HE-IC-0510,HE-IC-0510: FS,2023-12-25 00:00:00,2024-01-05 00:00:00,11
HE-IC-0510,Re-Issue for Approval-Instrument index -Update,8,P2543-R01-Oct24..1.EN.6.A2,HE-IC-0500,HE-IC-0500: FS,"HE-IC-0690, HE-TL-0450, HE-IC-2610, HE-IC-0520, HE-TL-0390, HE-IC-0570, HE-IC-0630","HE-IC-0690: FS, HE-TL-0450: FS, HE-IC-2610: FS, HE-IC-0520: FS, HE-TL-0390: FS, HE-IC-0570: FS, HE-IC-0630: FS",2023-12-25 00:00:00,2024-01-05 00:00:00,11
HE-IC-0520,Obtain Company Approval-Instrument index -Update,8,P2543-R01-Oct24..1.EN.6.A2,HE-IC-0510,HE-IC-0510: FS,"HE-IC-0530, HE-IC-0580","HE-IC-0530: FS, HE-IC-0580: FS",2023-12-25 00:00:00,2024-01-05 00:00:00,11
HE-IC-0530,Final Issue for Design/ Construction-Instrument Index,42,P2543-R01-Oct24..1.EN.6.A2,"HE-IC-3230, HE-IC-3230, HE-IC-0520","HE-IC-3230: FF, HE-IC-3230: FS, HE-IC-0520: FS","ML1030, ML1859-E31, ML1749-E20, CAB-4460, HE-IC-0590, HE-IC-2630, HE-IC-1550, HE-IC-2740, HE-IC-2590, C-56-PL-607-EI-1400, C-56-PL-607-EI-2200, C-56-PL-607-EI-1800, C-56-EB2-EI-1000, C-56-PR-838-EI-1010, C-56-PR-838-EI-1400, C-56-PR-838-EI-1810, C-56-PR-83","ML1030: FS, ML1859-E31: FS, ML1749-E20: FS, CAB-4460: FS, HE-IC-0590: FS, HE-IC-2630: FS, HE-IC-1550: FS, HE-IC-2740: FS, HE-IC-2590: FS, C-56-PL-607-EI-1400: FS, C-56-PL-607-EI-2200: FS, C-56-PL-607-EI-1800: FS, C-56-EB2-EI-1000: FS, C-56-PR-838-EI-1010:",2024-01-26 00:00:00,2024-03-27 00:00:00,61
HE-IC-0560,Receive Company Comments- I/O list -Update,10,P2543-R01-Oct24..1.EN.6.A3,HE-IC-0550,HE-IC-0550: FS,HE-IC-0570,HE-IC-0570: FS,2024-02-15 00:00:00,2024-02-29 00:00:00,14
HE-IC-0570,Re-Issue for Approval- I/O list -Update,10,P2543-R01-Oct24..1.EN.6.A3,"HE-IC-0560, HE-IC-0510, HE-PR-0110","HE-IC-0560: FS, HE-IC-0510: FS, HE-PR-0110: FS","HE-IC-0580, HE-IC-2550, HE-IC-0750, HE-IC-0930, HE-IC-0990, HE-IC-1010, HE-IC-0950, HE-IC-2570, HE-IC-0770, CAB-4460, C-56-PL-607-EI-2000, C-56-EB2-EI-1200, C-56-EB2-EI-1210, C-56-EB2-EI-1220, C-56-PR-838-CA-1000, C-56-PR-838-CA-1030, C-56-PR-838-EI-2000,","HE-IC-0580: FS, HE-IC-2550: FS, HE-IC-0750: FS, HE-IC-0930: FS, HE-IC-0990: FS, HE-IC-1010: FS, HE-IC-0950: FS, HE-IC-2570: FS, HE-IC-0770: FS, CAB-4460: FS, C-56-PL-607-EI-2000: FS, C-56-EB2-EI-1200: FS, C-56-EB2-EI-1210: FS, C-56-EB2-EI-1220: FS, C-56-PR",2024-02-15 00:00:00,2024-02-29 00:00:00,14
HE-IC-0580,Obtain Company Approval- I/O list -Update,10,P2543-R01-Oct24..1.EN.6.A3,"HE-IC-0570, HE-IC-0520","HE-IC-0570: FS, HE-IC-0520: FS","HE-IC-0590, HE-IC-2780","HE-IC-0590: FS, HE-IC-2780: FS",2024-02-15 00:00:00,2024-02-29 00:00:00,14
HE-IC-0550,Issue ICR- I/O list -Update,10,P2543-R01-Oct24..1.EN.6.A3,"HE-PR-0110, HE-IC-0490","HE-PR-0110: FS, HE-IC-0490: FS","HS-GN-0430, HE-IC-0560, HE-IC-2530, HE-IC-0730, CAB-4460, HE-IC-2880","HS-GN-0430: FS, HE-IC-0560: FS, HE-IC-2530: FS, HE-IC-0730: FS, CAB-4460: FS, HE-IC-2880: FS",2024-02-15 00:00:00,2024-02-29 00:00:00,14
HE-IC-2750,Issue ICR-F&G index -Update,4,P2543-R01-Oct24..1.EN.6.A23,"HE-HS-0270, HE-IC-0490, HE-IC-2980","HE-HS-0270: FS, HE-IC-0490: FS, HE-IC-2980: FS","HE-IC-2730, HE-IC-2760","HE-IC-2730: FS, HE-IC-2760: FS",2024-02-06 00:00:00,2024-02-12 00:00:00,6
HE-IC-2760,Receive Company Comments-F&G index -Update,3,P2543-R01-Oct24..1.EN.6.A23,HE-IC-2750,HE-IC-2750: FS,HE-IC-2770,HE-IC-2770: FS,2024-02-13 00:00:00,2024-02-16 00:00:00,3
HE-IC-2780,Obtain Company Approval-F&G index -Update,6,P2543-R01-Oct24..1.EN.6.A23,"HE-IC-2770, HE-IC-0580","HE-IC-2770: FS, HE-IC-0580: FS","HE-IC-2740, HE-IC-2710","HE-IC-2740: FS, HE-IC-2710: FS",2024-02-16 00:00:00,2024-02-26 00:00:00,10
HE-IC-2770,Re-Issue for Approval-F&G index -Update,3,P2543-R01-Oct24..1.EN.6.A23,HE-IC-2760,HE-IC-2760: FS,"HE-IC-2780, HE-IC-2700","HE-IC-2780: FS, HE-IC-2700: FS",2024-02-26 00:00:00,2024-02-29 00:00:00,3
HE-IC-2700,Re-Issue for Approval- I/O list -Update,4,P2543-R01-Oct24..1.EN.6.A31,"HE-IC-2690, HE-IC-2770","HE-IC-2690: FS, HE-IC-2770: FS",HE-IC-2710,HE-IC-2710: FS,2024-02-15 00:00:00,2024-02-21 00:00:00,6
HE-IC-2690,Receive Company Comments- I/O list -Update,9,P2543-R01-Oct24..1.EN.6.A31,HE-IC-2730,HE-IC-2730: FS,HE-IC-2700,HE-IC-2700: FS,2024-02-15 00:00:00,2024-02-28 00:00:00,13
HE-IC-2710,Obtain Company Approval- I/O list -Update,9,P2543-R01-Oct24..1.EN.6.A31,"HE-IC-2700, HE-IC-2780","HE-IC-2700: FS, HE-IC-2780: FS","HE-IC-2720, HE-IC-0690","HE-IC-2720: FS, HE-IC-0690: FS",2024-02-15 00:00:00,2024-02-28 00:00:00,13
HE-IC-2730,Issue ICR- I/O list -Update,9,P2543-R01-Oct24..1.EN.6.A31,HE-IC-2750,HE-IC-2750: FS,"HE-IC-3190, HE-IC-0610, HE-IC-0910, HE-IC-2690, HS-GN-0310","HE-IC-3190: FS, HE-IC-0610: FS, HE-IC-0910: FS, HE-IC-2690: FS, HS-GN-0310: FS",2024-02-15 00:00:00,2024-02-28 00:00:00,13
HE-IC-0610,Issue ICR - Hook-Up Diagram,5,P2543-R01-Oct24..1.EN.6.A18,"HE-IC-2730, HE-IC-0490, HE-PR-0110","HE-IC-2730: FS, HE-IC-0490: FS, HE-PR-0110: FS","HE-IC-0670, HE-IC-2790, HE-IC-0620","HE-IC-0670: FF, HE-IC-2790: FS, HE-IC-0620: FS",2024-02-05 00:00:00,2024-02-12 00:00:00,7
HE-IC-0620,Receive Company Comments - Hook-Up Diagram,4,P2543-R01-Oct24..1.EN.6.A18,HE-IC-0610,HE-IC-0610: FS,HE-IC-0630,HE-IC-0630: FS,2024-02-13 00:00:00,2024-02-19 00:00:00,6
HE-IC-0630,Re-Issue for Approval - Hook-Up Diagram,4,P2543-R01-Oct24..1.EN.6.A18,"HE-IC-1470, HE-IC-0620, HE-IC-0510, HE-PR-0110","HE-IC-1470: FS, HE-IC-0620: FS, HE-IC-0510: FS, HE-PR-0110: FS","HE-IC-2610, HE-IC-0640","HE-IC-2610: FS, HE-IC-0640: FS",2024-02-20 00:00:00,2024-02-26 00:00:00,6
HE-IC-0640,Obtain Company Approval - Hook-Up Diagram,4,P2543-R01-Oct24..1.EN.6.A18,HE-IC-0630,HE-IC-0630: FS,HE-IC-0650,HE-IC-0650: FS,2024-02-27 00:00:00,2024-03-04 00:00:00,6
HE-IC-2790,Issue ICR - interconnection Wiring Diagram,69,P2543-R01-Oct24..1.EN.6.A181,"HE-IC-0610, HS-GN-0410","HE-IC-0610: FS, HS-GN-0410: FS",HE-IC-2800,HE-IC-2800: FF 10,2024-06-25 07:30:00,2024-09-30 17:30:00,97
HE-IC-0670,Issue ICR - Typical Installation Drawings,4,P2543-R01-Oct24..1.EN.6.A35,"HE-IC-0610, HE-IC-0490, HP-ME-0730, HP-ME-0780, HE-PR-0110","HE-IC-0610: FF, HE-IC-0490: FS, HP-ME-0730: FF, HP-ME-0780: FS, HE-PR-0110: FS","HE-IC-0730, HE-IC-0680","HE-IC-0730: FF, HE-IC-0680: FS",2024-05-27 00:00:00,2024-05-31 00:00:00,4
HE-IC-0680,Receive Company Comments - Typical Installation Drawings,1,P2543-R01-Oct24..1.EN.6.A35,HE-IC-0670,HE-IC-0670: FS,HE-IC-0690,HE-IC-0690: FS,2024-05-31 00:00:00,2024-06-03 00:00:00,3
HE-IC-0700,Obtain Company Approval - Typical Installation Drawings,4,P2543-R01-Oct24..1.EN.6.A35,HE-IC-0690,HE-IC-0690: FS,HE-IC-0710,HE-IC-0710: FS,2024-06-04 00:00:00,2024-06-10 00:00:00,6
HE-IC-0690,Re-Issue for Approval - Typical Installation Drawings,3,P2543-R01-Oct24..1.EN.6.A35,"HE-IC-0510, HE-IC-0680, HE-PR-0110, HE-IC-2710","HE-IC-0510: FS, HE-IC-0680: FS, HE-PR-0110: FS, HE-IC-2710: FS","HE-IC-0700, HE-IC-2610","HE-IC-0700: FS, HE-IC-2610: FS",2024-06-11 00:00:00,2024-06-14 00:00:00,3
HE-IC-0730,Issue ICR - Loop Diagrams,78,P2543-R01-Oct24..1.EN.6.A36,"HE-IC-0670, HE-IC-0790, HE-IC-0550","HE-IC-0670: FF, HE-IC-0790: FS, HE-IC-0550: FS",HE-IC-0740,HE-IC-0740: FF 10,2024-06-07 07:30:00,2024-09-30 17:30:00,115
HE-IC-0790,Issue ICR- Instrument Cable Block Diagram,19,P2543-R01-Oct24..1.EN.6.A22,"HE-IC-3380, HE-IC-0190, HE-IC-0250","HE-IC-3380: FS, HE-IC-0190: FS, HE-IC-0250: FS","HE-IC-0800, HE-IC-2530, HE-IC-0730, HE-IC-0970, HE-IC-0910, HE-IC-2550, HE-IC-0750, HE-IC-0930, HE-IC-0990, HE-IC-1010, HE-IC-0950, HE-IC-2570, HE-IC-0770, CAB-4460, HE-IC-0910, C-56-PL-607-EI-2000, C-56-EB2-EI-1200, C-56-EB2-EI-1210, C-56-EB2-EI-1220, C-5","HE-IC-0800: FS, HE-IC-2530: FS, HE-IC-0730: FS, HE-IC-0970: FS, HE-IC-0910: FS, HE-IC-2550: FS, HE-IC-0750: FS, HE-IC-0930: FS, HE-IC-0990: FS, HE-IC-1010: FS, HE-IC-0950: FS, HE-IC-2570: FS, HE-IC-0770: FS, CAB-4460: FS, HE-IC-0910: FF, C-56-PL-607-EI-200",2023-12-29 00:00:00,2024-01-26 00:00:00,28
HE-IC-0800,Receive Company Comments- Instrument Cable Block Diagram,9,P2543-R01-Oct24..1.EN.6.A22,HE-IC-0790,HE-IC-0790: FS,"HE-IC-0810, HE-IC-0910, HE-IC-0970","HE-IC-0810: FS, HE-IC-0910: FS, HE-IC-0970: FS",2024-01-29 00:00:00,2024-02-09 00:00:00,11
HE-IC-0810,Re-Issue for Approval- Instrument Cable Block Diagram,16,P2543-R01-Oct24..1.EN.6.A22,"HE-IC-0800, HE-IC-0270, HE-IC-0210","HE-IC-0800: FS, HE-IC-0270: FS, HE-IC-0210: FS","HE-IC-0750, HE-IC-0820, HE-IC-2550","HE-IC-0750: FS, HE-IC-0820: FS, HE-IC-2550: FS",2024-02-15 00:00:00,2024-03-08 00:00:00,22
HE-IC-0820,Obtain Company Approval- Instrument Cable Block Diagram,6,P2543-R01-Oct24..1.EN.6.A22,HE-IC-0810,HE-IC-0810: FS,"HE-IC-0990, HE-IC-0930, HE-IC-0830","HE-IC-0990: FS, HE-IC-0930: FS, HE-IC-0830: FS",2024-03-11 00:00:00,2024-03-20 00:00:00,9
HE-IC-0910,Issue ICR-Instrument and F&G Cable Schedule,1,P2543-R01-Oct24..1.EN.6.A34,"HE-IC-2730, HE-IC-0800, HE-IC-2530, HE-IC-0790, HE-IC-0250, HE-IC-0190, HE-IC-0790, ML2069-B09","HE-IC-2730: FS, HE-IC-0800: FS, HE-IC-2530: FS, HE-IC-0790: FS, HE-IC-0250: FS, HE-IC-0190: FS, HE-IC-0790: FF, ML2069-B09: FS","HE-IC-0920, HE-IC-0970, HE-IC-3030","HE-IC-0920: FS, HE-IC-0970: SS, HE-IC-3030: FS",2024-05-31 00:00:00,2024-06-03 00:00:00,3
HE-IC-0920,Receive Company Comments-Instrument and F&G Cable Schedule,3,P2543-R01-Oct24..1.EN.6.A34,HE-IC-0910,HE-IC-0910: FS,HE-IC-0930,HE-IC-0930: FS,2024-06-04 00:00:00,2024-06-07 00:00:00,3
HE-IC-0940,Obtain Company Approval-Instrument and F&G Cable Schedule,2,P2543-R01-Oct24..1.EN.6.A34,"HE-IC-0930, HE-IC-1000","HE-IC-0930: FS, HE-IC-1000: FS",HE-IC-0950,HE-IC-0950: FS,2024-06-07 00:00:00,2024-06-11 00:00:00,4
HE-IC-0930,Re-Issue for Approval-Instrument and F&G Cable Schedule,3,P2543-R01-Oct24..1.EN.6.A34,"HE-TL-0450, HE-IC-0820, HE-IC-0920, HE-IC-0570, HE-IC-0210, HE-IC-0270, HE-IC-0790, HE-IC-0250, HE-IC-0190","HE-TL-0450: FS, HE-IC-0820: FS, HE-IC-0920: FS, HE-IC-0570: FS, HE-IC-0210: FS, HE-IC-0270: FS, HE-IC-0790: FS, HE-IC-0250: FS, HE-IC-0190: FS","HE-IC-2610, HE-IC-0750, HE-IC-0940","HE-IC-2610: FS, HE-IC-0750: FS, HE-IC-0940: FS",2024-06-11 00:00:00,2024-06-14 00:00:00,3
HE-IC-0950,Final Issue for Design/ Construction-Instrument and F&G Cable Schedule,55,P2543-R01-Oct24..1.EN.6.A34,"HE-IC-0940, HE-IC-0230, HE-IC-0290, HE-IC-0570, HE-IC-0210, HE-IC-0270, HE-IC-0790, HE-IC-0250, HE-IC-0190","HE-IC-0940: FS, HE-IC-0230: FS, HE-IC-0290: FS, HE-IC-0570: FS, HE-IC-0210: FS, HE-IC-0270: FS, HE-IC-0790: FS, HE-IC-0250: FS, HE-IC-0190: FS","CAB-4460, ML1032-B21, HE-IC-0770, C-56-PL-607-EI-2000, C-56-EB2-EI-1200, C-56-EB2-EI-1210, C-56-EB2-EI-1220, C-56-PR-838-CA-1000, C-56-PR-838-CA-1030, C-56-PR-838-EI-2000, C-56-PR-838-EI-2010, C-56-PR-838-EI-2040, C-56-591-01-EI-2000, C-56-591-01-EI-2010,","CAB-4460: FS, ML1032-B21: FS, HE-IC-0770: FS, C-56-PL-607-EI-2000: FS, C-56-EB2-EI-1200: FS, C-56-EB2-EI-1210: FS, C-56-EB2-EI-1220: FS, C-56-PR-838-CA-1000: FS, C-56-PR-838-CA-1030: FS, C-56-PR-838-EI-2000: FS, C-56-PR-838-EI-2010: FS, C-56-PR-838-EI-2040",2024-06-21 07:30:00,2024-09-08 17:30:00,79
HE-IC-0970,Issue ICR-Instrument Trench Layout,3,P2543-R01-Oct24..1.EN.6.A341,"HE-IC-0800, HE-IC-2530, HE-IC-0790, HE-IC-0250, HE-IC-0190, HE-IC-0910","HE-IC-0800: FS, HE-IC-2530: FS, HE-IC-0790: FS, HE-IC-0250: FS, HE-IC-0190: FS, HE-IC-0910: SS",HE-IC-0980,HE-IC-0980: FS,2024-05-01 00:00:00,2024-05-06 00:00:00,5
HE-IC-0980,Receive Company Comments-Instrument Trench Layout,4,P2543-R01-Oct24..1.EN.6.A341,HE-IC-0970,HE-IC-0970: FS,HE-IC-0990,HE-IC-0990: FS,2024-05-07 00:00:00,2024-05-13 00:00:00,6
HE-IC-1000,Obtain Company Approval-Instrument Trench Layout,2,P2543-R01-Oct24..1.EN.6.A341,HE-IC-0990,HE-IC-0990: FS,"HE-IC-1010, HE-IC-0940","HE-IC-1010: FS, HE-IC-0940: FS",2024-05-14 00:00:00,2024-05-16 00:00:00,2
HE-IC-0990,Re-Issue for Approval-Instrument Trench Layout,2,P2543-R01-Oct24..1.EN.6.A341,"HE-IC-0980, HE-IC-0820, HE-TL-0450, HE-IC-0570, HE-IC-0210, HE-IC-0270, HE-IC-0790, HE-IC-0250, HE-IC-0190","HE-IC-0980: FS, HE-IC-0820: FS, HE-TL-0450: FS, HE-IC-0570: FS, HE-IC-0210: FS, HE-IC-0270: FS, HE-IC-0790: FS, HE-IC-0250: FS, HE-IC-0190: FS","HE-IC-2610, HE-IC-1000, HE-IC-0750","HE-IC-2610: FS, HE-IC-1000: FS, HE-IC-0750: FS",2024-05-17 00:00:00,2024-05-21 00:00:00,4
HE-IC-1010,Final Issue for Design/ Construction-Instrument Trench Layout,7,P2543-R01-Oct24..1.EN.6.A341,"HE-IC-1000, HE-IC-0230, HE-IC-0290, HE-IC-0570, HE-IC-0210, HE-IC-0270, HE-IC-0790, HE-IC-0250, HE-IC-0190","HE-IC-1000: FS, HE-IC-0230: FS, HE-IC-0290: FS, HE-IC-0570: FS, HE-IC-0210: FS, HE-IC-0270: FS, HE-IC-0790: FS, HE-IC-0250: FS, HE-IC-0190: FS","HS-CN-0410, HE-IC-0770, ML1032-B21, CAB-4460, C-56-PL-607-EI-2000, C-56-EB2-EI-1200, C-56-EB2-EI-1210, C-56-EB2-EI-1220, C-56-PR-838-CA-1000, C-56-PR-838-CA-1030, C-56-PR-838-EI-2000, C-56-PR-838-EI-2010, C-56-PR-838-EI-2040, C-56-591-01-EI-2000, C-56-591-","HS-CN-0410: FS 76, HE-IC-0770: FS, ML1032-B21: FS, CAB-4460: FS, C-56-PL-607-EI-2000: FS, C-56-EB2-EI-1200: FS, C-56-EB2-EI-1210: FS, C-56-EB2-EI-1220: FS, C-56-PR-838-CA-1000: FS, C-56-PR-838-CA-1030: FS, C-56-PR-838-EI-2000: FS, C-56-PR-838-EI-2010: FS,",2024-05-22 00:00:00,2024-05-31 00:00:00,9
HE-IC-3390,Issue ICR-HYBRID PASSIVE COOLING SHELTER EQUIPMENT LAYOUT,9,P2543-R01-Oct24..1.EN.6.A3411,"HE-IC-3190, HE-IC-3240","HE-IC-3190: FF, HE-IC-3240: FS",HE-IC-3400,HE-IC-3400: FS,2024-02-26 00:00:00,2024-03-08 00:00:00,11
HE-IC-3400,Receive Company Comments-HYBRID PASSIVE COOLING SHELTER EQUIPMENT LAYOUT,9,P2543-R01-Oct24..1.EN.6.A3411,HE-IC-3390,HE-IC-3390: FS,HE-IC-3410,HE-IC-3410: FS,2024-02-26 00:00:00,2024-03-08 00:00:00,11
HE-IC-3410,Re-Issue for Approval-HYBRID PASSIVE COOLING SHELTER EQUIPMENT LAYOUT,9,P2543-R01-Oct24..1.EN.6.A3411,HE-IC-3400,HE-IC-3400: FS,HE-IC-3420,HE-IC-3420: FS,2024-02-26 00:00:00,2024-03-08 00:00:00,11
HE-IC-3420,Obtain Company Approval-HYBRID PASSIVE COOLING SHELTER EQUIPMENT LAYOUT,9,P2543-R01-Oct24..1.EN.6.A3411,HE-IC-3410,HE-IC-3410: FS,HE-IC-3430,HE-IC-3430: FS,2024-02-26 00:00:00,2024-03-08 00:00:00,11
HE-IC-1030,Issue ICR- Datasheet for MOV,4,P2543-R01-Oct24..1.EN.6.4.A9,"HE-PI-0900, HE-PR-0110, HE-PR-0550, HE-PR-0560, ML1002","HE-PI-0900: FS, HE-PR-0110: FS, HE-PR-0550: FS, HE-PR-0560: FS, ML1002: SS","HE-IC-1570, HE-IC-1040","HE-IC-1570: FS, HE-IC-1040: FS",2023-09-23 00:00:00,2023-09-29 00:00:00,6
HE-IC-1040,Receive Company Comments- Datasheet for MOV,9,P2543-R01-Oct24..1.EN.6.4.A9,HE-IC-1030,HE-IC-1030: FS,HE-IC-1050,HE-IC-1050: FS,2023-09-30 00:00:00,2023-10-13 00:00:00,13
HE-IC-1050,Re-Issue for Approval- Datasheet for MOV,5,P2543-R01-Oct24..1.EN.6.4.A9,HE-IC-1040,HE-IC-1040: FS,"HE-IC-1590, HE-IC-1060","HE-IC-1590: FS, HE-IC-1060: FS",2023-11-13 00:00:00,2023-11-20 00:00:00,7
HE-IC-1060,Obtain Company Approval- Datasheet for MOV,24,P2543-R01-Oct24..1.EN.6.4.A9,HE-IC-1050,HE-IC-1050: FS,HE-IC-1070,HE-IC-1070: FS,2023-11-21 00:00:00,2023-12-26 00:00:00,35
HE-IC-1070,Final Issue for Design/ Construction-Actuator Datasheet for MOVs,8,P2543-R01-Oct24..1.EN.6.4.A9,"HE-IC-1060, HE-IC-0050","HE-IC-1060: FS, HE-IC-0050: FF","C-COM-770, HE-IC-2630, CAB-4460","C-COM-770: FS, HE-IC-2630: FS, CAB-4460: FS",2023-12-27 00:00:00,2024-01-09 00:00:00,13
HE-IC-1090,Issue ICR- Datasheet for GOV & ROV,4,P2543-R01-Oct24..1.EN.6.4.A8,"HE-PI-0900, HE-PR-0110, HE-PR-1260, HE-PI-0960, HE-PR-1270, ML1002","HE-PI-0900: FS, HE-PR-0110: FS, HE-PR-1260: SS 5, HE-PI-0960: FS, HE-PR-1270: FS, ML1002: SS","HE-IC-1630, HE-IC-1100","HE-IC-1630: FS, HE-IC-1100: FS",2023-09-23 00:00:00,2023-09-29 00:00:00,6
HE-IC-1100,Receive Company Comments- Datasheet for GOV & ROV,9,P2543-R01-Oct24..1.EN.6.4.A8,HE-IC-1090,HE-IC-1090: FS,HE-IC-1110,HE-IC-1110: FS,2023-09-30 00:00:00,2023-10-13 00:00:00,13
HE-IC-1110,Re-Issue for Approval- Datasheet for GOV & ROV,5,P2543-R01-Oct24..1.EN.6.4.A8,HE-IC-1100,HE-IC-1100: FS,HE-IC-1120,HE-IC-1120: FS,2023-11-13 00:00:00,2023-11-20 00:00:00,7
HE-IC-1120,Obtain Company Approval- Datasheet for GOV & ROV,8,P2543-R01-Oct24..1.EN.6.4.A8,HE-IC-1110,HE-IC-1110: FS,"HE-IC-1130, HE-IC-1660","HE-IC-1130: FS, HE-IC-1660: FS",2023-11-24 00:00:00,2023-12-07 00:00:00,13
HE-IC-1130,Final Issue for Design/ Construction-Actuator Datasheet for GOV & ROV,10,P2543-R01-Oct24..1.EN.6.4.A8,"HE-IC-1120, HE-IC-0050, HE-PI-0050","HE-IC-1120: FS, HE-IC-0050: FF, HE-PI-0050: FS","C-COM-750, CAB-4460","C-COM-750: FF, CAB-4460: FS",2023-12-24 00:00:00,2024-01-09 00:00:00,16
HE-IC-1150,Issue ICR- Datasheets for Metering Skid,15,P2543-R01-Oct24..1.EN.6.4.A6,"HE-IC-620, HE-PR-0310, HE-PR-0310, HE-PI-0960, ML1002","HE-IC-620: FS, HE-PR-0310: SS, HE-PR-0310: FS, HE-PI-0960: FF, ML1002: SS","HE-IC-1810, HE-IC-1160","HE-IC-1810: FS, HE-IC-1160: FS",2023-10-02 00:00:00,2023-10-23 00:00:00,21
HE-IC-1160,Receive Company Comments- Datasheets for Metering Skid,6,P2543-R01-Oct24..1.EN.6.4.A6,HE-IC-1150,HE-IC-1150: FS,HE-IC-1170,HE-IC-1170: FS,2023-11-16 00:00:00,2023-11-24 00:00:00,8
HE-IC-1170,Re-Issue for Approval- Datasheets for Metering Skid,3,P2543-R01-Oct24..1.EN.6.4.A6,"HE-IC-1160, HE-PR-0350, HE-IC-0050","HE-IC-1160: FS, HE-PR-0350: FS, HE-IC-0050: FS",HE-IC-1180,HE-IC-1180: FS,2023-11-22 00:00:00,2023-11-25 00:00:00,3
HE-IC-1180,Obtain Company Approval- Datasheets for Metering Skid,5,P2543-R01-Oct24..1.EN.6.4.A6,HE-IC-1170,HE-IC-1170: FS,"HE-IC-1190, HE-IC-1840","HE-IC-1190: FS, HE-IC-1840: FS",2023-11-27 00:00:00,2023-12-05 00:00:00,8
HE-IC-1210,Issue ICR- Data sheet for PRS (Pressure Reduction System),15,P2543-R01-Oct24..1.EN.6.4.A7,"HE-PI-0900, HE-PR-0110, HE-IC-0070, HE-PR-0370, HE-PR-0370","HE-PI-0900: FS, HE-PR-0110: FS, HE-IC-0070: SS, HE-PR-0370: SS, HE-PR-0370: FS","HE-IC-1690, HE-IC-1220","HE-IC-1690: SS, HE-IC-1220: FS",2023-10-02 00:00:00,2023-10-23 00:00:00,21
HE-IC-1220,Receive Company Comments- Data sheet for PRS (Pressure Reduction System),2,P2543-R01-Oct24..1.EN.6.4.A7,HE-IC-1210,HE-IC-1210: FS,HE-IC-1230,HE-IC-1230: FS,2023-10-24 00:00:00,2023-10-26 00:00:00,2
HE-IC-1230,Re-Issue for Approval- Data sheet for PRS (Pressure Reduction System),9,P2543-R01-Oct24..1.EN.6.4.A7,HE-IC-1220,HE-IC-1220: FS,HE-IC-1240,HE-IC-1240: FS,2023-11-14 00:00:00,2023-11-27 00:00:00,13
HE-IC-1240,Obtain Company Approval- Data sheet for PRS (Pressure Reduction System),4,P2543-R01-Oct24..1.EN.6.4.A7,"HE-IC-1230, HE-PR-0410, HE-IC-0110","HE-IC-1230: FS, HE-PR-0410: FS, HE-IC-0110: FS","HE-IC-1250, HE-IC-1720","HE-IC-1250: FS, HE-IC-1720: FS",2023-11-28 00:00:00,2023-12-05 00:00:00,7
HE-IC-1250,Final Issue for Design/ Construction-Data sheet for PRS (Pressure Reduction System),208,P2543-R01-Oct24..1.EN.6.4.A7,"HE-PR-0410, HE-IC-0050, HE-IC-1240, HE-HS-0670, HE-PI-0900, HE-PR-0110, HE-IC-0250","HE-PR-0410: FS, HE-IC-0050: FF, HE-IC-1240: FS, HE-HS-0670: FS, HE-PI-0900: FS, HE-PR-0110: FS, HE-IC-0250: FS","CAB-4460, C-COM-790","CAB-4460: FS, C-COM-790: FS",2023-12-06 00:00:00,2024-10-07 17:30:00,306
HE-IC-1330,Issue ICR- Datasheets for PSV & Orifice (incl. RO),9,P2543-R01-Oct24..1.EN.6.4.A5,"HE-PR-0110, HE-IC-0010, HE-PR-1310","HE-PR-0110: FS, HE-IC-0010: SS 10, HE-PR-1310: FS","HE-IC-1340, HE-IC-1930","HE-IC-1340: FS, HE-IC-1930: FS",2023-11-13 00:00:00,2023-11-24 00:00:00,11
HE-IC-1340,Receive Company Comments- Datasheets for PSV & Orifice (incl. RO),12,P2543-R01-Oct24..1.EN.6.4.A5,"HE-IC-1330, HE-PR-1570, HE-PR-1320","HE-IC-1330: FS, HE-PR-1570: FS, HE-PR-1320: FS",HE-IC-1350,HE-IC-1350: FS,2023-12-21 00:00:00,2024-01-09 00:00:00,19
HE-IC-1350,Re-Issue for Approval- Datasheets for PSV & Orifice (incl. RO),7,P2543-R01-Oct24..1.EN.6.4.A5,HE-IC-1340,HE-IC-1340: FS,HE-IC-1360,HE-IC-1360: FS,2024-01-10 00:00:00,2024-01-19 00:00:00,9
HE-IC-1360,Obtain Company Approval- Datasheets for PSV & Orifice (incl. RO),0,P2543-R01-Oct24..1.EN.6.4.A5,HE-IC-1350,HE-IC-1350: FS,"HE-IC-1370, HE-IC-1960","HE-IC-1370: FS, HE-IC-1960: FS",2024-01-19 00:00:00,2024-01-19 00:00:00,1
HE-IC-3300,Issue ICR- Datasheets for PASSIVE COOLED SHELTER,9,P2543-R01-Oct24..1.EN.6.4.A51,HE-IC-3340,HE-IC-3340: FS,HE-IC-3310,HE-IC-3310: FS,2023-11-29 00:00:00,2023-12-13 00:00:00,14
HE-IC-3310,Receive Company Comments- Datasheets for PASSIVE COOLED SHELTER,9,P2543-R01-Oct24..1.EN.6.4.A51,HE-IC-3300,HE-IC-3300: FS,HE-IC-3320,HE-IC-3320: FS,2023-12-14 00:00:00,2023-12-27 00:00:00,13
HE-IC-3320,Re-Issue for Approval- Datasheets for PASSIVE COOLED SHELTER,13,P2543-R01-Oct24..1.EN.6.4.A51,HE-IC-3310,HE-IC-3310: FS,HE-IC-3330,HE-IC-3330: FS,2023-12-28 00:00:00,2024-01-17 00:00:00,20
HE-IC-3330,Obtain Company Approval- Datasheets for PASSIVE COOLED SHELTER,2,P2543-R01-Oct24..1.EN.6.4.A51,HE-IC-3320,HE-IC-3320: FS,HE-IC-3290,HE-IC-3290: FS,2024-01-17 00:00:00,2024-01-19 00:00:00,2
HE-IC-3290,Final Issue for Design/ Construction-Datasheets for PASSIVE COOLED SHELTER,21,P2543-R01-Oct24..1.EN.6.4.A51,HE-IC-3330,HE-IC-3330: FS,HE-PL-1250,HE-PL-1250: FF,2024-02-02 00:00:00,2024-03-04 00:00:00,31
HE-PL-1210,Issue ICR - Data Sheet - Mainline Ball Valve,5,P2543-R01-Oct24..1.EN.6.4.51,HE-PL-0070,HE-PL-0070: FS,"HE-PL-1690, HE-PL-1220","HE-PL-1690: FS, HE-PL-1220: FS",2023-09-22 00:00:00,2023-09-29 00:00:00,7
HE-PL-1220,Receive Company Comments  - Data Sheet - Mainline Ball Valve,8,P2543-R01-Oct24..1.EN.6.4.51,HE-PL-1210,HE-PL-1210: FS,HE-PL-1230,HE-PL-1230: FS,2023-09-29 00:00:00,2023-10-11 00:00:00,12
HE-PL-1230,Re-Issue for Approval - Data Sheet - Mainline Ball Valve,11,P2543-R01-Oct24..1.EN.6.4.51,HE-PL-1220,HE-PL-1220: FS,HE-PL-1240,HE-PL-1240: FS,2023-10-12 00:00:00,2023-10-27 00:00:00,15
HE-PL-1240,Obtain Company Approval - Data Sheet - Mainline Ball Valve,5,P2543-R01-Oct24..1.EN.6.4.51,HE-PL-1230,HE-PL-1230: FS,HE-PL-1250,HE-PL-1250: FS,2023-10-27 00:00:00,2023-11-03 00:00:00,7
HE-PL-1250,Final Issue for Design/ Construction-Data Sheet - Mainline Ball Valve,16,P2543-R01-Oct24..1.EN.6.4.51,"HE-IC-3290, HE-PL-1240, HE-PL-0110","HE-IC-3290: FF, HE-PL-1240: FS, HE-PL-0110: FS","HE-PL-1730, CAB-4480","HE-PL-1730: FS, CAB-4480: FS",2024-05-30 07:30:00,2024-06-25 17:30:00,26
HE-IC-1390,Issue ICR-Datasheets for Pig Signalers,12,P2543-R01-Oct24..1.EN.6.4.A41,HE-IC-0030,HE-IC-0030: FS,"HE-IC-1400, HE-PL-1930","HE-IC-1400: FS, HE-PL-1930: FS",2023-11-08 00:00:00,2023-11-24 00:00:00,16
HE-IC-1400,Receive Company Comments-Datasheets for Pig Signalers,7,P2543-R01-Oct24..1.EN.6.4.A41,HE-IC-1390,HE-IC-1390: FS,HE-IC-1410,HE-IC-1410: FS,2023-11-25 00:00:00,2023-12-07 00:00:00,12
HE-IC-1410,Re-Issue for Approval-Datasheets for Pig Signalers,5,P2543-R01-Oct24..1.EN.6.4.A41,HE-IC-1400,HE-IC-1400: FS,HE-IC-1420,HE-IC-1420: FS,2023-12-08 00:00:00,2023-12-15 00:00:00,7
HE-IC-1420,Obtain Company Approval-Datasheets for Pig Signalers,1,P2543-R01-Oct24..1.EN.6.4.A41,HE-IC-1410,HE-IC-1410: FS,HE-IC-1430,HE-IC-1430: FS,2023-12-16 00:00:00,2023-12-19 00:00:00,3
HE-IC-1430,Final Issue for Design/ Construction-Datasheets for Pig Signalers,145,P2543-R01-Oct24..1.EN.6.4.A41,"HE-IC-0050, HE-IC-1420","HE-IC-0050: FS, HE-IC-1420: FS","ML1030, ML1859-E31, ML1749-E20, ML1219-B29, CAB-4460, HE-PL-1970, C-56-PL-607-EI-1400, C-56-PL-607-EI-2200, C-56-PL-607-EI-1800, C-56-PR-838-EI-1010, C-56-PR-838-EI-1400, C-56-PR-838-EI-1810, C-56-PR-838-EI-2020, C-56-PR-838-EI-2030, C-56-591-01-EI-1600, C","ML1030: FS, ML1859-E31: FS, ML1749-E20: FS, ML1219-B29: FF, CAB-4460: FS, HE-PL-1970: FF, C-56-PL-607-EI-1400: FS, C-56-PL-607-EI-2200: FS, C-56-PL-607-EI-1800: FS, C-56-PR-838-EI-1010: FS, C-56-PR-838-EI-1400: FS, C-56-PR-838-EI-1810: FS, C-56-PR-838-EI-2",2023-12-24 00:00:00,2024-07-29 17:30:00,218
HE-IC-1450,Issue ICR-Datasheets for Field Instruments / H2S Analyzers,4,P2543-R01-Oct24..1.EN.6.4.A4,"HE-IC-0010, HE-PR-0110, HE-PR-1460, HE-PR-1370, HE-PR-1420, HE-PR-1510","HE-IC-0010: SS 10, HE-PR-0110: FS, HE-PR-1460: FS 5, HE-PR-1370: FS, HE-PR-1420: FS, HE-PR-1510: FS","HE-IC-1930, HE-IC-1460","HE-IC-1930: FS, HE-IC-1460: FS",2024-01-02 00:00:00,2024-01-08 00:00:00,6
HE-IC-1460,Receive Company Comments-Datasheets for Field Instruments / H2S Analyzers,1,P2543-R01-Oct24..1.EN.6.4.A4,"HE-IC-1450, HE-PR-1470, HE-PR-1520","HE-IC-1450: FS, HE-PR-1470: FS, HE-PR-1520: FS",HE-IC-1470,HE-IC-1470: FS,2024-01-19 00:00:00,2024-01-22 00:00:00,3
HE-IC-1470,Re-Issue for Approval-Datasheets for Field Instruments / H2S Analyzers,4,P2543-R01-Oct24..1.EN.6.4.A4,HE-IC-1460,HE-IC-1460: FS,"HE-IC-1480, HE-IC-0630","HE-IC-1480: FS, HE-IC-0630: FS",2024-02-26 00:00:00,2024-03-01 00:00:00,4
HE-IC-1480,Obtain Company Approval-Datasheets for Field Instruments / H2S Analyzers,9,P2543-R01-Oct24..1.EN.6.4.A4,HE-IC-1470,HE-IC-1470: FS,HE-IC-1490,HE-IC-1490: FS,2024-03-04 00:00:00,2024-03-17 00:00:00,13
HE-IC-1490,Final Issue for Design/ Construction-Datasheets for Field Instruments / H2S Analyzers,5,P2543-R01-Oct24..1.EN.6.4.A4,"HE-IC-0050, HE-IC-1480, HE-PR-0110","HE-IC-0050: FS, HE-IC-1480: FS, HE-PR-0110: FS","HE-IC-0650, CAB-4460","HE-IC-0650: FS, CAB-4460: FS",2024-09-30 07:30:00,2024-10-04 17:30:00,4
HE-IC-1510,Issue ICR- Datasheets for F&G Devices,5,P2543-R01-Oct24..1.EN.6.4.A72,"HE-IC-0010, HE-HS-0250, HE-PR-0110","HE-IC-0010: SS 10, HE-HS-0250: FS, HE-PR-0110: FS","HE-IC-1870, HE-IC-1520","HE-IC-1870: FS, HE-IC-1520: FS",2024-01-29 00:00:00,2024-02-03 00:00:00,5
HE-IC-1520,Receive Company Comments- Datasheets for F&G Devices,9,P2543-R01-Oct24..1.EN.6.4.A72,HE-IC-1510,HE-IC-1510: FS,HE-IC-1530,HE-IC-1530: FS,2024-02-26 00:00:00,2024-03-08 00:00:00,11
HE-IC-1530,Re-Issue for Approval- Datasheets for F&G Devices,8,P2543-R01-Oct24..1.EN.6.4.A72,HE-IC-1520,HE-IC-1520: FS,HE-IC-1540,HE-IC-1540: FS,2024-05-24 00:00:00,2024-06-05 00:00:00,12
HE-IC-1540,Obtain Company Approval- Datasheets for F&G Devices,2,P2543-R01-Oct24..1.EN.6.4.A72,HE-IC-1530,HE-IC-1530: FS,"HE-IC-1550, HE-IC-1900","HE-IC-1550: FS, HE-IC-1900: FS",2024-06-05 00:00:00,2024-06-07 00:00:00,2
HE-IC-1550,Final Issue for Design/ Construction-Datasheets for Fire and Gas Devices,5,P2543-R01-Oct24..1.EN.6.4.A72,"HE-IC-0050, HE-IC-1540, HE-IC-0530, HE-PR-0110","HE-IC-0050: FS, HE-IC-1540: FS, HE-IC-0530: FS, HE-PR-0110: FS","ML1030, ML1859-E31, ML1749-E20, ML1219-B29, CAB-4460, C-56-PL-607-EI-1400, C-56-PL-607-EI-1400, C-56-PL-607-EI-2200, C-56-PL-607-EI-2200, C-56-PL-607-EI-1800, C-56-PL-607-EI-1800, C-56-PR-838-EI-1010, C-56-PR-838-EI-1400, C-56-PR-838-EI-1810, C-56-PR-838-E","ML1030: FS, ML1859-E31: FS, ML1749-E20: FS, ML1219-B29: FF, CAB-4460: FS, C-56-PL-607-EI-1400: FS, C-56-PL-607-EI-1400: FF, C-56-PL-607-EI-2200: FS, C-56-PL-607-EI-2200: FF, C-56-PL-607-EI-1800: FS, C-56-PL-607-EI-1800: FF, C-56-PR-838-EI-1010: FF, C-56-PR",2024-09-30 07:30:00,2024-10-04 17:30:00,4
HE-IC-1570,Issue ICR- Material Requisitions for MOV,6,P2543-R01-Oct24..1.EN.6.11.A1311,HE-IC-1030,HE-IC-1030: FS,"HP-ME-0310, HE-IC-1580","HP-ME-0310: FS, HE-IC-1580: FS",2023-10-15 00:00:00,2023-10-24 00:00:00,9
HE-IC-1580,Receive Company Comments- Material Requisitions for MOV,2,P2543-R01-Oct24..1.EN.6.11.A1311,HE-IC-1570,HE-IC-1570: FS,HE-IC-1590,HE-IC-1590: FS,2023-10-25 00:00:00,2023-10-27 00:00:00,2
HE-IC-1590,Re-Issue for Approval- Material Requisitions for MOV,0,P2543-R01-Oct24..1.EN.6.11.A1311,"HE-IC-1050, HE-IC-1580","HE-IC-1050: FS, HE-IC-1580: FS",HE-IC-1600,HE-IC-1600: FS,2024-01-18 00:00:00,2024-01-18 00:00:00,1
HE-IC-1600,Obtain Company Approval- Material Requisitions for MOV,0,P2543-R01-Oct24..1.EN.6.11.A1311,HE-IC-1590,HE-IC-1590: FS,HE-IC-1610,HE-IC-1610: FS,2024-01-18 00:00:00,2024-01-18 00:00:00,1
HE-IC-1610,Final Issue for Design/ Construction-Material Requisitions for MOV,64,P2543-R01-Oct24..1.EN.6.11.A1311,HE-IC-1600,HE-IC-1600: FS,"ML1027-B17, HM-ME-0620, CAB-4460, HE-IC-2090","ML1027-B17: FS, HM-ME-0620: FS, CAB-4460: FS, HE-IC-2090: FS",2024-01-18 00:00:00,2024-04-25 00:00:00,98
HE-IC-1630,Issue ICR- Material Requisitions for ROV/ GOV,6,P2543-R01-Oct24..1.EN.6.11.A131,HE-IC-1090,HE-IC-1090: FS,"HP-ME-0260, HE-IC-1640","HP-ME-0260: FS, HE-IC-1640: FS",2023-10-15 00:00:00,2023-10-24 00:00:00,9
HE-IC-1640,Receive Company Comments- Material Requisitions for ROV/ GOV,1,P2543-R01-Oct24..1.EN.6.11.A131,HE-IC-1630,HE-IC-1630: FS,HE-IC-1650,HE-IC-1650: FS,2023-10-25 00:00:00,2023-10-26 00:00:00,1
HE-IC-1650,Re-Issue for Approval- Material Requisitions for ROV/ GOV,0,P2543-R01-Oct24..1.EN.6.11.A131,HE-IC-1640,HE-IC-1640: FS,HE-IC-1660,HE-IC-1660: FS,2024-02-26 00:00:00,2024-02-26 00:00:00,1
HE-IC-1660,Obtain Company Approval- Material Requisitions for ROV/ GOV,0,P2543-R01-Oct24..1.EN.6.11.A131,"HE-IC-1650, HE-IC-1120","HE-IC-1650: FS, HE-IC-1120: FS",HE-IC-1670,HE-IC-1670: FS,2024-02-26 00:00:00,2024-02-26 00:00:00,1
HE-IC-1670,Final Issue for Design/ Construction-Material Requisitions for ROV/ GOV,9,P2543-R01-Oct24..1.EN.6.11.A131,HE-IC-1660,HE-IC-1660: FS,"ML1027-B17, CAB-4460, HP-ME-0280","ML1027-B17: FS, CAB-4460: FS, HP-ME-0280: FS",2024-03-31 00:00:00,2024-04-18 00:00:00,18
HE-PL-1690,Issue ICR - MR for Mainline Ball Valve,7,P2543-R01-Oct24..1.EN.6.11.21,HE-PL-1210,HE-PL-1210: FS,"HP-ME-1070, HE-PL-1700","HP-ME-1070: FS, HE-PL-1700: FS",2023-11-17 00:00:00,2023-11-28 00:00:00,11
HE-PL-1700,Receive Company Comments - MR for Mainline Ball Valve,2,P2543-R01-Oct24..1.EN.6.11.21,HE-PL-1690,HE-PL-1690: FS,HE-PL-1710,HE-PL-1710: FS,2023-11-29 00:00:00,2023-12-01 00:00:00,2
HE-PL-1710,Re-Issue for Approval - MR for Mainline Ball Valve,11,P2543-R01-Oct24..1.EN.6.11.21,HE-PL-1700,HE-PL-1700: FS,HE-PL-1720,HE-PL-1720: FS,2024-02-01 00:00:00,2024-02-16 00:00:00,15
HE-PL-1720,Obtain Company Approval - MR for Mainline Ball Valve,5,P2543-R01-Oct24..1.EN.6.11.21,HE-PL-1710,HE-PL-1710: FS,HE-PL-1730,HE-PL-1730: FS,2024-02-16 00:00:00,2024-02-23 00:00:00,7
HE-PL-1730,Final Issue for Design/ Construction-Material Requisition for Manual Ball Valves,11,P2543-R01-Oct24..1.EN.6.11.21,"HE-PL-1720, HE-PL-1250","HE-PL-1720: FS, HE-PL-1250: FS",CAB-4480,CAB-4480: FS,2024-09-02 07:30:00,2024-09-16 17:30:00,14
HE-IC-1690,Issue ICR-Material Requisitions for PRS,6,P2543-R01-Oct24..1.EN.6.11.A16,HE-IC-1210,HE-IC-1210: SS,"HP-ME-0060, HE-IC-1700","HP-ME-0060: FS, HE-IC-1700: FS",2023-10-15 00:00:00,2023-10-24 00:00:00,9
HE-IC-1700,Receive Company Comments-Material Requisitions for PRS,6,P2543-R01-Oct24..1.EN.6.11.A16,HE-IC-1690,HE-IC-1690: FS,HE-IC-1710,HE-IC-1710: FS,2023-11-14 00:00:00,2023-11-22 00:00:00,8
HE-IC-1710,Re-Issue for Approval-Material Requisitions for PRS,73,P2543-R01-Oct24..1.EN.6.11.A16,HE-IC-1700,HE-IC-1700: FS,HE-IC-1720,HE-IC-1720: FS,2023-11-23 00:00:00,2024-03-07 00:00:00,105
HE-IC-1720,Obtain Company Approval-Material Requisitions for PRS,4,P2543-R01-Oct24..1.EN.6.11.A16,"HE-IC-1710, HE-IC-1240","HE-IC-1710: FS, HE-IC-1240: FS",HE-IC-1730,HE-IC-1730: FS,2024-03-01 00:00:00,2024-03-07 00:00:00,6
HE-IC-1750,Issue ICR-Material Requisitions for Leak Detection System,18,P2543-R01-Oct24..1.EN.6.11.A161,"HE-PI-0900, HE-PR-0110, HE-IC-0250, HE-PI-0940, HE-IC-0290","HE-PI-0900: FS, HE-PR-0110: FS, HE-IC-0250: FS, HE-PI-0940: FS 10, HE-IC-0290: FS","HP-ME-0110, HE-IC-1760","HP-ME-0110: FS, HE-IC-1760: FS",2023-11-20 00:00:00,2023-12-15 00:00:00,25
HE-IC-1760,Receive Company Comments-Material Requisitions for Leak Detection System,9,P2543-R01-Oct24..1.EN.6.11.A161,HE-IC-1750,HE-IC-1750: FS,HE-IC-1770,HE-IC-1770: FS,2024-02-26 00:00:00,2024-03-08 00:00:00,11
HE-IC-1770,Re-Issue for Approval-Material Requisitions for Leak Detection System,4,P2543-R01-Oct24..1.EN.6.11.A161,"HE-IC-1760, HE-HS-0670, HE-PI-0900, HE-PR-0110, HE-IC-0250","HE-IC-1760: FS, HE-HS-0670: FS, HE-PI-0900: FS, HE-PR-0110: FS, HE-IC-0250: FS",HE-IC-1780,HE-IC-1780: FS,2024-03-10 00:00:00,2024-03-17 00:00:00,7
HE-IC-1780,Obtain Company Approval-Material Requisitions for Leak Detection System,6,P2543-R01-Oct24..1.EN.6.11.A161,HE-IC-1770,HE-IC-1770: FS,HE-IC-1790,HE-IC-1790: FS,2024-03-18 00:00:00,2024-03-28 00:00:00,10
HE-IC-1790,Final Issue for Design/ Construction-Material Requisitions for Leak Detection System,90,P2543-R01-Oct24..1.EN.6.11.A161,"HE-IC-1780, HE-PR-0410, HE-IC-0290, HE-IC-0050, HE-HS-0670, HE-PI-0900, HE-PR-0110, HE-IC-0250","HE-IC-1780: FS, HE-PR-0410: FS, HE-IC-0290: FS, HE-IC-0050: FS, HE-HS-0670: FS, HE-PI-0900: FS, HE-PR-0110: FS, HE-IC-0250: FS","HM-ME-0220, CAB-4460","HM-ME-0220: FS, CAB-4460: FS",2024-05-08 00:00:00,2024-09-16 17:30:00,131
HE-IC-1810,Issue ICR- Material Requisitions for Metering Skid,4,P2543-R01-Oct24..1.EN.6.11.A17,HE-IC-1150,HE-IC-1150: FS,"HP-ME-0010, HE-IC-1820","HP-ME-0010: FS, HE-IC-1820: FS",2023-11-13 00:00:00,2023-11-17 00:00:00,4
HE-IC-1820,Receive Company Comments- Material Requisitions for Metering Skid,18,P2543-R01-Oct24..1.EN.6.11.A17,HE-IC-1810,HE-IC-1810: FS,HE-IC-1830,HE-IC-1830: FS,2023-11-20 00:00:00,2023-12-15 00:00:00,25
HE-IC-1830,Re-Issue for Approval- Material Requisitions for Metering Skid,42,P2543-R01-Oct24..1.EN.6.11.A17,HE-IC-1820,HE-IC-1820: FS,HE-IC-1840,HE-IC-1840: FS,2023-11-14 00:00:00,2024-01-15 00:00:00,62
HE-IC-1840,Obtain Company Approval- Material Requisitions for Metering Skid,7,P2543-R01-Oct24..1.EN.6.11.A17,"HE-IC-1830, HE-IC-1180","HE-IC-1830: FS, HE-IC-1180: FS",HE-IC-1850,HE-IC-1850: FS,2024-01-16 00:00:00,2024-01-25 00:00:00,9
HE-IC-1870,Issue ICR- Material Requisitions for Gas Detectors,3,P2543-R01-Oct24..1.EN.6.11.9,HE-IC-1510,HE-IC-1510: FS,"HP-ME-0710, HE-IC-1880","HP-ME-0710: FS, HE-IC-1880: FS",2024-01-30 00:00:00,2024-02-02 00:00:00,3
HE-IC-1880,Receive Company Comments- Material Requisitions for Gas Detectors,20,P2543-R01-Oct24..1.EN.6.11.9,HE-IC-1870,HE-IC-1870: FS,HE-IC-1890,HE-IC-1890: FS,2024-03-08 00:00:00,2024-04-15 00:00:00,38
HE-IC-1890,Re-Issue for Approval- Material Requisitions for Gas Detectors,5,P2543-R01-Oct24..1.EN.6.11.9,HE-IC-1880,HE-IC-1880: FS,HE-IC-1900,HE-IC-1900: FS,2024-06-03 00:00:00,2024-06-10 00:00:00,7
HE-IC-1900,Obtain Company Approval- Material Requisitions for Gas Detectors,3,P2543-R01-Oct24..1.EN.6.11.9,"HE-IC-1890, HE-IC-1540","HE-IC-1890: FS, HE-IC-1540: FS",HE-IC-1910,HE-IC-1910: FS,2024-06-11 00:00:00,2024-06-14 00:00:00,3
HE-PL-1930,Issue ICR- Material Requisition for Pig Signaler,5,P2543-R01-Oct24..1.EN.6.11.43,"HE-PL-2420, HE-PL-0220, HE-PL-2480, HE-IC-1390","HE-PL-2420: FS, HE-PL-0220: FS, HE-PL-2480: FS, HE-IC-1390: FS","HE-PL-1940, HP-ME-1120","HE-PL-1940: FS, HP-ME-1120: FS",2024-02-26 00:00:00,2024-03-04 00:00:00,7
HE-PL-1940,Receive Company Comments- Material Requisition for Pig Signaler,10,P2543-R01-Oct24..1.EN.6.11.43,HE-PL-1930,HE-PL-1930: FS,HE-PL-1950,HE-PL-1950: FS,2024-03-05 00:00:00,2024-03-19 00:00:00,14
HE-PL-1950,Re-Issue for Approval- Material Requisition for Pig Signaler,25,P2543-R01-Oct24..1.EN.6.11.43,HE-PL-1940,HE-PL-1940: FS,HE-PL-1960,HE-PL-1960: FS,2024-03-19 00:00:00,2024-05-01 00:00:00,43
HE-PL-1960,Obtain Company Approval- Material Requisition for Pig Signaler,3,P2543-R01-Oct24..1.EN.6.11.43,HE-PL-1950,HE-PL-1950: FS,HE-PL-1970,HE-PL-1970: FS,2024-05-02 00:00:00,2024-05-07 00:00:00,5
HE-PL-1970,Final Issue for Design/ Construction-Material Requisition for Pig Signaler,39,P2543-R01-Oct24..1.EN.6.11.43,"HE-PL-1960, HE-IC-1430","HE-PL-1960: FS, HE-IC-1430: FF","CAB-4480, HE-PL-2370","CAB-4480: FS, HE-PL-2370: FF",2024-06-10 00:00:00,2024-08-07 17:30:00,58
HE-EL-0850,Issue ICR - Material Requisition for Active / Passive Shelters,14,P2543-R01-Oct24..1.EN.6.11.4,"HE-CS-0040, HE-CS-1590","HE-CS-0040: FS 10, HE-CS-1590: FS","HE-EL-0860, HP-ME-0560","HE-EL-0860: FS, HP-ME-0560: FS",2024-01-08 00:00:00,2024-01-26 00:00:00,18
HE-EL-0860,Receive Company Comments - Material Requisition for Active / Passive Shelters,9,P2543-R01-Oct24..1.EN.6.11.4,HE-EL-0850,HE-EL-0850: FS,HE-EL-0870,HE-EL-0870: FS,2024-02-26 00:00:00,2024-03-08 00:00:00,11
HE-EL-0870,Re-Issue for Approval - Material Requisition for Active / Passive Shelters,9,P2543-R01-Oct24..1.EN.6.11.4,HE-EL-0860,HE-EL-0860: FS,HE-EL-0880,HE-EL-0880: FS,2024-03-10 00:00:00,2024-03-25 00:00:00,15
HE-EL-0880,Obtain Company Approval - Material Requisition for Active / Passive Shelters,39,P2543-R01-Oct24..1.EN.6.11.4,HE-EL-0870,HE-EL-0870: FS,HE-EL-0890,HE-EL-0890: FS,2024-03-26 00:00:00,2024-05-25 00:00:00,60
HE-EL-0890,Final Issue for Design/ Construction-Material Requisition for Active/ Passive Shelters,42,P2543-R01-Oct24..1.EN.6.11.4,"HE-EL-0880, HE-CS-0050, HE-CS-1600","HE-EL-0880: FS, HE-CS-0050: FS, HE-CS-1600: FS","ML1219-B29, CAB-4420, HM-ME-1130, HE-EL-1250","ML1219-B29: FF, CAB-4420: FS, HM-ME-1130: FS, HE-EL-1250: FF",2024-05-27 00:00:00,2024-07-29 17:30:00,63
HE-IC-1930,Issue ICR- Material Requisitions for Field Instruments / H2S Analyzers,4,P2543-R01-Oct24..1.EN.6.11.2,"HE-IC-1450, HE-IC-1330","HE-IC-1450: FS, HE-IC-1330: FS","HP-ME-0710, HE-IC-1940, HP-ME-0760, HS-GN-0250, HS-GN-0370","HP-ME-0710: FS, HE-IC-1940: FS, HP-ME-0760: FS, HS-GN-0250: FS, HS-GN-0370: FS",2024-01-29 00:00:00,2024-02-02 00:00:00,4
HE-IC-1940,Receive Company Comments- Material Requisitions for Field Instruments / H2S Analyzers,9,P2543-R01-Oct24..1.EN.6.11.2,HE-IC-1930,HE-IC-1930: FS,HE-IC-1950,HE-IC-1950: FS,2024-02-26 00:00:00,2024-03-08 00:00:00,11
HE-IC-1950,Re-Issue for Approval- Material Requisitions for Field Instruments / H2S Analyzers,41,P2543-R01-Oct24..1.EN.6.11.2,HE-IC-1940,HE-IC-1940: FS,HE-IC-1960,HE-IC-1960: FS,2024-03-10 00:00:00,2024-05-15 00:00:00,66
HE-IC-1960,Obtain Company Approval- Material Requisitions for Field Instruments / H2S Analyzers,6,P2543-R01-Oct24..1.EN.6.11.2,"HE-IC-1950, HE-IC-1360","HE-IC-1950: FS, HE-IC-1360: FS",HE-IC-1970,HE-IC-1970: FS,2024-05-16 00:00:00,2024-05-24 00:00:00,8
HE-IC-1970,Final Issue for Design/ Construction-Material Requisitions for Field Instruments / H2S Analyzers,7,P2543-R01-Oct24..1.EN.6.11.2,HE-IC-1960,HE-IC-1960: FS,"ML1027-B17, HP-ME-0730, CAB-4460","ML1027-B17: FS, HP-ME-0730: FS, CAB-4460: FS",2024-05-24 00:00:00,2024-06-04 00:00:00,11
HE-IC-1990,Issue ICR- Material Requisitions for Junction Boxes,12,P2543-R01-Oct24..1.EN.6.11.7,"HE-IC-0250, HE-IC-0190","HE-IC-0250: FS, HE-IC-0190: FS","HP-ME-0810, HE-IC-2000","HP-ME-0810: FS, HE-IC-2000: FS",2024-04-30 00:00:00,2024-05-16 00:00:00,16
HE-IC-2000,Receive Company Comments- Material Requisitions for Junction Boxes,11,P2543-R01-Oct24..1.EN.6.11.7,HE-IC-1990,HE-IC-1990: FS,HE-IC-2010,HE-IC-2010: FS,2024-05-17 00:00:00,2024-06-03 00:00:00,17
HE-IC-2010,Re-Issue for Approval- Material Requisitions for Junction Boxes,61,P2543-R01-Oct24..1.EN.6.11.7,HE-IC-2000,HE-IC-2000: FS,HE-IC-2020,HE-IC-2020: FS,2024-06-04 00:00:00,2024-09-02 17:30:00,90
HE-IC-2020,Obtain Company Approval- Material Requisitions for Junction Boxes,10,P2543-R01-Oct24..1.EN.6.11.7,HE-IC-2010,HE-IC-2010: FS,HE-IC-2030,HE-IC-2030: FS,2024-09-03 07:30:00,2024-09-16 17:30:00,13
HE-IC-2030,Final Issue for Design/ Construction-Material Requisitions for Junction Boxes,7,P2543-R01-Oct24..1.EN.6.11.7,HE-IC-2020,HE-IC-2020: FS,"HP-ME-0830, HE-IC-2510","HP-ME-0830: FS, HE-IC-2510: FS",2024-09-30 07:30:00,2024-10-08 17:30:00,8
HE-IC-3030,Issue ICR- Material Requisitions for Instrument Cables,15,P2543-R01-Oct24..1.EN.6.11.3,HE-IC-0910,HE-IC-0910: FS,"HE-IC-2990, HE-IC-3050","HE-IC-2990: FS, HE-IC-3050: FS 20",2024-05-08 00:00:00,2024-05-29 00:00:00,21
HE-IC-2990,Receive Company Comments- Material Requisitions for Instrument Cables,10,P2543-R01-Oct24..1.EN.6.11.3,HE-IC-3030,HE-IC-3030: FS,HE-IC-3000,HE-IC-3000: FS,2024-05-30 00:00:00,2024-06-13 00:00:00,14
HE-IC-3000,Re-Issue for Approval- Material Requisitions for Instrument Cables,42,P2543-R01-Oct24..1.EN.6.11.3,HE-IC-2990,HE-IC-2990: FS,HE-IC-3020,HE-IC-3020: FS,2024-06-14 00:00:00,2024-08-17 17:30:00,64
HE-IC-3020,Obtain Company Approval- Material Requisitions for  Instrument Cables,2,P2543-R01-Oct24..1.EN.6.11.3,HE-IC-3000,HE-IC-3000: FS,HE-IC-3010,HE-IC-3010: FS,2024-08-19 07:30:00,2024-08-20 17:30:00,1
HE-IC-3010,Final Issue for Design/ Construction-Material Requisitions for Instrument Cables,5,P2543-R01-Oct24..1.EN.6.11.3,HE-IC-3020,HE-IC-3020: FS,HE-IC-3040,HE-IC-3040: FS,2024-08-21 07:30:00,2024-08-27 17:30:00,6
HE-IC-2880,Issue ICR- Material Requisitions for RTU & SCADA Modification,4,P2543-R01-Oct24..1.EN.6.11.1,"HE-IC-0550, HE-IC-0190","HE-IC-0550: FS, HE-IC-0190: FS","HE-IC-2840, HS-GN-0370","HE-IC-2840: FS, HS-GN-0370: FS",2024-01-29 00:00:00,2024-02-02 00:00:00,4
HE-IC-2840,Receive Company Comments- Material Requisitions for RTU & SCADA Modification,9,P2543-R01-Oct24..1.EN.6.11.1,HE-IC-2880,HE-IC-2880: FS,HE-IC-2850,HE-IC-2850: FS,2024-02-26 00:00:00,2024-03-08 00:00:00,11
HE-IC-2850,Re-Issue for Approval- Material Requisitions for RTU & SCADA Modification,16,P2543-R01-Oct24..1.EN.6.11.1,HE-IC-2840,HE-IC-2840: FS,HE-IC-2870,HE-IC-2870: FS,2024-03-10 00:00:00,2024-04-05 00:00:00,26
HE-IC-2870,Obtain Company Approval- Material Requisitions for RTU & SCADA Modification,0,P2543-R01-Oct24..1.EN.6.11.1,HE-IC-2850,HE-IC-2850: FS,HE-IC-2860,HE-IC-2860: FS,2024-04-08 00:00:00,2024-04-12 00:00:00,4
HE-IC-2860,Final Issue for Design/ Construction-Material Requisitions for RTU & SCADA Modification,35,P2543-R01-Oct24..1.EN.6.11.1,HE-IC-2870,HE-IC-2870: FS,HE-IC-2890,HE-IC-2890: FS,2024-06-26 07:30:00,2024-08-14 17:30:00,49
HE-IC-2050,Issue ICR- TBE for MOV,47,P2543-R01-Oct24..1.EN.6.2.6,HP-ME-0310,HP-ME-0310: FS,"HE-IC-2060, HP-ME-0320","HE-IC-2060: FS, HP-ME-0320: SS",2023-11-11 00:00:00,2024-01-19 00:00:00,69
HE-IC-2060,Receive Company Comments- TBE for MOV,5,P2543-R01-Oct24..1.EN.6.2.6,HE-IC-2050,HE-IC-2050: FS,"HP-ME-0320, HE-IC-2070","HP-ME-0320: FF, HE-IC-2070: FS",2024-01-19 00:00:00,2024-01-26 00:00:00,7
HE-IC-2070,Re-Issue for Approval- TBE for MOV,18,P2543-R01-Oct24..1.EN.6.2.6,HE-IC-2060,HE-IC-2060: FS,HE-IC-2080,HE-IC-2080: FS,2024-02-26 00:00:00,2024-03-22 00:00:00,25
HE-IC-2080,Obtain Company Approval- TBE for MOV,4,P2543-R01-Oct24..1.EN.6.2.6,HE-IC-2070,HE-IC-2070: FS,"HE-IC-2090, HP-ME-0320","HE-IC-2090: FS, HP-ME-0320: FF",2024-03-22 00:00:00,2024-03-28 00:00:00,6
HE-IC-2090,Final Issue for Design/ Construction-TBE for MOV,9,P2543-R01-Oct24..1.EN.6.2.6,"HE-IC-2080, HE-IC-1610","HE-IC-2080: FS, HE-IC-1610: FS","ML1219-B29, CAB-4460, HM-ME-0620","ML1219-B29: FF, CAB-4460: FS, HM-ME-0620: FS",2024-04-10 00:00:00,2024-04-25 00:00:00,15
HE-PL-2270,Issue ICR - TBE for Mainline Ball Valve,4,P2543-R01-Oct24..1.EN.6.2.26,HP-ME-1070,HP-ME-1070: FS,"HE-PL-2280, HP-ME-1080","HE-PL-2280: FS, HP-ME-1080: SS",2024-01-05 00:00:00,2024-01-11 00:00:00,6
HE-PL-2280,Receive Company Comments - TBE for Mainline Ball Valve,36,P2543-R01-Oct24..1.EN.6.2.26,HE-PL-2270,HE-PL-2270: FS,HE-PL-2290,HE-PL-2290: FS,2024-01-12 00:00:00,2024-03-04 00:00:00,52
HE-PL-2290,Re-Issue for Approval - TBE for Mainline Ball Valve,27,P2543-R01-Oct24..1.EN.6.2.26,HE-PL-2280,HE-PL-2280: FS,HE-PL-2300,HE-PL-2300: FS,2024-03-05 00:00:00,2024-04-19 00:00:00,45
HE-PL-2300,Obtain Company Approval - TBE for Mainline Ball Valve,6,P2543-R01-Oct24..1.EN.6.2.26,HE-PL-2290,HE-PL-2290: FS,"HE-PL-2310, HP-ME-1080","HE-PL-2310: FS, HP-ME-1080: FF",2024-04-20 00:00:00,2024-04-30 00:00:00,10
HE-IC-2110,Issue ICR-TBE for Metering Skid,44,P2543-R01-Oct24..1.EN.6.2.A30,HP-ME-0010,HP-ME-0010: FS,"HE-IC-2120, HP-ME-0020","HE-IC-2120: FS, HP-ME-0020: SS",2023-11-23 00:00:00,2024-01-26 00:00:00,64
HE-IC-2120,Receive Company Comments-TBE for Metering Skid,9,P2543-R01-Oct24..1.EN.6.2.A30,HE-IC-2110,HE-IC-2110: FS,HE-IC-2130,HE-IC-2130: FS,2024-03-31 00:00:00,2024-04-18 00:00:00,18
HE-IC-2130,Re-Issue for Approval-TBE for Metering Skid,5,P2543-R01-Oct24..1.EN.6.2.A30,HE-IC-2120,HE-IC-2120: FS,HE-IC-2140,HE-IC-2140: FS,2024-04-19 00:00:00,2024-04-26 00:00:00,7
HE-IC-2140,Obtain Company Approval-TBE for Metering Skid,5,P2543-R01-Oct24..1.EN.6.2.A30,HE-IC-2130,HE-IC-2130: FS,"HE-IC-2150, HP-ME-0020","HE-IC-2150: FS, HP-ME-0020: FF",2024-04-19 00:00:00,2024-04-26 00:00:00,7
HE-IC-2150,Final Issue for Design/ Construction-TBE for Metering Skid,5,P2543-R01-Oct24..1.EN.6.2.A30,HE-IC-2140,HE-IC-2140: FS,"CAB-4460, HP-ME-0030","CAB-4460: FS, HP-ME-0030: FF",2024-04-19 00:00:00,2024-04-26 00:00:00,7
HE-IC-2170,Issue ICR-TBE for PRS,37,P2543-R01-Oct24..1.EN.6.2.A33,HP-ME-0060,HP-ME-0060: FS,"HE-IC-2180, HP-ME-0070","HE-IC-2180: FS, HP-ME-0070: SS",2023-11-16 00:00:00,2024-01-10 00:00:00,55
HE-IC-2180,Receive Company Comments-TBE for PRS,9,P2543-R01-Oct24..1.EN.6.2.A33,HE-IC-2170,HE-IC-2170: FS,HE-IC-2190,HE-IC-2190: FS,2024-02-26 00:00:00,2024-03-08 00:00:00,11
HE-IC-2190,Re-Issue for Approval-TBE for PRS,5,P2543-R01-Oct24..1.EN.6.2.A33,HE-IC-2180,HE-IC-2180: FS,HE-IC-2200,HE-IC-2200: FS,2024-04-19 00:00:00,2024-04-26 00:00:00,7
HE-IC-2200,Obtain Company Approval-TBE for PRS,5,P2543-R01-Oct24..1.EN.6.2.A33,HE-IC-2190,HE-IC-2190: FS,"HP-ME-0070, HE-IC-2210, HP-ME-0080","HP-ME-0070: FF, HE-IC-2210: FS, HP-ME-0080: FS",2024-04-19 00:00:00,2024-04-26 00:00:00,7
HE-IC-2210,Final Issue for Design/ Construction-TBE for PRS,5,P2543-R01-Oct24..1.EN.6.2.A33,HE-IC-2200,HE-IC-2200: FS,"CAB-4460, HP-ME-0080","CAB-4460: FS, HP-ME-0080: FF",2024-04-19 00:00:00,2024-04-26 00:00:00,7
HE-IC-2230,Issue ICR-TBE for Leak Detection System,13,P2543-R01-Oct24..1.EN.6.2.A331,HP-ME-0110,HP-ME-0110: FS,"HE-IC-2240, HP-ME-0120","HE-IC-2240: FS, HP-ME-0120: SS",2024-02-26 00:00:00,2024-03-14 00:00:00,17
HE-IC-2240,Receive Company Comments-TBE for Leak Detection System,8,P2543-R01-Oct24..1.EN.6.2.A331,HE-IC-2230,HE-IC-2230: FS,HE-IC-2250,HE-IC-2250: FS,2024-03-15 00:00:00,2024-03-28 00:00:00,13
HE-IC-2250,Re-Issue for Approval-TBE for Leak Detection System,42,P2543-R01-Oct24..1.EN.6.2.A331,HE-IC-2240,HE-IC-2240: FS,HE-IC-2260,HE-IC-2260: FS,2024-03-27 00:00:00,2024-05-31 00:00:00,65
HE-IC-2260,Obtain Company Approval-TBE for Leak Detection System,16,P2543-R01-Oct24..1.EN.6.2.A331,HE-IC-2250,HE-IC-2250: FS,HE-IC-2270,HE-IC-2270: FS,2024-06-03 00:00:00,2024-06-27 17:30:00,24
HE-IC-2270,Final Issue for Design/ Construction-TBE for Leak Detection System,15,P2543-R01-Oct24..1.EN.6.2.A331,HE-IC-2260,HE-IC-2260: FS,CAB-4460,CAB-4460: FS,2024-08-13 07:30:00,2024-09-02 17:30:00,20
HE-IC-2290,Issue ICR- TBE for ROV/ GOV,42,P2543-R01-Oct24..1.EN.6.2.5,HP-ME-0260,HP-ME-0260: FS,"HE-IC-2300, HP-ME-0270","HE-IC-2300: FS, HP-ME-0270: SS",2023-11-11 00:00:00,2024-01-12 00:00:00,62
HE-IC-2300,Receive Company Comments- TBE for ROV/ GOV,2,P2543-R01-Oct24..1.EN.6.2.5,HE-IC-2290,HE-IC-2290: FS,HE-IC-2310,HE-IC-2310: FS,2024-02-14 00:00:00,2024-02-16 00:00:00,2
HE-IC-2310,Re-Issue for Approval- TBE for ROV/ GOV,4,P2543-R01-Oct24..1.EN.6.2.5,HE-IC-2300,HE-IC-2300: FS,HE-IC-2320,HE-IC-2320: FS,2024-02-26 00:00:00,2024-03-01 00:00:00,4
HE-IC-2320,Obtain Company Approval- TBE for ROV/ GOV,9,P2543-R01-Oct24..1.EN.6.2.5,HE-IC-2310,HE-IC-2310: FS,"HP-ME-0280, HE-IC-2330, HP-ME-0270","HP-ME-0280: FS, HE-IC-2330: FS, HP-ME-0270: FF",2024-03-04 00:00:00,2024-03-17 00:00:00,13
HE-IC-2330,Final Issue for Design/ Construction-TBE for ROV/ GOV,9,P2543-R01-Oct24..1.EN.6.2.5,HE-IC-2320,HE-IC-2320: FS,"HM-ME-0510, ML1219-B29, CAB-4460","HM-ME-0510: SS, ML1219-B29: FF, CAB-4460: FS",2024-03-31 00:00:00,2024-04-18 00:00:00,18
HE-IC-2470,Issue ICR- TBE for Junction Boxes,10,P2543-R01-Oct24..1.EN.6.2.8,HP-ME-0810,HP-ME-0810: FS,HE-IC-2480,HE-IC-2480: FS,2024-08-15 07:30:00,2024-08-28 17:30:00,13
HE-IC-2480,Receive Company Comments- TBE for Junction Boxes,9,P2543-R01-Oct24..1.EN.6.2.8,HE-IC-2470,HE-IC-2470: FS,HE-IC-2490,HE-IC-2490: FS,2024-09-02 07:30:00,2024-09-12 17:30:00,10
HE-IC-2490,Re-Issue for Approval- TBE for Junction Boxes,10,P2543-R01-Oct24..1.EN.6.2.8,HE-IC-2480,HE-IC-2480: FS,HE-IC-2500,HE-IC-2500: FS,2024-10-07 07:30:00,2024-10-18 17:30:00,11
HE-IC-2350,Issue ICR- TBE for Gas Detectors,4,P2543-R01-Oct24..1.EN.6.2.10,"HP-ME-0710, HP-ME-0760","HP-ME-0710: FS, HP-ME-0760: FS","HE-IC-2360, HP-ME-0720","HE-IC-2360: FS, HP-ME-0720: SS",2024-05-24 00:00:00,2024-05-30 00:00:00,6
HE-IC-2360,Receive Company Comments- TBE for Gas Detectors,12,P2543-R01-Oct24..1.EN.6.2.10,HE-IC-2350,HE-IC-2350: FS,HE-IC-2370,HE-IC-2370: FS,2024-05-31 00:00:00,2024-06-21 00:00:00,21
HE-IC-2370,Re-Issue for Approval- TBE for Gas Detectors,9,P2543-R01-Oct24..1.EN.6.2.10,HE-IC-2360,HE-IC-2360: FS,HE-IC-2380,HE-IC-2380: FS,2024-06-22 00:00:00,2024-07-04 17:30:00,12
HE-IC-2380,Obtain Company Approval- TBE for Gas Detectors,10,P2543-R01-Oct24..1.EN.6.2.10,HE-IC-2370,HE-IC-2370: FS,HE-IC-2390,HE-IC-2390: FS,2024-07-05 07:30:00,2024-07-19 17:30:00,14
HE-IC-3050,Issue ICR- TBE for  Instrument Cables,10,P2543-R01-Oct24..1.EN.6.2.2,HE-IC-3030,HE-IC-3030: FS 20,HE-IC-3060,HE-IC-3060: FS,2024-07-10 07:30:00,2024-07-23 17:30:00,13
HE-IC-3060,Receive Company Comments- TBE for  Instrument Cables,15,P2543-R01-Oct24..1.EN.6.2.2,HE-IC-3050,HE-IC-3050: FS,HE-IC-3070,HE-IC-3070: FS,2024-07-24 07:30:00,2024-08-13 17:30:00,20
HE-IC-3070,Re-Issue for Approval- TBE for  Instrument Cables,7,P2543-R01-Oct24..1.EN.6.2.2,HE-IC-3060,HE-IC-3060: FS,HE-IC-3080,HE-IC-3080: FS,2024-09-30 07:30:00,2024-10-09 00:00:00,8
HE-IC-3080,Obtain Company Approval- TBE for  Instrument Cables,7,P2543-R01-Oct24..1.EN.6.2.2,HE-IC-3070,HE-IC-3070: FS,HE-IC-3040,HE-IC-3040: FS,2024-10-10 00:00:00,2024-10-18 17:30:00,8
HE-IC-2410,Issue ICR- TBE for Field Instruments / H2S Analyzers,1,P2543-R01-Oct24..1.EN.6.2.3,HP-ME-0760,HP-ME-0760: FS,"HE-IC-2420, HP-ME-0770","HE-IC-2420: FS, HP-ME-0770: SS",2024-04-07 00:00:00,2024-04-12 00:00:00,5
HE-IC-2420,Receive Company Comments- TBE for Field Instruments / H2S Analyzers,23,P2543-R01-Oct24..1.EN.6.2.3,HE-IC-2410,HE-IC-2410: FS,HE-IC-2430,HE-IC-2430: FS,2024-04-13 00:00:00,2024-05-16 00:00:00,33
HE-IC-2430,Re-Issue for Approval- TBE for Field Instruments / H2S Analyzers,10,P2543-R01-Oct24..1.EN.6.2.3,HE-IC-2420,HE-IC-2420: FS,HE-IC-2440,HE-IC-2440: FS,2024-05-17 00:00:00,2024-05-31 00:00:00,14
HE-IC-2440,Obtain Company Approval- TBE for Field Instruments / H2S Analyzers,9,P2543-R01-Oct24..1.EN.6.2.3,HE-IC-2430,HE-IC-2430: FS,"HE-IC-2450, HP-ME-0770, HS-GN-0280, HS-GN-0400","HE-IC-2450: FS, HP-ME-0770: FF, HS-GN-0280: FF, HS-GN-0400: FF",2024-06-03 00:00:00,2024-06-14 00:00:00,11
HE-IC-2450,Final Issue for Design/ Construction-TBE for Field Instruments / H2S Analyzers,72,P2543-R01-Oct24..1.EN.6.2.3,HE-IC-2440,HE-IC-2440: FS,"ML1219-B29, CAB-4460, HM-ME-1520","ML1219-B29: FF, CAB-4460: FS, HM-ME-1520: FF",2024-06-15 00:00:00,2024-10-01 00:00:00,108
HE-PL-2330,Issue ICR- TBE for Pig Signaler,8,P2543-R01-Oct24..1.EN.6.2.54,HP-ME-1120,HP-ME-1120: FS,"HE-PL-2340, HP-ME-1130","HE-PL-2340: FS, HP-ME-1130: SS",2024-05-03 00:00:00,2024-05-15 00:00:00,12
HE-PL-2340,Receive Company Comments- TBE for Pig Signaler,12,P2543-R01-Oct24..1.EN.6.2.54,HE-PL-2330,HE-PL-2330: FS,HE-PL-2350,HE-PL-2350: FS,2024-04-30 00:00:00,2024-05-16 00:00:00,16
HE-PL-2350,Re-Issue for Approval- TBE for Pig Signaler,13,P2543-R01-Oct24..1.EN.6.2.54,HE-PL-2340,HE-PL-2340: FS,HE-PL-2360,HE-PL-2360: FS,2024-05-17 00:00:00,2024-06-05 00:00:00,19
HE-PL-2360,Obtain Company Approval- TBE for Pig Signaler,8,P2543-R01-Oct24..1.EN.6.2.54,HE-PL-2350,HE-PL-2350: FS,"HE-PL-2370, HP-ME-1130","HE-PL-2370: FS, HP-ME-1130: FF",2024-06-06 00:00:00,2024-06-21 00:00:00,15
HE-IC-2900,Issue ICR- TBE for RTU & SCADA Modification,5,P2543-R01-Oct24..1.EN.6.2.1,HS-GN-0370,HS-GN-0370: FS,HE-IC-2910,HE-IC-2910: FS,2024-05-13 00:00:00,2024-05-20 00:00:00,7
HE-IC-2910,Receive Company Comments- TBE for RTU & SCADA Modification,14,P2543-R01-Oct24..1.EN.6.2.1,HE-IC-2900,HE-IC-2900: FS,HE-IC-2920,HE-IC-2920: FS,2024-05-21 00:00:00,2024-06-10 00:00:00,20
HE-IC-2920,Re-Issue for Approval- TBE for RTU & SCADA Modification,3,P2543-R01-Oct24..1.EN.6.2.1,HE-IC-2910,HE-IC-2910: FS,HE-IC-2930,HE-IC-2930: FS,2024-06-11 00:00:00,2024-06-14 00:00:00,3
HE-IC-2930,Obtain Company Approval- TBE for RTU & SCADA Modification,7,P2543-R01-Oct24..1.EN.6.2.1,HE-IC-2920,HE-IC-2920: FS,HE-IC-2890,HE-IC-2890: FS,2024-06-17 07:30:00,2024-06-28 17:30:00,11
HE-EL-1210,Issue ICR - TBE for Active / Passive Shelters,11,P2543-R01-Oct24..1.EN.6.2.29,HP-ME-0560,HP-ME-0560: FS,"HE-EL-1220, HP-ME-0570","HE-EL-1220: FS, HP-ME-0570: SS",2024-05-03 00:00:00,2024-05-20 00:00:00,17
HE-EL-1220,Receive Company Comments - TBE for Active / Passive Shelters,9,P2543-R01-Oct24..1.EN.6.2.29,HE-EL-1210,HE-EL-1210: FS,HE-EL-1230,HE-EL-1230: FS,2024-05-21 00:00:00,2024-06-03 00:00:00,13
HE-EL-1230,Re-Issue for Approval - TBE for Active / Passive Shelters,2,P2543-R01-Oct24..1.EN.6.2.29,HE-EL-1220,HE-EL-1220: FS,HE-EL-1240,HE-EL-1240: FS,2024-06-04 00:00:00,2024-06-06 00:00:00,2
HE-EL-1240,Obtain Company Approval - TBE for Active / Passive Shelters,4,P2543-R01-Oct24..1.EN.6.2.29,HE-EL-1230,HE-EL-1230: FS,"HE-EL-1250, HP-ME-0570","HE-EL-1250: FS, HP-ME-0570: FF",2024-06-07 00:00:00,2024-06-13 00:00:00,6
HE-EL-1250,Final Issue for Design/ Construction-TBE for Active/ Passive Shelters,66,P2543-R01-Oct24..1.EN.6.2.29,"HE-EL-1240, HE-EL-0890","HE-EL-1240: FS, HE-EL-0890: FF",CAB-4420,CAB-4420: FS,2024-06-28 00:00:00,2024-09-30 17:30:00,94
HE-IC-2530,Issue ICR- Instrument location and Cable Routing Drawings,5,P2543-R01-Oct24..1.EN.6.A27,"HE-IC-0790, HE-IC-0550, HE-IC-0490, HE-IC-0250, HE-IC-0190, HE-PR-0110","HE-IC-0790: FS, HE-IC-0550: FS, HE-IC-0490: FS, HE-IC-0250: FS, HE-IC-0190: FS, HE-PR-0110: FS","HE-IC-0910, HE-IC-0970, HE-IC-2540, HE-IC-3090","HE-IC-0910: FS, HE-IC-0970: FS, HE-IC-2540: FS, HE-IC-3090: FS",2024-05-16 00:00:00,2024-05-23 00:00:00,7
HE-IC-2540,Receive Company Comments- Instrument location and Cable Routing Drawings,6,P2543-R01-Oct24..1.EN.6.A27,HE-IC-2530,HE-IC-2530: FS,HE-IC-2550,HE-IC-2550: FS,2024-05-24 00:00:00,2024-06-03 00:00:00,10
HE-IC-2550,Re-Issue for Approval- Instrument location and Cable Routing Drawings,36,P2543-R01-Oct24..1.EN.6.A27,"HE-IC-0810, HE-IC-2540, HE-IC-0570, HE-IC-0210, HE-IC-0270, HE-IC-0790, HE-IC-0250, HE-IC-0190","HE-IC-0810: FS, HE-IC-2540: FS, HE-IC-0570: FS, HE-IC-0210: FS, HE-IC-0270: FS, HE-IC-0790: FS, HE-IC-0250: FS, HE-IC-0190: FS","HE-IC-2560, HE-IC-2610","HE-IC-2560: FS, HE-IC-2610: SS",2024-06-04 00:00:00,2024-07-29 17:30:00,55
HE-IC-2560,Obtain Company Approval- Instrument location and Cable Routing Drawings,11,P2543-R01-Oct24..1.EN.6.A27,HE-IC-2550,HE-IC-2550: FS,HE-IC-2570,HE-IC-2570: FS,2024-09-30 07:30:00,2024-10-14 17:30:00,14
HE-IC-2590,Instrument 1st MTO,6,P2543-R01-Oct24..1.EN.6.A39,HE-IC-0530,HE-IC-0530: FS,"HP-BK-0460, HE-IC-2610","HP-BK-0460: FS, HE-IC-2610: FS",2024-10-08 07:30:00,2024-10-15 17:30:00,7
HE-TL-2490,Issue ICR-Design Basis,10,P2543-R01-Oct24..1.EN.10.56,HE-DB-0030,HE-DB-0030: FS 2,HE-TL-2500,HE-TL-2500: FS,2023-08-20 00:00:00,2023-09-04 00:00:00,15
HE-TL-2500,Receive Company Comments-Design Basis,9,P2543-R01-Oct24..1.EN.10.56,HE-TL-2490,HE-TL-2490: FS,HE-TL-2460,HE-TL-2460: FS,2023-09-05 00:00:00,2023-09-16 00:00:00,11
HE-TL-2460,Re-Issue for Approval-Design Basis,15,P2543-R01-Oct24..1.EN.10.56,HE-TL-2500,HE-TL-2500: FS,HE-TL-2480,HE-TL-2480: FS,2023-09-17 00:00:00,2023-10-09 00:00:00,22
HE-TL-2480,Obtain Company Approval-Design Basis,5,P2543-R01-Oct24..1.EN.10.56,HE-TL-2460,HE-TL-2460: FS,HE-TL-2470,HE-TL-2470: FS,2023-10-10 00:00:00,2023-10-17 00:00:00,7
HE-TL-2470,Final Issue for Design/ Construction-Design Basis,4,P2543-R01-Oct24..1.EN.10.56,HE-TL-2480,HE-TL-2480: FS,"HE-TL-0410, HE-TL-0350, HE-TL-0590, CAB-4470, HE-TL-0830, HE-TL-0470, HE-TL-0530, ML1033-B22, HE-TL-0290, HE-TL-1050, HE-TL-0230","HE-TL-0410: FS, HE-TL-0350: FS, HE-TL-0590: FS, CAB-4470: FS, HE-TL-0830: FS, HE-TL-0470: FS, HE-TL-0530: FS, ML1033-B22: FS, HE-TL-0290: FS, HE-TL-1050: FS, HE-TL-0230: FS",2023-11-07 00:00:00,2023-11-13 00:00:00,6
HE-TL-0080,"Receive Company Comments - Telecom Design Philosophy for LAN, SDH, CCTV, PIDS, IDS",0,P2543-R01-Oct24..1.EN.10.A191,HE-TL-0070,HE-TL-0070: FS,HE-TL-0090,HE-TL-0090: FS,2024-02-26 00:00:00,2024-02-26 00:00:00,1
HE-TL-0090,"Re-Issue for Approval - Telecom Design Philosophy for LAN, SDH, CCTV, PIDS, IDS",0,P2543-R01-Oct24..1.EN.10.A191,HE-TL-0080,HE-TL-0080: FS,"HE-TL-0390, HE-TL-0510, HE-TL-0100, HE-TL-0330, HE-TL-0270, HE-TL-0450, HE-EL-5440, HE-TL-0570","HE-TL-0390: FS, HE-TL-0510: FS, HE-TL-0100: FS, HE-TL-0330: FS, HE-TL-0270: FS, HE-TL-0450: FS, HE-EL-5440: FS, HE-TL-0570: FS",2024-02-26 00:00:00,2024-02-26 00:00:00,1
HE-TL-0100,"Obtain Company Approval - Telecom Design Philosophy for LAN, SDH, CCTV, PIDS, IDS",0,P2543-R01-Oct24..1.EN.10.A191,HE-TL-0090,HE-TL-0090: FS,HE-TL-0110,HE-TL-0110: FS,2024-02-26 00:00:00,2024-02-26 00:00:00,1
HE-TL-0070,"Issue ICR - Telecom Design Philosophy for LAN, SDH, CCTV, PIDS, IDS",0,P2543-R01-Oct24..1.EN.10.A191,"HE-IC-0250, HE-IC-0190","HE-IC-0250: SS, HE-IC-0190: SS","HE-TL-0550, HE-TL-0250, HE-TL-0080, HE-TL-0370, HE-TL-0790, HE-TL-0310, HE-TL-0430, HE-TL-1250","HE-TL-0550: FS, HE-TL-0250: FS, HE-TL-0080: FS, HE-TL-0370: FS, HE-TL-0790: FS, HE-TL-0310: FS, HE-TL-0430: FS, HE-TL-1250: FS",2024-02-26 00:00:00,2024-02-26 00:00:00,1
HE-TL-0110,"Final Issue for Design/ Construction-Telecom Design Philosophy for LAN, SDH, CCTV, PIDS, IDS",0,P2543-R01-Oct24..1.EN.10.A191,"HE-IC-0230, HE-IC-0290, HE-TL-0100","HE-IC-0230: FS, HE-IC-0290: FS, HE-TL-0100: FS","HE-TL-0830, ML1033-B22, CAB-4470, HE-TL-0410, HE-TL-0350, HE-TL-0290, HE-TL-0470, HE-TL-0590, HE-TL-0530, HE-TL-0230","HE-TL-0830: FS, ML1033-B22: FS, CAB-4470: FS, HE-TL-0410: FS, HE-TL-0350: FS, HE-TL-0290: FS, HE-TL-0470: FS, HE-TL-0590: FS, HE-TL-0530: FS, HE-TL-0230: FF",2024-03-10 00:00:00,2024-03-10 00:00:00,1
HE-TL-0190,"Issue ICR- Specification for Telecom systems (CCTV, Telephone, LAN, SDH, PIDS, IDS etc.)",5,P2543-R01-Oct24..1.EN.10.A281,HE-IC-620,HE-IC-620: FS,"HE-TL-0490, HE-TL-0200, HE-TL-0550","HE-TL-0490: FS 20, HE-TL-0200: FS, HE-TL-0550: FS",2023-09-21 00:00:00,2023-09-28 00:00:00,7
HE-TL-0200,"Receive Company Comments- Specification for Telecom systems (CCTV, Telephone, LAN, SDH, PIDS, IDS etc.)",22,P2543-R01-Oct24..1.EN.10.A281,HE-TL-0190,HE-TL-0190: FS,HE-TL-0210,HE-TL-0210: FS,2023-09-29 00:00:00,2023-10-31 00:00:00,32
HE-TL-0210,"Re-Issue for Approval- Specification for Telecom systems (CCTV, Telephone, LAN, SDH, PIDS, IDS etc.)",32,P2543-R01-Oct24..1.EN.10.A281,HE-TL-0200,HE-TL-0200: FS,"HE-TL-0220, HE-TL-0510, HE-TL-0570","HE-TL-0220: FS, HE-TL-0510: FS, HE-TL-0570: FS",2023-12-05 00:00:00,2024-01-19 00:00:00,45
HE-TL-0220,"Obtain Company Approval- Specification for Telecom systems (CCTV, Telephone, LAN, SDH, PIDS, IDS etc.)",7,P2543-R01-Oct24..1.EN.10.A281,HE-TL-0210,HE-TL-0210: FS,HE-TL-0230,HE-TL-0230: FS,2024-01-10 00:00:00,2024-01-19 00:00:00,9
HE-TL-0230,"Final Issue for Design/ Construction-Specification for Telecom systems (CCTV, Telephone, LAN, SDH, PIDS, IDS etc.)",26,P2543-R01-Oct24..1.EN.10.A281,"HE-TL-0220, HE-IC-0230, HE-IC-0290, HE-IC-620, HE-TL-2470, HE-TL-0110","HE-TL-0220: FS, HE-IC-0230: FS, HE-IC-0290: FS, HE-IC-620: SS, HE-TL-2470: FS, HE-TL-0110: FF","CAB-4470, ML1033-B22, HE-TL-0530, HE-TL-1040, HE-TL-980","CAB-4470: FS, ML1033-B22: FS, HE-TL-0530: FS, HE-TL-1040: SS, HE-TL-980: FS",2024-01-05 00:00:00,2024-02-12 00:00:00,38
HE-TL-0250,"Issue ICR- Telecom System (CCTC, Telephone, LAC, SDH, PIDS, IDS, etc.)",7,P2543-R01-Oct24..1.EN.10.A21,"HE-TL-0070, HE-IC-0190, HE-IC-0250","HE-TL-0070: FS, HE-IC-0190: SS, HE-IC-0250: SS","HE-TL-0310, HE-TL-0790, HE-TL-0260, HE-TL-0430","HE-TL-0310: FS, HE-TL-0790: FS, HE-TL-0260: FS, HE-TL-0430: FS",2023-11-14 00:00:00,2023-11-23 00:00:00,9
HE-TL-0260,"Receive Company Comments- Telecom System (CCTC, Telephone, LAC, SDH, PIDS, IDS, etc.)",9,P2543-R01-Oct24..1.EN.10.A21,HE-TL-0250,HE-TL-0250: FS,HE-TL-0270,HE-TL-0270: FS,2023-11-24 00:00:00,2023-12-08 00:00:00,14
HE-TL-0270,"Re-Issue for Approval- Telecom System (CCTC, Telephone, LAC, SDH, PIDS, IDS, etc.)",17,P2543-R01-Oct24..1.EN.10.A21,"HE-TL-0260, HE-TL-0090, HE-PR-0110, HE-IC-0190, HE-IC-0250","HE-TL-0260: FS, HE-TL-0090: FS, HE-PR-0110: FS, HE-IC-0190: SS, HE-IC-0250: SS","HE-TL-0810, HE-TL-0280","HE-TL-0810: FS, HE-TL-0280: FS",2023-12-29 00:00:00,2024-01-24 00:00:00,26
HE-TL-0290,"Final Issue for Design/ Construction-Telecom System (CCTC, Telephone, LAC, SDH, PIDS, IDS, etc.)",20,P2543-R01-Oct24..1.EN.10.A21,"HE-TL-0110, HE-TL-0280, HE-PR-0110, HE-IC-0290, HE-IC-0230, HE-TL-2470, HE-IC-0190, HE-IC-0250","HE-TL-0110: FS, HE-TL-0280: FS, HE-PR-0110: FS, HE-IC-0290: FS, HE-IC-0230: FS, HE-TL-2470: FS, HE-IC-0190: SS, HE-IC-0250: SS","HE-TL-0830, HE-TL-0470, ML1033-B22, CAB-4470, C-56-PL-607-TE-1200, C-56-PL-607-TE-1400, C-56-PL-607-TE-1600, C-56-591-01-TE-1000, C-52-598-06-TE-1000, C-52-598-05-TE-1000, C-52-598-04-TE-1000, C-52-598-03-TE-1000, C-52-598-02-TE-1000, C-52-598-01-TE-1000,","HE-TL-0830: FS, HE-TL-0470: FS, ML1033-B22: FS, CAB-4470: FS, C-56-PL-607-TE-1200: FS, C-56-PL-607-TE-1400: FS, C-56-PL-607-TE-1600: FS, C-56-591-01-TE-1000: FS, C-52-598-06-TE-1000: FS, C-52-598-05-TE-1000: FS, C-52-598-04-TE-1000: FS, C-52-598-03-TE-1000",2024-01-26 00:00:00,2024-02-23 00:00:00,28
HE-TL-0280,"Obtain Company Approval- Telecom System (CCTC, Telephone, LAC, SDH, PIDS, IDS, etc.)",39,P2543-R01-Oct24..1.EN.10.A21,HE-TL-0270,HE-TL-0270: FS,HE-TL-0290,HE-TL-0290: FS,2024-01-15 00:00:00,2024-03-08 00:00:00,53
HE-TL-0310,Issue ICR- Overall Telecom Block Diagram,7,P2543-R01-Oct24..1.EN.10.A211,"HE-TL-0250, HE-TL-0070, HE-IC-0190, HE-IC-0250","HE-TL-0250: FS, HE-TL-0070: FS, HE-IC-0190: SS, HE-IC-0250: SS","HE-TL-0430, HE-TL-0320, HE-TL-0790, HE-TL-940, HE-TL-1000, HE-TL-1200","HE-TL-0430: FS, HE-TL-0320: FS, HE-TL-0790: FS, HE-TL-940: FF, HE-TL-1000: SS 3, HE-TL-1200: FS",2023-11-14 00:00:00,2023-11-23 00:00:00,9
HE-TL-0320,Receive Company Comments- Overall Telecom Block Diagram,17,P2543-R01-Oct24..1.EN.10.A211,HE-TL-0310,HE-TL-0310: FS,HE-TL-0330,HE-TL-0330: FS,2023-11-24 00:00:00,2023-12-20 00:00:00,26
HE-TL-0330,Re-Issue for Approval- Overall Telecom Block Diagram,44,P2543-R01-Oct24..1.EN.10.A211,"HE-TL-0320, HE-TL-0090, HE-PR-0110, HE-IC-0190, HE-IC-0250","HE-TL-0320: FS, HE-TL-0090: FS, HE-PR-0110: FS, HE-IC-0190: SS, HE-IC-0250: SS","HE-TL-0340, HE-TL-0810","HE-TL-0340: FS, HE-TL-0810: FS",2023-12-29 00:00:00,2024-03-01 00:00:00,63
HE-TL-0340,Obtain Company Approval- Overall Telecom Block Diagram,39,P2543-R01-Oct24..1.EN.10.A211,HE-TL-0330,HE-TL-0330: FS,HE-TL-0350,HE-TL-0350: FS,2024-01-15 00:00:00,2024-03-08 00:00:00,53
HE-TL-0350,Final Issue for Design/ Construction-Overall Telecom Block Diagram,31,P2543-R01-Oct24..1.EN.10.A211,"HE-TL-0110, HE-TL-0340, HE-PR-0110, HE-IC-0290, HE-IC-0230, HE-TL-2470, HE-IC-0190, HE-IC-0250","HE-TL-0110: FS, HE-TL-0340: FS, HE-PR-0110: FS, HE-IC-0290: FS, HE-IC-0230: FS, HE-TL-2470: FS, HE-IC-0190: SS, HE-IC-0250: SS","HE-TL-0470, HE-TL-0830, CAB-4470, ML1033-B22, C-56-PL-607-TE-1200, C-56-PL-607-TE-1400, C-56-PL-607-TE-1600, C-56-591-01-TE-1000, C-52-598-06-TE-1000, C-52-598-05-TE-1000, C-52-598-04-TE-1000, C-52-598-03-TE-1000, C-52-598-02-TE-1000, C-52-598-01-TE-1000,","HE-TL-0470: FS, HE-TL-0830: FS, CAB-4470: FS, ML1033-B22: FS, C-56-PL-607-TE-1200: FS, C-56-PL-607-TE-1400: FS, C-56-PL-607-TE-1600: FS, C-56-591-01-TE-1000: FS, C-52-598-06-TE-1000: FS, C-52-598-05-TE-1000: FS, C-52-598-04-TE-1000: FS, C-52-598-03-TE-1000",2024-01-26 00:00:00,2024-03-10 00:00:00,44
HE-TL-1000,Issue ICR- Telecom Inter Connection Diagram,17,P2543-R01-Oct24..1.EN.10.A2112,HE-TL-0310,HE-TL-0310: SS 3,"HE-TL-1010, HE-TL-1050","HE-TL-1010: FS, HE-TL-1050: SS 3",2023-11-17 00:00:00,2023-12-13 00:00:00,26
HE-TL-1010,Receive Company Comments- Telecom Inter Connection Diagram,10,P2543-R01-Oct24..1.EN.10.A2112,HE-TL-1000,HE-TL-1000: FS,HE-TL-1020,HE-TL-1020: FS,2023-12-13 00:00:00,2023-12-27 00:00:00,14
HE-TL-1020,Re-Issue for Approval- Telecom Inter Connection Diagram,9,P2543-R01-Oct24..1.EN.10.A2112,HE-TL-1010,HE-TL-1010: FS,HE-TL-1030,HE-TL-1030: FS,2023-12-27 00:00:00,2024-01-10 00:00:00,14
HE-TL-1030,Obtain Company Approval- Telecom Inter Connection Diagram,10,P2543-R01-Oct24..1.EN.10.A2112,HE-TL-1020,HE-TL-1020: FS,HE-TL-990,HE-TL-990: FS,2024-01-10 00:00:00,2024-01-24 00:00:00,14
HE-TL-990,Final Issue for Design/ Construction-Telecom Inter Connection Diagram,22,P2543-R01-Oct24..1.EN.10.A2112,HE-TL-1030,HE-TL-1030: FS,"HE-TL-1040, C-COM-750","HE-TL-1040: FS, C-COM-750: FS",2024-01-24 00:00:00,2024-02-23 00:00:00,30
HE-TL-1050,Issue ICR- Typical Inter Connection Diagram for Pig Launcher/Receiver,7,P2543-R01-Oct24..1.EN.10.A21121,"HE-TL-1000, HE-TL-2470","HE-TL-1000: SS 3, HE-TL-2470: FS","HE-TL-1060, HE-TL-1100, HE-TL-1150","HE-TL-1060: FS, HE-TL-1100: SS 5, HE-TL-1150: FS",2023-11-19 00:00:00,2023-11-29 00:00:00,10
HE-TL-1060,Receive Company Comments- Typical Inter Connection Diagram for Pig Launcher/Receiver,8,P2543-R01-Oct24..1.EN.10.A21121,HE-TL-1050,HE-TL-1050: FS,HE-TL-1070,HE-TL-1070: FS,2023-11-30 00:00:00,2023-12-13 00:00:00,13
HE-TL-1070,Re-Issue for Approval- Typical Inter Connection Diagram for Pig Launcher/Receiver,9,P2543-R01-Oct24..1.EN.10.A21121,HE-TL-1060,HE-TL-1060: FS,HE-TL-1080,HE-TL-1080: FS,2023-12-14 00:00:00,2023-12-27 00:00:00,13
HE-TL-1080,Obtain Company Approval- Typical Inter Connection Diagram for Pig Launcher/Receiver,8,P2543-R01-Oct24..1.EN.10.A21121,HE-TL-1070,HE-TL-1070: FS,HE-TL-1040,HE-TL-1040: FS,2023-12-28 00:00:00,2024-01-10 00:00:00,13
HE-TL-1040,Final Issue for Design/ Construction-Typical Inter Connection Diagram for Pig Launcher/Receiver,31,P2543-R01-Oct24..1.EN.10.A21121,"HE-TL-1080, HE-TL-990, HE-TL-0230","HE-TL-1080: FS, HE-TL-990: FS, HE-TL-0230: SS","HE-TL-1090, C-COM-750","HE-TL-1090: FS, C-COM-750: FS",2024-01-11 00:00:00,2024-02-23 00:00:00,43
HE-TL-1100,Issue ICR- Fiber Core Allocation Diagram,6,P2543-R01-Oct24..1.EN.10.A211211,HE-TL-1050,HE-TL-1050: SS 5,HE-TL-1110,HE-TL-1110: FS,2024-08-16 07:30:00,2024-08-23 17:30:00,7
HE-TL-1110,Receive Company Comments- Fiber Core Allocation Diagram,21,P2543-R01-Oct24..1.EN.10.A211211,HE-TL-1100,HE-TL-1100: FS,HE-TL-1120,HE-TL-1120: FS,2024-08-26 07:30:00,2024-09-23 17:30:00,28
HE-TL-1150,Issue ICR- Optical Power Link Loss Calculation For SDH / FOC System,8,P2543-R01-Oct24..1.EN.10.A2112111,HE-TL-1050,HE-TL-1050: FS,HE-TL-1160,HE-TL-1160: FS,2024-01-08 00:00:00,2024-01-18 00:00:00,10
HE-TL-1160,Receive Company Comments- Optical Power Link Loss Calculation For SDH / FOC System,16,P2543-R01-Oct24..1.EN.10.A2112111,HE-TL-1150,HE-TL-1150: FS,HE-TL-1170,HE-TL-1170: FS,2024-01-19 00:00:00,2024-02-12 00:00:00,24
HE-TL-1170,Re-Issue for Approval- Optical Power Link Loss Calculation For SDH / FOC System,8,P2543-R01-Oct24..1.EN.10.A2112111,HE-TL-1160,HE-TL-1160: FS,HE-TL-1180,HE-TL-1180: FS,2024-02-13 00:00:00,2024-02-23 00:00:00,10
HE-TL-1180,Obtain Company Approval- Optical Power Link Loss Calculation For SDH / FOC System,8,P2543-R01-Oct24..1.EN.10.A2112111,HE-TL-1170,HE-TL-1170: FS,HE-TL-1140,HE-TL-1140: FS,2024-02-24 00:00:00,2024-03-07 00:00:00,12
HE-TL-1200,Issue ICR- Overall Telecom Block Diagram,9,P2543-R01-Oct24..1.EN.10.A21121111,HE-TL-0310,HE-TL-0310: FS,HE-TL-1210,HE-TL-1210: FS,2023-09-09 00:00:00,2023-09-22 00:00:00,13
HE-TL-1210,Receive Company Comments- Overall Telecom Block Diagram,10,P2543-R01-Oct24..1.EN.10.A21121111,HE-TL-1200,HE-TL-1200: FS,HE-TL-1220,HE-TL-1220: FS,2023-09-23 00:00:00,2023-10-09 00:00:00,16
HE-TL-1220,Re-Issue for Approval- Overall Telecom Block Diagram,18,P2543-R01-Oct24..1.EN.10.A21121111,HE-TL-1210,HE-TL-1210: FS,HE-TL-1230,HE-TL-1230: FS,2023-10-10 00:00:00,2023-11-03 00:00:00,24
HE-TL-1230,Obtain Company Approval- Overall Telecom Block Diagram,6,P2543-R01-Oct24..1.EN.10.A21121111,HE-TL-1220,HE-TL-1220: FS,HE-TL-1190,HE-TL-1190: FS,2023-11-06 00:00:00,2023-11-14 00:00:00,8
HE-TL-1190,Final Issue for Design/ Construction-Overall Telecom Block Diagram,23,P2543-R01-Oct24..1.EN.10.A21121111,HE-TL-1230,HE-TL-1230: FS,"HE-TL-1140, C-COM-750","HE-TL-1140: FS, C-COM-750: FS",2023-12-02 00:00:00,2024-01-05 00:00:00,34
HE-TL-1250,Issue ICR- Overall Telecom Block Diagram,6,P2543-R01-Oct24..1.EN.10.A211211111,HE-TL-0070,HE-TL-0070: FS,HE-TL-1260,HE-TL-1260: FS,2023-11-16 00:00:00,2023-11-24 00:00:00,8
HE-TL-1260,Receive Company Comments- Overall Telecom Block Diagram,11,P2543-R01-Oct24..1.EN.10.A211211111,HE-TL-1250,HE-TL-1250: FS,HE-TL-1270,HE-TL-1270: FS,2023-11-24 07:30:00,2023-12-12 07:30:00,18
HE-TL-1280,Obtain Company Approval- Overall Telecom Block Diagram,7,P2543-R01-Oct24..1.EN.10.A211211111,HE-TL-1270,HE-TL-1270: FS,HE-TL-1240,HE-TL-1240: FS,2023-12-13 07:30:00,2023-12-22 07:30:00,9
HE-TL-1270,Re-Issue for Approval- Overall Telecom Block Diagram,8,P2543-R01-Oct24..1.EN.10.A211211111,HE-TL-1260,HE-TL-1260: FS,HE-TL-1280,HE-TL-1280: FS,2023-12-23 07:30:00,2024-01-05 07:30:00,13
HE-TL-1240,Final Issue for Design/ Construction-Overall Telecom Block Diagram,20,P2543-R01-Oct24..1.EN.10.A211211111,HE-TL-1280,HE-TL-1280: FS,HE-TL-1140,HE-TL-1140: FS,2024-01-06 07:30:00,2024-02-04 07:30:00,29
HE-TL-940,Issue ICR- Telecom Equipment List,23,P2543-R01-Oct24..1.EN.10.A321,HE-TL-0310,HE-TL-0310: FF,HE-TL-950,HE-TL-950: FS,2023-11-21 00:00:00,2023-12-25 00:00:00,34
HE-TL-950,Receive Company Comments- Telecom Equipment List,14,P2543-R01-Oct24..1.EN.10.A321,HE-TL-940,HE-TL-940: FS,HE-TL-960,HE-TL-960: FS,2023-12-25 00:00:00,2024-01-15 00:00:00,21
HE-TL-960,Re-Issue for Approval-Telecom Equipment List,2,P2543-R01-Oct24..1.EN.10.A321,HE-TL-950,HE-TL-950: FS,HE-TL-970,HE-TL-970: FS,2024-01-19 00:00:00,2024-01-23 00:00:00,4
HE-TL-970,Obtain Company Approval- Telecom Equipment List,2,P2543-R01-Oct24..1.EN.10.A321,HE-TL-960,HE-TL-960: FS,HE-TL-980,HE-TL-980: FS,2024-01-19 00:00:00,2024-01-23 00:00:00,4
HE-TL-980,Final Issue for Design/ Construction-Telecom Equipment List,14,P2543-R01-Oct24..1.EN.10.A321,"HE-TL-970, HE-TL-0230","HE-TL-970: FS, HE-TL-0230: FS","HE-TL-0470, HE-TL-0610","HE-TL-0470: FS, HE-TL-0610: FS",2024-01-23 00:00:00,2024-02-12 00:00:00,20
HE-TL-0370,Issue ICR- Telecom Tie-in Block Diagram,47,P2543-R01-Oct24..1.EN.10.A2111,"HE-TL-0070, HE-IC-0190, HE-IC-0250","HE-TL-0070: FS, HE-IC-0190: SS, HE-IC-0250: SS","HE-TL-0790, HE-TL-0430, HE-TL-0380","HE-TL-0790: FS, HE-TL-0430: FS, HE-TL-0380: FS",2023-10-20 00:00:00,2023-12-27 00:00:00,68
HE-TL-0380,Receive Company Comments- Telecom Tie-in Block Diagram,7,P2543-R01-Oct24..1.EN.10.A2111,HE-TL-0370,HE-TL-0370: FS,HE-TL-0390,HE-TL-0390: FS,2024-01-16 00:00:00,2024-01-25 00:00:00,9
HE-TL-0390,Re-Issue for Approval- Telecom Tie-in Block Diagram,21,P2543-R01-Oct24..1.EN.10.A2111,"HE-TL-0090, HE-TL-0380, HE-IC-0510, HE-PR-0110, HE-IC-0190, HE-IC-0250","HE-TL-0090: FS, HE-TL-0380: FS, HE-IC-0510: FS, HE-PR-0110: FS, HE-IC-0190: SS, HE-IC-0250: SS","HE-TL-0400, HE-TL-0810","HE-TL-0400: FS, HE-TL-0810: FS",2024-01-26 00:00:00,2024-02-26 00:00:00,31
HE-TL-0400,Obtain Company Approval- Telecom Tie-in Block Diagram,9,P2543-R01-Oct24..1.EN.10.A2111,HE-TL-0390,HE-TL-0390: FS,HE-TL-0410,HE-TL-0410: FS,2024-02-26 00:00:00,2024-03-08 00:00:00,11
HE-TL-0410,Final Issue for Design/ Construction-Telecom Tie-in Block Diagram,9,P2543-R01-Oct24..1.EN.10.A2111,"HE-TL-0110, HE-TL-0400, HE-PR-0110, HE-IC-0290, HE-IC-0230, HE-TL-2470, HE-IC-0190, HE-IC-0250","HE-TL-0110: FS, HE-TL-0400: FS, HE-PR-0110: FS, HE-IC-0290: FS, HE-IC-0230: FS, HE-TL-2470: FS, HE-IC-0190: SS, HE-IC-0250: SS","CAB-4470, HE-TL-0470, ML1033-B22, HE-TL-0830, C-56-PL-607-TE-1200, C-56-PL-607-TE-1400, C-56-PL-607-TE-1600, C-56-591-01-TE-1000, C-52-598-06-TE-1000, C-52-598-05-TE-1000, C-52-598-04-TE-1000, C-52-598-03-TE-1000, C-52-598-02-TE-1000, C-52-598-01-TE-1000,","CAB-4470: FS, HE-TL-0470: FS, ML1033-B22: FS, HE-TL-0830: FS, C-56-PL-607-TE-1200: FS, C-56-PL-607-TE-1400: FS, C-56-PL-607-TE-1600: FS, C-56-591-01-TE-1000: FS, C-52-598-06-TE-1000: FS, C-52-598-05-TE-1000: FS, C-52-598-04-TE-1000: FS, C-52-598-03-TE-1000",2024-03-10 00:00:00,2024-03-25 00:00:00,15
HE-TL-0430,Issue ICR- FOC Block diagram (Telecom),6,P2543-R01-Oct24..1.EN.10.A25,"HE-TL-0310, HE-TL-0370, HE-TL-0250, HE-TL-0070, HE-IC-0190, HE-IC-0250","HE-TL-0310: FS, HE-TL-0370: FS, HE-TL-0250: FS, HE-TL-0070: FS, HE-IC-0190: SS, HE-IC-0250: SS","HE-TL-0730, HE-TL-0670, HE-TL-0550, HE-TL-0440, HE-TL-0790","HE-TL-0730: FS, HE-TL-0670: FS, HE-TL-0550: FS 9, HE-TL-0440: FS, HE-TL-0790: FS",2023-11-08 00:00:00,2023-11-16 00:00:00,8
HE-TL-0440,Receive Company Comments- FOC Block diagram (Telecom),4,P2543-R01-Oct24..1.EN.10.A25,HE-TL-0430,HE-TL-0430: FS,HE-TL-0450,HE-TL-0450: FS,2023-11-17 00:00:00,2023-11-23 00:00:00,6
HE-TL-0450,Re-Issue for Approval- FOC Block diagram (Telecom),25,P2543-R01-Oct24..1.EN.10.A25,"HE-TL-0440, HE-IC-0510, HE-IC-0270, HE-IC-0210, HE-TL-0090, HE-PR-0110, HE-IC-0190, HE-IC-0250","HE-TL-0440: FS, HE-IC-0510: FS, HE-IC-0270: FS, HE-IC-0210: FS, HE-TL-0090: FS, HE-PR-0110: FS, HE-IC-0190: SS, HE-IC-0250: SS","HE-TL-0460, HE-TL-0510, HE-TL-0690, HE-IC-0930, HE-TL-0570, HE-IC-0990, HE-TL-0750","HE-TL-0460: FS, HE-TL-0510: FS, HE-TL-0690: FS, HE-IC-0930: FS, HE-TL-0570: FS, HE-IC-0990: FS, HE-TL-0750: FS",2023-11-24 00:00:00,2023-12-30 00:00:00,36
HE-TL-0460,Obtain Company Approval- FOC Block diagram (Telecom),9,P2543-R01-Oct24..1.EN.10.A25,HE-TL-0450,HE-TL-0450: FS,HE-TL-0470,HE-TL-0470: FS,2023-12-31 00:00:00,2024-01-15 00:00:00,15
HE-TL-0470,Final Issue for Design/ Construction-FOC Block diagram (Telecom),49,P2543-R01-Oct24..1.EN.10.A25,"HE-TL-0350, HE-TL-0460, HE-TL-0410, HE-TL-0290, HE-TL-0110, HE-PR-0110, HE-IC-0290, HE-IC-0230, HE-TL-2470, HE-IC-0190, HE-IC-0250, HE-TL-980","HE-TL-0350: FS, HE-TL-0460: FS, HE-TL-0410: FS, HE-TL-0290: FS, HE-TL-0110: FS, HE-PR-0110: FS, HE-IC-0290: FS, HE-IC-0230: FS, HE-TL-2470: FS, HE-IC-0190: SS, HE-IC-0250: SS, HE-TL-980: FS","ML1030, HE-TL-0590, HE-TL-0770, CAB-4470, HE-TL-0710, HE-TL-0530, HE-TL-0830, ML1033-B22, C-56-PL-607-TE-1200, C-56-PL-607-TE-1400, C-56-PL-607-TE-1600, C-56-EB2-TE-1000, C-56-HC01-PL-TE-8200, C-56-HC01-PL-TE-8400, C-56-PR-838-TE-1000, C-56-591-01-TE-1000,","ML1030: FS, HE-TL-0590: FS, HE-TL-0770: FS, CAB-4470: FS, HE-TL-0710: FS, HE-TL-0530: FS, HE-TL-0830: FS, ML1033-B22: FS, C-56-PL-607-TE-1200: FS, C-56-PL-607-TE-1400: FS, C-56-PL-607-TE-1600: FS, C-56-EB2-TE-1000: FS, C-56-HC01-PL-TE-8200: FS, C-56-HC01-P",2024-01-16 00:00:00,2024-03-26 00:00:00,70
HE-TL-0490,"Issue ICR- Datasheets for Telecom System (CCTV, Telephone, LAN, SDH, PIDS, IDS etc.)",6,P2543-R01-Oct24..1.EN.10.1,HE-TL-0190,HE-TL-0190: FS 20,"HP-ME-0660, HP-ME-0610, HE-TL-0500, HE-TL-0550","HP-ME-0660: FS, HP-ME-0610: FS, HE-TL-0500: FS, HE-TL-0550: FS",2023-11-13 00:00:00,2023-11-21 00:00:00,8
HE-TL-0500,"Receive Company Comments- Datasheets for Telecom System (CCTV, Telephone, LAN, SDH, PIDS, IDS etc.)",19,P2543-R01-Oct24..1.EN.10.1,HE-TL-0490,HE-TL-0490: FS,HE-TL-0510,HE-TL-0510: FS,2023-11-22 00:00:00,2023-12-20 00:00:00,28
HE-TL-0510,"Re-Issue for Approval- Datasheets for Telecom System (CCTV, Telephone, LAN, SDH, PIDS, IDS etc.)",5,P2543-R01-Oct24..1.EN.10.1,"HE-TL-0500, HE-TL-0450, HE-TL-0090, HE-TL-0210, HE-IC-0190, HE-IC-0250, HE-IC-620","HE-TL-0500: FS, HE-TL-0450: FS, HE-TL-0090: FS, HE-TL-0210: FS, HE-IC-0190: SS, HE-IC-0250: SS, HE-IC-620: SS",HE-TL-0520,HE-TL-0520: FS,2023-12-29 00:00:00,2024-01-08 00:00:00,10
HE-TL-0520,"Obtain Company Approval- Datasheets for Telecom System (CCTV, Telephone, LAN, SDH, PIDS, IDS etc.)",7,P2543-R01-Oct24..1.EN.10.1,HE-TL-0510,HE-TL-0510: FS,HE-TL-0530,HE-TL-0530: FS,2024-01-08 00:00:00,2024-01-17 00:00:00,9
HE-TL-0550,"Issue ICR- Material Requisitions for Telecom System (CCTV, Telephone, LAN, SDH, PIDS, IDS etc.)",5,P2543-R01-Oct24..1.EN.10.8,"HE-TL-0070, HE-TL-0430, HE-TL-0190, HE-TL-0490, HE-IC-0190, HE-IC-0250, HE-IC-620","HE-TL-0070: FS, HE-TL-0430: FS 9, HE-TL-0190: FS, HE-TL-0490: FS, HE-IC-0190: SS, HE-IC-0250: SS, HE-IC-620: SS","HP-ME-0660, HP-ME-0610, HE-TL-0560, HP-BK-0060, HE-TL-0790","HP-ME-0660: FS, HP-ME-0610: FS, HE-TL-0560: FS, HP-BK-0060: FS, HE-TL-0790: FS",2023-11-14 00:00:00,2023-11-21 00:00:00,7
HE-TL-0560,"Receive Company Comments- Material Requisitions for Telecom System (CCTV, Telephone, LAN, SDH, PIDS, IDS etc.)",3,P2543-R01-Oct24..1.EN.10.8,HE-TL-0550,HE-TL-0550: FS,HE-TL-0570,HE-TL-0570: FS,2023-11-22 00:00:00,2023-11-27 00:00:00,5
HE-TL-0570,"Re-Issue for Approval- Material Requisitions for Telecom System (CCTV, Telephone, LAN, SDH, PIDS, IDS etc.)",5,P2543-R01-Oct24..1.EN.10.8,"HE-TL-0560, HE-TL-0450, HE-TL-0210, HE-TL-0090, HE-IC-0190, HE-IC-0250, HE-IC-620","HE-TL-0560: FS, HE-TL-0450: FS, HE-TL-0210: FS, HE-TL-0090: FS, HE-IC-0190: SS, HE-IC-0250: SS, HE-IC-620: SS",HE-TL-0580,HE-TL-0580: FS,2024-05-24 00:00:00,2024-05-31 00:00:00,7
HE-TL-0580,"Obtain Company Approval- Material Requisitions for Telecom System (CCTV, Telephone, LAN, SDH, PIDS, IDS etc.)",4,P2543-R01-Oct24..1.EN.10.8,HE-TL-0570,HE-TL-0570: FS,HE-TL-0590,HE-TL-0590: FS,2024-06-03 00:00:00,2024-06-07 00:00:00,4
HE-TL-0610,"Issue ICR-TBE for Telecom System (CCTV, Telephone, LAN, SDH, PIDS, IDS etc.)",3,P2543-R01-Oct24..1.EN.10.11,"HP-ME-0660, HP-ME-0610, HP-BK-0060, HE-TL-980","HP-ME-0660: FS, HP-ME-0610: FS, HP-BK-0060: FS, HE-TL-980: FS","HE-TL-0620, HP-ME-0620, HP-ME-0670","HE-TL-0620: FS, HP-ME-0620: SS, HP-ME-0670: SS",2024-03-10 00:00:00,2024-03-14 00:00:00,4
HE-TL-0620,"Receive Company Comments-TBE for Telecom System (CCTV, Telephone, LAN, SDH, PIDS, IDS etc.)",7,P2543-R01-Oct24..1.EN.10.11,HE-TL-0610,HE-TL-0610: FS,HE-TL-0630,HE-TL-0630: FS,2024-03-15 00:00:00,2024-03-27 00:00:00,12
HE-TL-0630,"Re-Issue for Approval-TBE for Telecom System (CCTV, Telephone, LAN, SDH, PIDS, IDS etc.)",7,P2543-R01-Oct24..1.EN.10.11,HE-TL-0620,HE-TL-0620: FS,"HE-TL-0640, HE-TL-910","HE-TL-0640: FS, HE-TL-910: FS",2024-05-29 00:00:00,2024-06-07 00:00:00,9
HE-TL-0640,"Obtain Company Approval-TBE for Telecom System (CCTV, Telephone, LAN, SDH, PIDS, IDS etc.)",10,P2543-R01-Oct24..1.EN.10.11,HE-TL-0630,HE-TL-0630: FS,HE-TL-0650,HE-TL-0650: FS,2024-06-10 00:00:00,2024-06-26 17:30:00,16
HE-TL-0670,Issue ICR-Telecom Location and Cable Routing layout,5,P2543-R01-Oct24..1.EN.10.A29,"HE-TL-0430, ML2069-B09","HE-TL-0430: FS, ML2069-B09: FS","HE-TL-0680, HE-TL-0730","HE-TL-0680: FS, HE-TL-0730: FS",2024-03-31 00:00:00,2024-04-12 00:00:00,12
HE-TL-0680,Receive Company Comments-Telecom Location and Cable Routing layout,10,P2543-R01-Oct24..1.EN.10.A29,HE-TL-0670,HE-TL-0670: FS,HE-TL-0690,HE-TL-0690: FS,2024-04-12 00:00:00,2024-04-26 00:00:00,14
HE-TL-0690,Re-Issue for Approval-Telecom Location and Cable Routing layout,1,P2543-R01-Oct24..1.EN.10.A29,"HE-TL-0450, HE-TL-0680","HE-TL-0450: FS, HE-TL-0680: FS","HE-TL-0810, HE-TL-0870, HE-TL-0700, HE-TL-910","HE-TL-0810: SS, HE-TL-0870: SS, HE-TL-0700: FS, HE-TL-910: SS",2024-04-30 00:00:00,2024-05-01 00:00:00,1
HE-TL-0700,Obtain Company Approval-Telecom Location and Cable Routing layout,7,P2543-R01-Oct24..1.EN.10.A29,HE-TL-0690,HE-TL-0690: FS,HE-TL-0710,HE-TL-0710: FS,2024-05-01 00:00:00,2024-05-10 00:00:00,9
HE-TL-0710,Final Issue for Design/ Construction-Telecom Location and Cable Routing layout,28,P2543-R01-Oct24..1.EN.10.A29,"HE-TL-0470, HE-TL-0700","HE-TL-0470: FS, HE-TL-0700: FS","ML1030, ML1032-B21, HE-TL-0830, CAB-4470, HE-TL-0890, HE-TL-930, HE-CO-200, C-56-PL-607-TE-1200, C-56-PL-607-TE-1400, C-56-PL-607-TE-1600, C-56-EB2-TE-1000, C-56-HC01-PL-TE-8200, C-56-HC01-PL-TE-8400, C-56-PR-838-TE-1000, C-56-591-01-TE-1000, C-52-HG01-PL-","ML1030: FS, ML1032-B21: FS, HE-TL-0830: SS, CAB-4470: FS, HE-TL-0890: FS, HE-TL-930: FS, HE-CO-200: FS, C-56-PL-607-TE-1200: FS, C-56-PL-607-TE-1400: FS, C-56-PL-607-TE-1600: FS, C-56-EB2-TE-1000: FS, C-56-HC01-PL-TE-8200: FS, C-56-HC01-PL-TE-8400: FS, C-5",2024-05-10 00:00:00,2024-06-23 17:30:00,44
HE-TL-0730,Issue ICR-Telecom Equipment Layout,5,P2543-R01-Oct24..1.EN.10.A291,"HE-TL-0430, HE-TL-0670","HE-TL-0430: FS, HE-TL-0670: FS","HE-TL-0740, HE-TL-0790","HE-TL-0740: FS, HE-TL-0790: FS",2024-06-10 00:00:00,2024-06-17 00:00:00,7
HE-TL-0740,Receive Company Comments-Telecom Equipment Layout,0,P2543-R01-Oct24..1.EN.10.A291,HE-TL-0730,HE-TL-0730: FS,HE-TL-0750,HE-TL-0750: FS,2024-06-18 00:00:00,2024-06-20 00:00:00,2
HE-TL-0750,Re-Issue for Approval-Telecom Equipment Layout,1,P2543-R01-Oct24..1.EN.10.A291,"HE-TL-0740, HE-TL-0450","HE-TL-0740: FS, HE-TL-0450: FS","HE-TL-0870, HE-TL-0760, HE-TL-0810, HE-TL-910","HE-TL-0870: SS, HE-TL-0760: FS, HE-TL-0810: SS, HE-TL-910: SS",2024-06-20 00:00:00,2024-06-21 00:00:00,1
HE-TL-0760,Obtain Company Approval-Telecom Equipment Layout,1,P2543-R01-Oct24..1.EN.10.A291,HE-TL-0750,HE-TL-0750: FS,HE-TL-0770,HE-TL-0770: FS,2024-06-21 00:00:00,2024-06-24 00:00:00,3
HE-TL-0770,Final Issue for Design/ Construction-Telecom Equipment Layout,6,P2543-R01-Oct24..1.EN.10.A291,"HE-TL-0470, HE-TL-0760","HE-TL-0470: FS, HE-TL-0760: FS","ML1030, HE-TL-0890, CAB-4470, ML1032-B21, HE-TL-0830, HE-TL-930, HE-CO-200, C-56-PL-607-TE-1200, C-56-PL-607-TE-1400, C-56-PL-607-TE-1600, C-56-EB2-TE-1000, C-56-HC01-PL-TE-8200, C-56-HC01-PL-TE-8400, C-56-PR-838-TE-1000, C-56-591-01-TE-1000, C-52-HG01-PL-","ML1030: FS, HE-TL-0890: FS, CAB-4470: FS, ML1032-B21: FS, HE-TL-0830: SS, HE-TL-930: FS, HE-CO-200: FS, C-56-PL-607-TE-1200: FS, C-56-PL-607-TE-1400: FS, C-56-PL-607-TE-1600: FS, C-56-EB2-TE-1000: FS, C-56-HC01-PL-TE-8200: FS, C-56-HC01-PL-TE-8400: FS, C-5",2024-06-24 07:30:00,2024-07-01 17:30:00,7
HE-TL-0790,Issue ICR- Telecom Cable Schedule,6,P2543-R01-Oct24..1.EN.10.A32,"HE-TL-0370, HE-TL-0250, HE-TL-0310, HE-TL-0070, HE-TL-0430, HE-IC-0190, HE-IC-0250, HE-TL-0550, HE-TL-0730","HE-TL-0370: FS, HE-TL-0250: FS, HE-TL-0310: FS, HE-TL-0070: FS, HE-TL-0430: FS, HE-IC-0190: SS, HE-IC-0250: SS, HE-TL-0550: FS, HE-TL-0730: FS","HE-TL-0800, HE-TL-890","HE-TL-0800: FS, HE-TL-890: FS",2024-06-07 07:30:00,2024-06-14 17:30:00,7
HE-TL-0800,Receive Company Comments- Telecom Cable Schedule,1,P2543-R01-Oct24..1.EN.10.A32,HE-TL-0790,HE-TL-0790: FS,HE-TL-0810,HE-TL-0810: FS,2024-06-14 07:30:00,2024-06-18 00:00:00,3
HE-TL-0810,Re-Issue for Approval- Telecom Cable Schedule,2,P2543-R01-Oct24..1.EN.10.A32,"HE-TL-0270, HE-TL-0690, HE-TL-0330, HE-TL-0750, HE-TL-0800, HE-TL-0390","HE-TL-0270: FS, HE-TL-0690: SS, HE-TL-0330: FS, HE-TL-0750: SS, HE-TL-0800: FS, HE-TL-0390: FS","HE-TL-0870, HE-TL-0820, HE-TL-910","HE-TL-0870: SS, HE-TL-0820: FS, HE-TL-910: SS",2024-06-18 07:30:00,2024-06-21 17:30:00,3
HE-TL-0820,Obtain Company Approval- Telecom Cable Schedule,5,P2543-R01-Oct24..1.EN.10.A32,HE-TL-0810,HE-TL-0810: FS,HE-TL-0830,HE-TL-0830: FS,2024-06-22 07:30:00,2024-06-28 17:30:00,6
HE-TL-0830,Final Issue for Design/ Construction-Telecom cable schedule,9,P2543-R01-Oct24..1.EN.10.A32,"HE-TL-0110, HE-TL-0710, HE-TL-0350, HE-TL-0290, HE-TL-0410, HE-TL-0770, HE-TL-0470, HE-TL-0820, HE-IC-0290, HE-IC-0230, HE-TL-2470, HE-IC-0190, HE-IC-0250","HE-TL-0110: FS, HE-TL-0710: SS, HE-TL-0350: FS, HE-TL-0290: FS, HE-TL-0410: FS, HE-TL-0770: SS, HE-TL-0470: FS, HE-TL-0820: FS, HE-IC-0290: FS, HE-IC-0230: FS, HE-TL-2470: FS, HE-IC-0190: SS, HE-IC-0250: SS","ML1030, HE-TL-0890, ML1032-B21, CAB-4470, HE-TL-930, HE-TL-0870, C-56-PL-607-TE-1200, C-56-PL-607-TE-1400, C-56-PL-607-TE-1600, C-56-EB2-TE-1000, C-56-HC01-PL-TE-8200, C-56-HC01-PL-TE-8400, C-56-PR-838-TE-1000, C-56-591-01-TE-1000, C-52-HG01-PL-TE-8200, C-","ML1030: FS, HE-TL-0890: FS, ML1032-B21: FS, CAB-4470: FS, HE-TL-930: FS, HE-TL-0870: FS, C-56-PL-607-TE-1200: FS, C-56-PL-607-TE-1400: FS, C-56-PL-607-TE-1600: FS, C-56-EB2-TE-1000: FS, C-56-HC01-PL-TE-8200: FS, C-56-HC01-PL-TE-8400: FS, C-56-PR-838-TE-100",2024-06-29 07:30:00,2024-07-12 17:30:00,13
HE-TL-0850,Telecom 1st MTO,10,P2543-R01-Oct24..1.EN.10.2,ML2059-B05,ML2059-B05: FS,"HP-BK-0500, HE-TL-0870","HP-BK-0500: FS, HE-TL-0870: FS",2024-10-01 07:30:00,2024-10-14 17:30:00,13
HE-TL-890,Issue ICR-Telecom Typical Hookup,25,P2543-R01-Oct24..1.EN.10.3,HE-TL-0790,HE-TL-0790: FS,HE-TL-900,HE-TL-900: FS,2024-08-12 07:30:00,2024-09-13 17:30:00,32
HE-TL-900,Receive Company Comments-Telecom Typical Hookup,8,P2543-R01-Oct24..1.EN.10.3,HE-TL-890,HE-TL-890: FS,HE-TL-910,HE-TL-910: FS,2024-09-16 07:30:00,2024-09-25 17:30:00,9
HE-TL-910,Re-Issue for Approval-Telecom Typical Hookup,21,P2543-R01-Oct24..1.EN.10.3,"HE-TL-0810, HE-TL-0750, HE-TL-900, HE-TL-0690, HE-TL-0630","HE-TL-0810: SS, HE-TL-0750: SS, HE-TL-900: FS, HE-TL-0690: SS, HE-TL-0630: FS",HE-TL-920,HE-TL-920: FS,2024-09-26 00:00:00,2024-10-25 07:30:00,29
HE-HS-0010,Issue ICR-HSE Plan,6,P2543-R01-Oct24..1.EN.4.4,HE-DB-0010,HE-DB-0010: SS,"HE-HS-0020, HE-HS-0070, HS-GN-0070, HE-WS-0050","HE-HS-0020: FS, HE-HS-0070: SS, HS-GN-0070: SS, HE-WS-0050: FS",2023-08-20 00:00:00,2023-08-29 00:00:00,9
HE-HS-0020,Receive Company Comments-HSE Plan,11,P2543-R01-Oct24..1.EN.4.4,HE-HS-0010,HE-HS-0010: FS,HE-HS-0030,HE-HS-0030: FS,2023-09-01 00:00:00,2023-09-17 00:00:00,16
HE-HS-0030,Re-Issue for Approval-HSE Plan,15,P2543-R01-Oct24..1.EN.4.4,HE-HS-0020,HE-HS-0020: FS,HE-HS-0040,HE-HS-0040: FS,2023-09-18 00:00:00,2023-10-09 00:00:00,21
HE-HS-0040,Obtain Company Approval-HSE Plan,11,P2543-R01-Oct24..1.EN.4.4,HE-HS-0030,HE-HS-0030: FS,HE-HS-0050,HE-HS-0050: FS,2023-10-10 00:00:00,2023-10-25 00:00:00,15
HE-HS-0050,Final Issue for Design/ Construction-Project HSE Plan,6,P2543-R01-Oct24..1.EN.4.4,HE-HS-0040,HE-HS-0040: FS,"CAB-4410, ML1001-A01, HE-HS-0110","CAB-4410: FS, ML1001-A01: FS, HE-HS-0110: FF",2023-11-14 00:00:00,2023-11-22 00:00:00,8
HE-HS-0070,Issue ICR-HSE Philosophy,17,P2543-R01-Oct24..1.EN.4.3,HE-HS-0010,HE-HS-0010: SS,"HE-HS-0130, HS-GN-0070, HE-HS-0080, HE-WS-0050, HE-HS-0310","HE-HS-0130: FS, HS-GN-0070: SS, HE-HS-0080: FS, HE-WS-0050: FS, HE-HS-0310: FS",2023-08-24 00:00:00,2023-09-18 00:00:00,25
HE-HS-0080,Receive Company Comments-HSE Philosophy,7,P2543-R01-Oct24..1.EN.4.3,HE-HS-0070,HE-HS-0070: FS,"HE-HS-0090, HE-WS-0020","HE-HS-0090: FS, HE-WS-0020: FS",2023-09-19 00:00:00,2023-09-28 00:00:00,9
HE-HS-0090,Re-Issue for Approval-HSE Philosophy,6,P2543-R01-Oct24..1.EN.4.3,HE-HS-0080,HE-HS-0080: FS,HE-HS-0100,HE-HS-0100: FS,2023-09-29 00:00:00,2023-10-09 00:00:00,10
HE-HS-0100,Obtain Company Approval-HSE Philosophy,13,P2543-R01-Oct24..1.EN.4.3,HE-HS-0090,HE-HS-0090: FS,HE-HS-0110,HE-HS-0110: FS,2023-10-10 00:00:00,2023-10-27 00:00:00,17
HE-HS-0110,Final Issue for Design/ Construction-Project HSE Philosophy,4,P2543-R01-Oct24..1.EN.4.3,"HE-HS-0100, HE-HS-0050","HE-HS-0100: FS, HE-HS-0050: FF","HE-HS-0170, C-COM-800, CAB-4410, HE-HS-0350","HE-HS-0170: FS, C-COM-800: FS, CAB-4410: FS, HE-HS-0350: FS",2023-11-13 00:00:00,2023-11-17 00:00:00,4
HE-HS-0130,Issue ICR - HAZID / ENVID / OHID Procedure,8,P2543-R01-Oct24..1.EN.4.1,"HE-HS-0070, HS-GN-0110","HE-HS-0070: FS, HS-GN-0110: FS","HE-HS-0140, HE-HS-0550, HE-WS-0020","HE-HS-0140: FS, HE-HS-0550: FS, HE-WS-0020: FS",2023-10-19 00:00:00,2023-10-31 00:00:00,12
HE-HS-0140,Receive Company Comments - HAZID / ENVID / OHID Procedure,4,P2543-R01-Oct24..1.EN.4.1,HE-HS-0130,HE-HS-0130: FS,"HE-HS-0150, HE-WS-0020","HE-HS-0150: FS, HE-WS-0020: FS",2023-11-01 00:00:00,2023-11-07 00:00:00,6
HE-HS-0150,Re-Issue for Approval - HAZID / ENVID / OHID Procedure,9,P2543-R01-Oct24..1.EN.4.1,HE-HS-0140,HE-HS-0140: FS,HE-HS-0160,HE-HS-0160: FS,2023-11-08 00:00:00,2023-11-21 00:00:00,13
HE-HS-0160,Obtain Company Approval - HAZID / ENVID / OHID Procedure,4,P2543-R01-Oct24..1.EN.4.1,HE-HS-0150,HE-HS-0150: FS,HE-HS-0170,HE-HS-0170: FS,2023-11-22 00:00:00,2023-11-28 00:00:00,6
HE-HS-0170,Final Issue for Design/ Construction-HAZID / ENVID / OHID Procedure,8,P2543-R01-Oct24..1.EN.4.1,"HE-HS-0110, HE-HS-0160","HE-HS-0110: FS, HE-HS-0160: FS","CAB-4410, HE-HS-0230, HE-HS-0590","CAB-4410: FS, HE-HS-0230: FS, HE-HS-0590: FS",2023-11-29 00:00:00,2023-12-12 00:00:00,13
HE-HS-0190,Issue ICR-HAZOP Procedure,8,P2543-R01-Oct24..1.EN.4.2,HS-GN-0110,HS-GN-0110: FS,"HE-HS-0970, HE-PI-0150, HE-WS-0050, HE-HS-0490, HE-PI-0130, C-COM-790, CAB-5290, HE-HS-0200, HE-HS-0670","HE-HS-0970: FS, HE-PI-0150: FS, HE-WS-0050: FS, HE-HS-0490: FS, HE-PI-0130: FS, C-COM-790: FS, CAB-5290: FS, HE-HS-0200: FS, HE-HS-0670: FS",2023-10-19 00:00:00,2023-10-31 00:00:00,12
HE-HS-0200,Receive Company Comments-HAZOP Procedure,4,P2543-R01-Oct24..1.EN.4.2,HE-HS-0190,HE-HS-0190: FS,HE-HS-0210,HE-HS-0210: FS,2023-11-01 00:00:00,2023-11-07 00:00:00,6
HE-HS-0210,Re-Issue for Approval-HAZOP Procedure,9,P2543-R01-Oct24..1.EN.4.2,HE-HS-0200,HE-HS-0200: FS,HE-HS-0220,HE-HS-0220: FS,2023-11-08 00:00:00,2023-11-21 00:00:00,13
HE-HS-0220,Obtain Company Approval-HAZOP Procedure,24,P2543-R01-Oct24..1.EN.4.2,HE-HS-0210,HE-HS-0210: FS,HE-HS-0230,HE-HS-0230: FS,2023-11-22 00:00:00,2023-12-27 00:00:00,35
HE-HS-0230,Final Issue for Design/ Construction-HAZOP Procedure,14,P2543-R01-Oct24..1.EN.4.2,"HE-HS-0220, HE-HS-0170","HE-HS-0220: FS, HE-HS-0170: FS","CAB-4410, HE-HS-0710, HE-WS-0210","CAB-4410: FS, HE-HS-0710: FS, HE-WS-0210: FS",2023-12-29 00:00:00,2024-01-19 00:00:00,21
HE-HS-0250,Issue ICR-F&G Layout,9,P2543-R01-Oct24..1.EN.4.5,"HE-PI-0350, HE-PI-0560, HE-PI-0420, HE-PI-0490","HE-PI-0350: FS, HE-PI-0560: FS, HE-PI-0420: FS, HE-PI-0490: FS","HE-HS-0310, HE-IC-1510, HE-HS-0260, HE-IC-0490","HE-HS-0310: FS, HE-IC-1510: FS, HE-HS-0260: FS, HE-IC-0490: FS 15",2023-12-20 00:00:00,2024-01-03 00:00:00,14
HE-HS-0260,Receive Company Comments-F&G Layout,3,P2543-R01-Oct24..1.EN.4.5,HE-HS-0250,HE-HS-0250: FS,HE-HS-0270,HE-HS-0270: FS,2024-01-04 00:00:00,2024-01-09 00:00:00,5
HE-HS-0270,Re-Issue for Approval-F&G Layout,4,P2543-R01-Oct24..1.EN.4.5,HE-HS-0260,HE-HS-0260: FS,"HE-IC-2750, HE-HS-0280","HE-IC-2750: FS, HE-HS-0280: FS",2024-04-19 00:00:00,2024-04-25 00:00:00,6
HE-HS-0280,Obtain Company Approval-F&G Layout,5,P2543-R01-Oct24..1.EN.4.5,HE-HS-0270,HE-HS-0270: FS,"HE-HS-0290, HE-HS-0330","HE-HS-0290: FS, HE-HS-0330: FS",2024-06-14 07:30:00,2024-06-25 17:30:00,11
HE-HS-0310,Issue ICR-F&G Cause and Effect,97,P2543-R01-Oct24..1.EN.4.6,"HE-HS-0250, HE-HS-0070","HE-HS-0250: FS, HE-HS-0070: FS","HE-HS-0370, HE-HS-0320","HE-HS-0370: SS, HE-HS-0320: FS",2024-01-22 00:00:00,2024-06-12 17:30:00,142
HE-HS-0320,Receive Company Comments-F&G Cause and Effect,54,P2543-R01-Oct24..1.EN.4.6,HE-HS-0310,HE-HS-0310: FS,HE-HS-0330,HE-HS-0330: FS,2024-06-13 07:30:00,2024-09-02 17:30:00,81
HE-HS-0370,Issue ICR- Fire Fighting & Safety Eqpt. Layout,7,P2543-R01-Oct24..1.EN.4.7,HE-HS-0310,HE-HS-0310: SS,"HE-HS-0380, HE-HS-0430, HP-ME-0910","HE-HS-0380: FS, HE-HS-0430: FS, HP-ME-0910: FS",2023-12-06 00:00:00,2023-12-15 00:00:00,9
HE-HS-0380,Receive Company Comments-Fire Fighting & Safety Eqpt. Layout,5,P2543-R01-Oct24..1.EN.4.7,HE-HS-0370,HE-HS-0370: FS,HE-HS-0390,HE-HS-0390: FS,2023-12-16 00:00:00,2023-12-25 00:00:00,9
HE-HS-0390,Re-Issue for Approval-Fire Fighting & Safety Eqpt. Layout,16,P2543-R01-Oct24..1.EN.4.7,HE-HS-0380,HE-HS-0380: FS,HE-HS-0400,HE-HS-0400: FS,2024-01-29 00:00:00,2024-02-20 00:00:00,22
HE-HS-0400,Obtain Company Approval-Fire Fighting & Safety Eqpt. Layout,9,P2543-R01-Oct24..1.EN.4.7,HE-HS-0390,HE-HS-0390: FS,"HE-HS-0410, HE-HS-0460","HE-HS-0410: FS, HE-HS-0460: FS",2024-02-07 00:00:00,2024-02-20 00:00:00,13
HE-HS-0410,Final Issue for Design/ Construction-Fire fighting & Safety equipment layout,17,P2543-R01-Oct24..1.EN.4.7,HE-HS-0400,HE-HS-0400: FS,"CAB-4410, HE-HS-0470, C-56-591-01-CI-1400, C-56-591-01-CI-1410, C-52-598-06-CI-1400, C-52-598-06-CI-1410, C-52-598-06-CI-1420, C-52-598-06-CI-1430","CAB-4410: FS, HE-HS-0470: FS, C-56-591-01-CI-1400: FS, C-56-591-01-CI-1410: FS, C-52-598-06-CI-1400: FS, C-52-598-06-CI-1410: FS, C-52-598-06-CI-1420: FS, C-52-598-06-CI-1430: FS",2024-02-07 00:00:00,2024-03-01 00:00:00,23
HE-HS-0430,Issue ICR-Data Sheets for Fire Fighting & Safety Eqpt,9,P2543-R01-Oct24..1.EN.4.16,HE-HS-0370,HE-HS-0370: FS,"HE-HS-0440, HE-HS-1092","HE-HS-0440: FS, HE-HS-1092: FS",2024-02-26 00:00:00,2024-03-08 00:00:00,11
HE-HS-0440,Receive Company Comments-Data Sheets for Fire Fighting & Safety Eqpt,9,P2543-R01-Oct24..1.EN.4.16,HE-HS-0430,HE-HS-0430: FS,HE-HS-0450,HE-HS-0450: FS,2024-03-10 00:00:00,2024-03-25 00:00:00,15
HE-HS-0450,Re-Issue for Approval-Data Sheets for Fire Fighting & Safety Eqpt,9,P2543-R01-Oct24..1.EN.4.16,HE-HS-0440,HE-HS-0440: FS,HE-HS-0460,HE-HS-0460: FS,2024-03-10 00:00:00,2024-03-25 00:00:00,15
HE-HS-0460,Obtain Company Approval-Data Sheets for Fire Fighting & Safety Eqpt,9,P2543-R01-Oct24..1.EN.4.16,"HE-HS-0450, HE-HS-0400","HE-HS-0450: FS, HE-HS-0400: FS","HE-HS-0470, HE-HS-1060","HE-HS-0470: FS, HE-HS-1060: FS",2024-03-10 00:00:00,2024-03-25 00:00:00,15
HE-HS-0470,Final Issue for Design/ Construction-Datasheets for fire fighting and safety equipment,11,P2543-R01-Oct24..1.EN.4.16,"HE-HS-0460, HE-HS-0410","HE-HS-0460: FS, HE-HS-0410: FS","ML1219-B29, HM-PI-0020, CAB-4410","ML1219-B29: FF, HM-PI-0020: FF, CAB-4410: FS",2024-03-31 00:00:00,2024-04-22 00:00:00,22
HE-HS-0490,Study & Issue ICR- HSEIA Study Report,9,P2543-R01-Oct24..1.EN.4.18,"HE-WS-0200, HE-WS-0190, HE-PR-0040, HE-PR-1240, HE-PR-1250, HE-PR-0060, HE-PR-0130, HS-GN-0110, HE-HS-0190, HE-WS-0020, HE-WS-0030, HE-WS-0210","HE-WS-0200: FF, HE-WS-0190: FS, HE-PR-0040: FS, HE-PR-1240: FS, HE-PR-1250: FS, HE-PR-0060: FS, HE-PR-0130: FS, HS-GN-0110: FS, HE-HS-0190: FS, HE-WS-0020: FS, HE-WS-0030: FS, HE-WS-0210: FS","HE-HS-0790, HE-HS-0970, HE-HS-0500","HE-HS-0790: FS, HE-HS-0970: FS, HE-HS-0500: FS",2023-12-29 00:00:00,2024-01-12 00:00:00,14
HE-HS-0500,Receive Company Comments- HSEIA Study Report,9,P2543-R01-Oct24..1.EN.4.18,HE-HS-0490,HE-HS-0490: FS,"HE-HS-0510, C-52-06CR-PL-CI-1400","HE-HS-0510: FS, C-52-06CR-PL-CI-1400: FF 21",2024-01-13 00:00:00,2024-01-26 00:00:00,13
HE-HS-0510,Re-Issue for Approval- HSEIA Study Report,14,P2543-R01-Oct24..1.EN.4.18,"HE-WS-0050, HE-HS-0500","HE-WS-0050: FS, HE-HS-0500: FS",HE-HS-0520,HE-HS-0520: FS,2024-02-26 00:00:00,2024-03-17 00:00:00,20
HE-HS-0520,Obtain Company Approval- HSEIA Study Report,31,P2543-R01-Oct24..1.EN.4.18,HE-HS-0510,HE-HS-0510: FS,"ML1016-B12, HE-HS-0530","ML1016-B12: FF, HE-HS-0530: FS",2024-03-18 00:00:00,2024-05-08 00:00:00,51
HE-HS-0550,Issue ICR-HAZID/ ENVID/ OHID Report,9,P2543-R01-Oct24..1.EN.4.10,"HE-HS-0130, HE-WS-0020","HE-HS-0130: FS, HE-WS-0020: FS","HE-HS-0670, HE-HS-0560, HE-HS-1030","HE-HS-0670: FS, HE-HS-0560: FS, HE-HS-1030: FS",2023-11-01 00:00:00,2023-11-14 00:00:00,13
HE-HS-0560,Receive Company Comments-HAZID/ ENVID/ OHID Report,4,P2543-R01-Oct24..1.EN.4.10,HE-HS-0550,HE-HS-0550: FS,HE-HS-0570,HE-HS-0570: FS,2023-11-15 00:00:00,2023-11-21 00:00:00,6
HE-HS-0580,Obtain Company Approval-HAZID/ ENVID/ OHID Report,0,P2543-R01-Oct24..1.EN.4.10,HE-HS-0570,HE-HS-0570: FS,HE-HS-0590,HE-HS-0590: FS,2024-01-15 00:00:00,2024-01-15 00:00:00,1
HE-HS-0570,Re-Issue for Approval-HAZID/ ENVID/ OHID Report,36,P2543-R01-Oct24..1.EN.4.10,HE-HS-0560,HE-HS-0560: FS,"HE-HS-0580, ML1013-B07","HE-HS-0580: FS, ML1013-B07: FF",2023-11-22 00:00:00,2024-01-15 00:00:00,54
HE-HS-0590,Final Issue for Design/ Construction-HAZID/ ENVID/ OHID Report,102,P2543-R01-Oct24..1.EN.4.10,"HE-HS-0580, HE-HS-0170","HE-HS-0580: FS, HE-HS-0170: FS","HE-HS-0710, HE-HS-0610, CAB-4410, HE-HS-1070, HE-HS-0710","HE-HS-0710: FS, HE-HS-0610: FS, CAB-4410: FS, HE-HS-1070: FS, HE-HS-0710: FF",2024-01-15 00:00:00,2024-06-13 00:00:00,150
HE-HS-0610,Issue ICR-HAZID/ ENVID/ OHID Close out Report,31,P2543-R01-Oct24..1.EN.4.19,HE-HS-0590,HE-HS-0590: FS,"HE-HS-1050, HE-HS-0620","HE-HS-1050: FS, HE-HS-0620: FS",2024-03-17 00:00:00,2024-05-07 00:00:00,51
HE-HS-0620,Receive Company Comments-HAZID/ ENVID/ OHID Close out Report,18,P2543-R01-Oct24..1.EN.4.19,HE-HS-0610,HE-HS-0610: FS,HE-HS-0630,HE-HS-0630: FS,2024-05-08 00:00:00,2024-06-03 00:00:00,26
HE-HS-0630,Re-Issue for Approval-HAZID/ ENVID/ OHID Close out Report,90,P2543-R01-Oct24..1.EN.4.19,HE-HS-0620,HE-HS-0620: FS,HE-HS-0640,HE-HS-0640: FS,2024-06-04 00:00:00,2024-10-11 17:30:00,129
HE-HS-0670,Issue ICR- HAZOP reviews Report for all areas,15,P2543-R01-Oct24..1.EN.4.13,"HE-PR-0040, HE-PR-1240, HE-PR-1250, HE-PR-0060, HE-PR-0130, HS-GN-0110, HE-WS-0020, HE-WS-0030, HE-HS-0550, HE-HS-0190, HE-WS-0210","HE-PR-0040: FS, HE-PR-1240: FS, HE-PR-1250: FS, HE-PR-0060: FS, HE-PR-0130: FS, HS-GN-0110: FS, HE-WS-0020: FS, HE-WS-0030: FS, HE-HS-0550: FS, HE-HS-0190: FS, HE-WS-0210: FS","ML1219-B19, HE-PR-1130, HE-PI-0170, HE-PR-0870, HE-PR-0450, HE-PR-0570, HE-PR-1280, HE-PR-1330, HE-PR-1380, HE-PR-1430, HE-PR-1480, HE-PR-1530, HE-PR-1580, HE-ME-0090, HE-PR-0070, HE-PR-0140, HE-HS-0850, HE-HS-0680, HE-HS-1030, HE-PR-1200, HE-IC-1770, HE-I","ML1219-B19: FF, HE-PR-1130: SS, HE-PI-0170: SS, HE-PR-0870: SS, HE-PR-0450: SS, HE-PR-0570: SS, HE-PR-1280: SS, HE-PR-1330: SS, HE-PR-1380: SS, HE-PR-1430: SS, HE-PR-1480: SS, HE-PR-1530: SS, HE-PR-1580: SS, HE-ME-0090: FS, HE-PR-0070: FF, HE-PR-0140: SS,",2023-11-28 00:00:00,2023-12-20 00:00:00,22
HE-HS-0680,Receive Company Comments- HAZOP reviews Report for all areas,6,P2543-R01-Oct24..1.EN.4.13,HE-HS-0670,HE-HS-0670: FS,HE-HS-0690,HE-HS-0690: FS,2023-12-21 00:00:00,2023-12-29 00:00:00,8
HE-HS-0690,Re-Issue for Approval- HAZOP reviews Report for all areas,13,P2543-R01-Oct24..1.EN.4.13,HE-HS-0680,HE-HS-0680: FS,"HE-HS-0700, ML1013-B07","HE-HS-0700: FS, ML1013-B07: FF",2024-01-02 00:00:00,2024-01-19 00:00:00,17
HE-HS-0700,Obtain Company Approval- HAZOP reviews Report for all areas,4,P2543-R01-Oct24..1.EN.4.13,HE-HS-0690,HE-HS-0690: FS,HE-HS-0710,HE-HS-0710: FS,2024-02-26 00:00:00,2024-03-01 00:00:00,4
HE-HS-0710,Final Issue for Design/ Construction-HAZOP Review Report,49,P2543-R01-Oct24..1.EN.4.13,"HE-HS-0590, HE-HS-0700, HE-HS-0230, HE-HS-0590","HE-HS-0590: FS, HE-HS-0700: FS, HE-HS-0230: FS, HE-HS-0590: FF","CAB-4410, HE-HS-0650, HE-HS-0770","CAB-4410: FS, HE-HS-0650: FS, HE-HS-0770: FF",2024-03-02 07:30:00,2024-05-18 17:30:00,77
HE-HS-0730,Issue ICR- HAZOP Close Out Report,9,P2543-R01-Oct24..1.EN.4.21,HE-HS-0670,HE-HS-0670: FS,"HE-HS-0740, HE-HS-1050","HE-HS-0740: FS, HE-HS-1050: FS",2024-03-04 00:00:00,2024-03-17 00:00:00,13
HE-HS-0740,Receive Company Comments- HAZOP Close Out Report,4,P2543-R01-Oct24..1.EN.4.21,HE-HS-0730,HE-HS-0730: FS,HE-HS-0750,HE-HS-0750: FS,2024-03-18 00:00:00,2024-03-25 00:00:00,7
HE-HS-0750,Re-Issue for Approval- HAZOP Close Out Report,7,P2543-R01-Oct24..1.EN.4.21,HE-HS-0740,HE-HS-0740: FS,HE-HS-0760,HE-HS-0760: FS,2024-03-26 00:00:00,2024-04-07 00:00:00,12
HE-HS-0760,Obtain Company Approval- HAZOP Close Out Report,9,P2543-R01-Oct24..1.EN.4.21,HE-HS-0750,HE-HS-0750: FS,HE-HS-0770,HE-HS-0770: FS,2024-04-12 00:00:00,2024-04-25 00:00:00,13
HE-HS-0770,Final Issue for Design/ Construction-HAZOP close out report,4,P2543-R01-Oct24..1.EN.4.21,"HE-HS-0760, HE-HS-0830, HE-HS-0710","HE-HS-0760: FS, HE-HS-0830: FF, HE-HS-0710: FF","C-COM-800, CAB-4410","C-COM-800: FS, CAB-4410: FS",2024-04-26 07:30:00,2024-05-01 17:30:00,5
HE-HS-0790,Issue ICR-QRA Report,5,P2543-R01-Oct24..1.EN.4.11,HE-HS-0490,HE-HS-0490: FS,"HE-HS-0800, HE-HS-0850, HE-HS-1030, HE-HS-1300","HE-HS-0800: FS, HE-HS-0850: FS, HE-HS-1030: FS, HE-HS-1300: FS",2023-12-04 00:00:00,2023-12-11 00:00:00,7
HE-HS-0800,Receive Company Comments-QRA Report,9,P2543-R01-Oct24..1.EN.4.11,HE-HS-0790,HE-HS-0790: FS,HE-HS-0810,HE-HS-0810: FS,2023-12-12 00:00:00,2023-12-25 00:00:00,13
HE-HS-0810,Re-Issue for Approval-QRA Report,21,P2543-R01-Oct24..1.EN.4.11,HE-HS-0800,HE-HS-0800: FS,"HE-HS-0820, ML1013-B07","HE-HS-0820: FS, ML1013-B07: FF",2023-12-26 00:00:00,2024-01-25 00:00:00,30
HE-HS-0820,Obtain Company Approval-QRA Report,16,P2543-R01-Oct24..1.EN.4.11,HE-HS-0810,HE-HS-0810: FS,HE-HS-0830,HE-HS-0830: FS,2024-02-26 00:00:00,2024-03-19 00:00:00,22
HE-HS-0830,Final Issue for Design/ Construction-QRA Report,5,P2543-R01-Oct24..1.EN.4.11,HE-HS-0820,HE-HS-0820: FS,"CAB-4410, ML1016-B12, HE-HS-1030, C-COM-800, HE-HS-0770","CAB-4410: FS, ML1016-B12: FS, HE-HS-1030: FS, C-COM-800: FS, HE-HS-0770: FF",2024-06-06 00:00:00,2024-06-13 00:00:00,7
HE-HS-1300,Issue ICR- ISD Closeout Report,6,P2543-R01-Oct24..1.EN.4.23,HE-HS-0790,HE-HS-0790: FS,HE-HS-1310,HE-HS-1310: FS,2024-05-01 00:00:00,2024-05-09 00:00:00,8
HE-HS-1310,Receive Company Comments- ISD Closeout Report,17,P2543-R01-Oct24..1.EN.4.23,HE-HS-1300,HE-HS-1300: FS,HE-HS-1320,HE-HS-1320: FS,2024-05-10 00:00:00,2024-06-03 17:30:00,24
HE-HS-1320,Re-Issue for Approval- ISD Closeout Report,10,P2543-R01-Oct24..1.EN.4.23,HE-HS-1310,HE-HS-1310: FS,HE-HS-1330,HE-HS-1330: FS,2024-09-02 07:30:00,2024-09-14 17:30:00,12
HE-HS-1330,Obtain Company Approval- ISD Closeout Report,3,P2543-R01-Oct24..1.EN.4.23,HE-HS-1320,HE-HS-1320: FS,HE-HS-1340,HE-HS-1340: FS,2024-09-16 07:30:00,2024-09-18 17:30:00,2
HE-HS-0850,Issue ICR-PHSER Report,3,P2543-R01-Oct24..1.EN.4.12,"HE-HS-0790, HE-HS-0670","HE-HS-0790: FS, HE-HS-0670: FS","HE-HS-1030, HE-HS-0910, HE-HS-0860","HE-HS-1030: FS, HE-HS-0910: FS, HE-HS-0860: FS",2024-01-15 00:00:00,2024-01-18 00:00:00,3
HE-HS-0860,Receive Company Comments-PHSER Report,14,P2543-R01-Oct24..1.EN.4.12,HE-HS-0850,HE-HS-0850: FS,HE-HS-0870,HE-HS-0870: FS,2024-01-19 00:00:00,2024-02-08 00:00:00,20
HE-HS-0870,Re-Issue for Approval-PHSER Report,5,P2543-R01-Oct24..1.EN.4.12,HE-HS-0860,HE-HS-0860: FS,"ML1013-B07, HE-HS-0880","ML1013-B07: FF, HE-HS-0880: FS",2024-02-09 00:00:00,2024-02-16 00:00:00,7
HE-HS-0880,Obtain Company Approval-PHSER Report,11,P2543-R01-Oct24..1.EN.4.12,HE-HS-0870,HE-HS-0870: FS,HE-HS-0890,HE-HS-0890: FS,2024-02-16 00:00:00,2024-03-02 00:00:00,15
HE-HS-0970,Issue ICR-Waste Management Plan (WMP) / Construction Environmental Management Plan (CEMP),10,P2543-R01-Oct24..1.EN.4.8,"HE-PR-0040, HE-PR-1240, HE-PR-1250, HE-PR-0060, HE-PR-0130, HS-GN-0110, HE-HS-0190, HE-WS-0020, HE-WS-0030, HE-HS-0490","HE-PR-0040: FS, HE-PR-1240: FS, HE-PR-1250: FS, HE-PR-0060: FS, HE-PR-0130: FS, HS-GN-0110: FS, HE-HS-0190: FS, HE-WS-0020: FS, HE-WS-0030: FS, HE-HS-0490: FS",HE-HS-0980,HE-HS-0980: FS,2024-07-29 07:30:00,2024-08-09 17:30:00,11
HE-HS-0980,Receive Company Comments-Waste Management Plan (WMP) / Construction Environmental Management Plan (CEMP),10,P2543-R01-Oct24..1.EN.4.8,HE-HS-0970,HE-HS-0970: FS,HE-HS-0990,HE-HS-0990: FS,2024-08-12 07:30:00,2024-08-23 17:30:00,11
HE-HS-0990,Re-Issue for Approval-Waste Management Plan (WMP) / Construction Environmental Management Plan (CEMP),5,P2543-R01-Oct24..1.EN.4.8,HE-HS-0980,HE-HS-0980: FS,HE-HS-1000,HE-HS-1000: FS,2024-08-26 07:30:00,2024-08-30 17:30:00,4
HE-HS-1000,Obtain Company Approval-Waste Management Plan (WMP) / Construction Environmental Management Plan (CEMP),12,P2543-R01-Oct24..1.EN.4.8,HE-HS-0990,HE-HS-0990: FS,HE-HS-1010,HE-HS-1010: FS,2024-09-02 07:30:00,2024-09-17 17:30:00,15
HE-HS-1010,Final Issue for Design/ Construction-Waste Management Plan (WMP) / Construction Environmental Management Plan (CEMP),8,P2543-R01-Oct24..1.EN.4.8,HE-HS-1000,HE-HS-1000: FS,"CAB-4410, C-COM-790","CAB-4410: FS, C-COM-790: FS",2024-09-17 07:30:00,2024-09-27 00:00:00,9
HE-HS-1030,Issue ICR-HSE Action Tracking Register (Hazards and Effects Register),13,P2543-R01-Oct24..1.EN.4.9,"HE-HS-0850, HE-HS-0830, HE-HS-0670, HE-HS-0790, HE-HS-0550","HE-HS-0850: FS, HE-HS-0830: FS, HE-HS-0670: FS, HE-HS-0790: FS, HE-HS-0550: FS",HE-HS-1040,HE-HS-1040: FS,2023-10-20 00:00:00,2023-11-08 00:00:00,19
HE-HS-1040,Receive Company Comments-HSE Action Tracking Register (Hazards and Effects Register),6,P2543-R01-Oct24..1.EN.4.9,HE-HS-1030,HE-HS-1030: FS,HE-HS-1050,HE-HS-1050: FS,2023-11-09 00:00:00,2023-11-17 00:00:00,8
HE-HS-1050,Re-Issue for Approval-HSE Action Tracking Register (Hazards and Effects Register),5,P2543-R01-Oct24..1.EN.4.9,"HE-HS-1040, HE-HS-0730, HE-HS-0610","HE-HS-1040: FS, HE-HS-0730: FS, HE-HS-0610: FS",HE-HS-1060,HE-HS-1060: FS,2023-11-17 00:00:00,2023-11-24 00:00:00,7
HE-HS-1060,Obtain Company Approval-HSE Action Tracking Register (Hazards and Effects Register),6,P2543-R01-Oct24..1.EN.4.9,"HE-HS-1050, HE-HS-0460","HE-HS-1050: FS, HE-HS-0460: FS",HE-HS-1070,HE-HS-1070: FS,2024-05-15 00:00:00,2024-05-23 00:00:00,8
HE-HS-1092,Issue ICR-Material Requisition for Fire Fighting & Safety Eqpt,5,P2543-R01-Oct24..1.EN.4.20,HE-HS-0430,HE-HS-0430: FS,"HP-ME-0960, HE-HS-1100, HE-HS-1150","HP-ME-0960: FS, HE-HS-1100: FS, HE-HS-1150: FS",2024-05-03 00:00:00,2024-05-10 00:00:00,7
HE-HS-1100,Receive Company Comments-Material Requisition for Fire Fighting & Safety Eqpt,4,P2543-R01-Oct24..1.EN.4.20,HE-HS-1092,HE-HS-1092: FS,HE-HS-1110,HE-HS-1110: FS,2024-05-13 00:00:00,2024-05-17 00:00:00,4
HE-HS-1110,Re-Issue for Approval-Material Requisition for Fire Fighting & Safety Eqpt,5,P2543-R01-Oct24..1.EN.4.20,HE-HS-1100,HE-HS-1100: FS,HE-HS-1120,HE-HS-1120: FS,2024-05-17 00:00:00,2024-05-24 00:00:00,7
HE-HS-1120,Obtain Company Approval-Material Requisition for Fire Fighting & Safety Eqpt,5,P2543-R01-Oct24..1.EN.4.20,HE-HS-1110,HE-HS-1110: FS,HE-HS-1130,HE-HS-1130: FS,2024-05-24 00:00:00,2024-05-31 00:00:00,7
HE-HS-1130,Final Issue for Design/ Construction-Material Requisition for fire fighting and safety equipment,10,P2543-R01-Oct24..1.EN.4.20,HE-HS-1120,HE-HS-1120: FS,"HP-ME-0980, HE-HS-1190","HP-ME-0980: FS, HE-HS-1190: FS",2024-05-31 00:00:00,2024-06-14 00:00:00,14
HE-HS-1150,Issue ICR-TBE for Fire Fighting & Safety Eqpt,5,P2543-R01-Oct24..1.EN.4.15,"HP-ME-0960, HE-HS-1092","HP-ME-0960: FS, HE-HS-1092: FS","HE-HS-1160, HP-ME-0920, HP-ME-0970, HE-HS-1220","HE-HS-1160: FS, HP-ME-0920: SS, HP-ME-0970: SS, HE-HS-1220: FS",2024-05-07 00:00:00,2024-05-14 00:00:00,7
HE-HS-1160,Receive Company Comments-TBE for Fire Fighting & Safety Eqpt,3,P2543-R01-Oct24..1.EN.4.15,HE-HS-1150,HE-HS-1150: FS,HE-HS-1170,HE-HS-1170: FS,2024-05-15 00:00:00,2024-05-20 00:00:00,5
HE-HS-1170,Re-Issue for Approval-TBE for Fire Fighting & Safety Eqpt,70,P2543-R01-Oct24..1.EN.4.15,HE-HS-1160,HE-HS-1160: FS,HE-HS-1180,HE-HS-1180: FS,2024-05-22 00:00:00,2024-09-02 17:30:00,103
HE-HS-1180,Obtain Company Approval-TBE for Fire Fighting & Safety Eqpt,9,P2543-R01-Oct24..1.EN.4.15,HE-HS-1170,HE-HS-1170: FS,"HP-ME-0920, HE-HS-1190, HP-ME-0970","HP-ME-0920: FF, HE-HS-1190: FS, HP-ME-0970: FF",2024-09-03 07:30:00,2024-09-13 17:30:00,10
HE-HS-1190,Final Issue for Design/ Construction-TBE for fire fighting and safety equipment,7,P2543-R01-Oct24..1.EN.4.15,"HE-HS-1180, HE-HS-1130","HE-HS-1180: FS, HE-HS-1130: FS",HM-ME-1850,HM-ME-1850: FS,2024-09-13 07:30:00,2024-09-23 17:30:00,10
HE-HS-1220,Issue ICR- HAZOP Review Report (Vendor),11,P2543-R01-Oct24..1.EN.4.14,HE-HS-1150,HE-HS-1150: FS,"HE-HS-1230, HE-HS-1270","HE-HS-1230: FS, HE-HS-1270: FS",2024-07-23 07:30:00,2024-08-06 17:30:00,14
HE-HS-1230,Receive Company Comments- HAZOP Review Report (Vendor),12,P2543-R01-Oct24..1.EN.4.14,HE-HS-1220,HE-HS-1220: FS,HE-HS-1240,HE-HS-1240: FF 5,2024-08-07 07:30:00,2024-08-22 17:30:00,15
HE-HS-1240,Re-Issue for Approval- HAZOP Review Report (Vendor),9,P2543-R01-Oct24..1.EN.4.14,HE-HS-1230,HE-HS-1230: FF 5,HE-HS-1200,HE-HS-1200: FS,2024-09-03 07:30:00,2024-09-13 17:30:00,10
HE-HS-1200,Obtain Company Approval- HAZOP Review Report (Vendor),6,P2543-R01-Oct24..1.EN.4.14,HE-HS-1240,HE-HS-1240: FS,HE-HS-1210,HE-HS-1210: FS,2024-09-13 07:30:00,2024-09-20 17:30:00,7
HE-HS-1270,Issue ICR- HAZOP Closeout Report (Vendor),10,P2543-R01-Oct24..1.EN.4.22,HE-HS-1220,HE-HS-1220: FS,HE-HS-1280,HE-HS-1280: FF 10,2024-08-03 07:30:00,2024-08-19 00:00:00,15
HE-HS-1280,Receive Company Comments- HAZOP Closeout Report (Vendor),19,P2543-R01-Oct24..1.EN.4.22,HE-HS-1270,HE-HS-1270: FF 10,HE-HS-1290,HE-HS-1290: FF 5,2024-09-02 07:30:00,2024-09-26 17:30:00,24
HE-HS-1290,Re-Issue for Approval- HAZOP Closeout Report (Vendor),16,P2543-R01-Oct24..1.EN.4.22,HE-HS-1280,HE-HS-1280: FF 5,HE-HS-1250,HE-HS-1250: FS,2024-09-16 07:30:00,2024-10-07 17:30:00,21
HE-HS-1250,Obtain Company Approval- HAZOP Closeout Report (Vendor),10,P2543-R01-Oct24..1.EN.4.22,HE-HS-1290,HE-HS-1290: FS,HE-HS-1260,HE-HS-1260: FS,2024-10-08 07:30:00,2024-10-21 17:30:00,13
HE-HV-180,Issue ICR-Design Basis,7,P2543-R01-Oct24..1.EN.12.9,"HE-DB-0050, HE-DB-0020","HE-DB-0050: FS, HE-DB-0020: FS","HE-HV-190, HE-HV-2690","HE-HV-190: FS, HE-HV-2690: FS",2023-09-16 00:00:00,2023-09-27 00:00:00,11
HE-HV-190,Receive Company Comments-Design Basis,9,P2543-R01-Oct24..1.EN.12.9,HE-HV-180,HE-HV-180: FS,HE-HV-150,HE-HV-150: FS,2023-09-28 00:00:00,2023-10-11 00:00:00,13
HE-HV-150,Re-Issue for Approval-Design Basis,14,P2543-R01-Oct24..1.EN.12.9,HE-HV-190,HE-HV-190: FS,HE-HV-170,HE-HV-170: FS,2023-11-07 00:00:00,2023-11-27 00:00:00,20
HE-HV-170,Obtain Company Approval-Design Basis,9,P2543-R01-Oct24..1.EN.12.9,HE-HV-150,HE-HV-150: FS,HE-HV-160,HE-HV-160: FS,2023-11-28 00:00:00,2023-12-12 00:00:00,14
HE-HV-160,Final Issue for Design-Design Basis,18,P2543-R01-Oct24..1.EN.12.9,HE-HV-170,HE-HV-170: FS,HE-HV-2780,HE-HV-2780: FS,2023-12-13 00:00:00,2024-01-09 00:00:00,27
HE-HV-2690,Issue ICR- Specification for HVAC,7,P2543-R01-Oct24..1.EN.12.A11,HE-HV-180,HE-HV-180: FS,HE-HV-2700,HE-HV-2700: FS,2023-11-01 00:00:00,2023-11-10 00:00:00,9
HE-HV-2700,Receive Company Comments- Specification for HVAC,4,P2543-R01-Oct24..1.EN.12.A11,HE-HV-2690,HE-HV-2690: FS,HE-HV-2710,HE-HV-2710: FS,2023-11-11 00:00:00,2023-11-17 00:00:00,6
HE-HV-2710,Re-Issue for Approval- Specification for HVAC,5,P2543-R01-Oct24..1.EN.12.A11,HE-HV-2700,HE-HV-2700: FS,HE-HV-2720,HE-HV-2720: FS,2023-11-17 00:00:00,2023-11-24 00:00:00,7
HE-HV-2720,Obtain Company Approval- Specification for HVAC,6,P2543-R01-Oct24..1.EN.12.A11,HE-HV-2710,HE-HV-2710: FS,HE-HV-2730,HE-HV-2730: FS,2023-11-28 00:00:00,2023-12-07 00:00:00,9
HE-HV-2730,Final Issue for Design/ Construction-Specification for HVAC,12,P2543-R01-Oct24..1.EN.12.A11,HE-HV-2720,HE-HV-2720: FS,HE-HV-2780,HE-HV-2780: FS,2024-01-29 00:00:00,2024-02-14 00:00:00,16
HE-BL-1090,"Receive Company Comments-Foundation, GA & Reinforcement Details for E&I Building at Habshan complex",6,P2543-R01-Oct24..1.EN.12.1,HE-BL-1080,HE-BL-1080: FS,HE-BL-1050,HE-BL-1050: FS,2024-03-29 00:00:00,2024-04-12 00:00:00,14
HE-BL-1080,"Issue ICR-Foundation, GA & Reinforcement Details for E&I Building at Habshan complex",12,P2543-R01-Oct24..1.EN.12.1,HE-BL-1130,HE-BL-1130: FS 10,"HE-BL-1380, HE-BL-1090","HE-BL-1380: FF 1, HE-BL-1090: FS",2024-03-31 00:00:00,2024-04-23 00:00:00,23
HE-BL-1050,"Re-Issue for Approval-Foundation, GA & Reinforcement Details for E&I Building at Habshan complex",10,P2543-R01-Oct24..1.EN.12.1,HE-BL-1090,HE-BL-1090: FS,HE-BL-1070,HE-BL-1070: FS,2024-04-12 00:00:00,2024-04-26 00:00:00,14
HE-BL-1070,"Obtain Company Approval-Foundation, GA & Reinforcement Details for E&I Building at Habshan complex",10,P2543-R01-Oct24..1.EN.12.1,HE-BL-1050,HE-BL-1050: FS,HE-BL-1060,HE-BL-1060: FS,2024-04-26 00:00:00,2024-05-10 00:00:00,14
HE-BL-1060,"Final Issue for Design-Foundation, GA & Reinforcement Details for E&I Building at Habshan complex",18,P2543-R01-Oct24..1.EN.12.1,HE-BL-1070,HE-BL-1070: FS,HE-BL-1360,HE-BL-1360: FF,2024-05-24 00:00:00,2024-06-23 17:30:00,30
HE-HV-2740,Issue ICR- Specification for Material Handling,11,P2543-R01-Oct24..1.EN.12.A111,HE-PI-0020,HE-PI-0020: FS,"HE-HV-2750, HE-HV-2790","HE-HV-2750: FS, HE-HV-2790: FS",2024-02-26 00:00:00,2024-03-11 00:00:00,14
HE-HV-2750,Receive Company Comments- Specification for Material Handling,9,P2543-R01-Oct24..1.EN.12.A111,HE-HV-2740,HE-HV-2740: FS,HE-HV-2760,HE-HV-2760: FS,2024-03-12 00:00:00,2024-03-27 00:00:00,15
HE-HV-2760,Re-Issue for Approval- Specification for Material Handling,14,P2543-R01-Oct24..1.EN.12.A111,HE-HV-2750,HE-HV-2750: FS,HE-HV-2770,HE-HV-2770: FS,2024-03-31 00:00:00,2024-04-25 00:00:00,25
HE-HV-2770,Obtain Company Approval- Specification for Material Handling,1,P2543-R01-Oct24..1.EN.12.A111,HE-HV-2760,HE-HV-2760: FS,HE-HV-2780,HE-HV-2780: FS,2024-04-27 00:00:00,2024-04-30 00:00:00,3
HE-HV-2780,Final Issue for Design/ Construction-Specification for Material Handling,13,P2543-R01-Oct24..1.EN.12.A111,"HE-HV-2770, HE-HV-160, HE-HV-2730","HE-HV-2770: FS, HE-HV-160: FS, HE-HV-2730: FS",HE-HV-2830,HE-HV-2830: FS,2024-05-01 00:00:00,2024-05-20 00:00:00,19
HE-BL-1130,"Issue ICR-Foundation, GA & Reinforcement Details for E&I Building at Sweihan CRS",10,P2543-R01-Oct24..1.EN.12.2,HE-BL-1000,HE-BL-1000: FS 10,"HE-BL-1080, HE-BL-1140","HE-BL-1080: FS 10, HE-BL-1140: FS",2024-02-03 00:00:00,2024-02-17 00:00:00,14
HE-BL-1140,"Receive Company Comments-Foundation, GA & Reinforcement Details for E&I Building at Sweihan CRS",3,P2543-R01-Oct24..1.EN.12.2,HE-BL-1130,HE-BL-1130: FS,HE-BL-1100,HE-BL-1100: FS,2024-03-31 00:00:00,2024-04-04 00:00:00,4
HE-BL-1100,"Re-Issue for Approval-Foundation, GA & Reinforcement Details for E&I Building at Sweihan CRS",2,P2543-R01-Oct24..1.EN.12.2,HE-BL-1140,HE-BL-1140: FS,HE-BL-1120,HE-BL-1120: FS,2024-04-05 00:00:00,2024-04-10 00:00:00,5
HE-BL-1120,"Obtain Company Approval-Foundation, GA & Reinforcement Details for E&I Building at Sweihan CRS",6,P2543-R01-Oct24..1.EN.12.2,HE-BL-1100,HE-BL-1100: FS,HE-BL-1110,HE-BL-1110: FS,2024-04-11 00:00:00,2024-04-22 00:00:00,11
HE-HV-2790,Issue ICR- Datasheet for Material Handling,9,P2543-R01-Oct24..1.EN.12.A1111,HE-HV-2740,HE-HV-2740: FS,"HE-HV-2800, HE-HV-2840","HE-HV-2800: FS, HE-HV-2840: FS",2024-02-26 00:00:00,2024-03-08 00:00:00,11
HE-HV-2800,Receive Company Comments- Datasheet for Material Handling,9,P2543-R01-Oct24..1.EN.12.A1111,HE-HV-2790,HE-HV-2790: FS,HE-HV-2810,HE-HV-2810: FS,2024-03-10 00:00:00,2024-03-25 00:00:00,15
HE-HV-2810,Re-Issue for Approval- Datasheet for Material Handling,18,P2543-R01-Oct24..1.EN.12.A1111,HE-HV-2800,HE-HV-2800: FS,HE-HV-2820,HE-HV-2820: FS,2024-03-26 00:00:00,2024-04-26 00:00:00,31
HE-HV-2820,Obtain Company Approval- Datasheet for Material Handling,9,P2543-R01-Oct24..1.EN.12.A1111,HE-HV-2810,HE-HV-2810: FS,HE-HV-2830,HE-HV-2830: FS,2024-04-27 00:00:00,2024-05-10 00:00:00,13
HE-HV-2830,Final Issue for Design/ Construction-Datasheet for Material Handling,5,P2543-R01-Oct24..1.EN.12.A1111,"HE-HV-2820, HE-HV-2780","HE-HV-2820: FS, HE-HV-2780: FS",HE-HV-2880,HE-HV-2880: FS,2024-05-11 00:00:00,2024-05-20 00:00:00,9
HE-HV-2840,Issue ICR- Material Requisition for Material Handling,9,P2543-R01-Oct24..1.EN.12.A11111,HE-HV-2790,HE-HV-2790: FS,"HP-ME-1360, HE-HV-2850, HP-ME-0810, HP-ME-0860","HP-ME-1360: FS, HE-HV-2850: FS, HP-ME-0810: FS, HP-ME-0860: FS",2024-03-10 00:00:00,2024-03-25 00:00:00,15
HE-HV-2850,Receive Company Comments- Material Requisition for Material Handling,2,P2543-R01-Oct24..1.EN.12.A11111,HE-HV-2840,HE-HV-2840: FS,HE-HV-2860,HE-HV-2860: FS,2024-03-26 00:00:00,2024-03-29 00:00:00,3
HE-HV-2860,Re-Issue for Approval- Material Requisition for Material Handling,8,P2543-R01-Oct24..1.EN.12.A11111,HE-HV-2850,HE-HV-2850: FS,HE-HV-2870,HE-HV-2870: FS,2024-06-25 00:00:00,2024-07-04 17:30:00,9
HE-HV-2870,Obtain Company Approval- Material Requisition for Material Handling,10,P2543-R01-Oct24..1.EN.12.A11111,HE-HV-2860,HE-HV-2860: FS,HE-HV-2880,HE-HV-2880: FS,2024-07-05 07:30:00,2024-07-21 17:30:00,16
HE-HV-2880,Final Issue for Design/ Construction-Material Requisition for Material Handling,4,P2543-R01-Oct24..1.EN.12.A11111,"HE-HV-2870, HE-HV-2830","HE-HV-2870: FS, HE-HV-2830: FS",HE-HV-2930,HE-HV-2930: FS,2024-07-22 07:30:00,2024-07-25 17:30:00,3
HE-HV-2890,Issue ICR- TBE for Material Handling,7,P2543-R01-Oct24..1.EN.12.A111111,HP-ME-0810,HP-ME-0810: FS,"HP-ME-1380, HE-HV-2900, HP-ME-0870","HP-ME-1380: FS, HE-HV-2900: FS, HP-ME-0870: SS",2024-06-06 00:00:00,2024-06-17 00:00:00,11
HE-HV-2900,Receive Company Comments- TBE for Material Handling,9,P2543-R01-Oct24..1.EN.12.A111111,HE-HV-2890,HE-HV-2890: FS,"HP-ME-1370, HE-HV-2910","HP-ME-1370: FS, HE-HV-2910: FS",2024-06-18 07:30:00,2024-07-02 17:30:00,14
HE-HV-2910,Re-Issue for Approval- TBE for Material Handling,5,P2543-R01-Oct24..1.EN.12.A111111,HE-HV-2900,HE-HV-2900: FS,HE-HV-2920,HE-HV-2920: FS,2024-10-11 07:30:00,2024-10-17 17:30:00,6
HE-BL-1000,Issue ICR-Structural Design Calculation,13,P2543-R01-Oct24..1.EN.12.3,HE-CS-0010,HE-CS-0010: FS,"HE-BL-1230, HE-BL-1180, HE-BL-1130, HE-BL-1010","HE-BL-1230: FF 10, HE-BL-1180: FF 2, HE-BL-1130: FS 10, HE-BL-1010: FS",2024-01-29 00:00:00,2024-02-15 00:00:00,17
HE-BL-1010,Receive Company Comments-Structural Design Calculation,9,P2543-R01-Oct24..1.EN.12.3,HE-BL-1000,HE-BL-1000: FS,HE-BL-1020,HE-BL-1020: FS,2024-02-26 00:00:00,2024-03-08 00:00:00,11
HE-BL-1020,Re-Issue for Approval-Structural Design Calculation,3,P2543-R01-Oct24..1.EN.12.3,HE-BL-1010,HE-BL-1010: FS,HE-BL-1030,HE-BL-1030: FS,2024-03-31 00:00:00,2024-04-05 00:00:00,5
HE-BL-1030,Obtain Company Approval-Structural Design Calculation,3,P2543-R01-Oct24..1.EN.12.3,HE-BL-1020,HE-BL-1020: FS,HE-BL-1040,HE-BL-1040: FS,2024-04-06 00:00:00,2024-04-16 00:00:00,10
HE-BL-1180,"Issue ICR-Plumbing Design, Calculation & Details",12,P2543-R01-Oct24..1.EN.12.4,HE-BL-1000,HE-BL-1000: FF 2,HE-BL-1190,HE-BL-1190: FS,2023-12-13 00:00:00,2023-12-29 00:00:00,16
HE-BL-1190,"Receive Company Comments-Plumbing Design, Calculation & Details",11,P2543-R01-Oct24..1.EN.12.4,HE-BL-1180,HE-BL-1180: FS,HE-BL-1150,HE-BL-1150: FS,2023-12-29 00:00:00,2024-01-16 00:00:00,18
HE-BL-1150,"Re-Issue for Approval-Plumbing Design, Calculation & Details",24,P2543-R01-Oct24..1.EN.12.4,HE-BL-1190,HE-BL-1190: FS,HE-BL-1170,HE-BL-1170: FS,2024-01-26 00:00:00,2024-02-29 00:00:00,34
HE-BL-1170,"Obtain Company Approval-Plumbing Design, Calculation & Details",10,P2543-R01-Oct24..1.EN.12.4,HE-BL-1150,HE-BL-1150: FS,HE-BL-1160,HE-BL-1160: FS,2024-02-29 00:00:00,2024-03-15 00:00:00,15
HE-BL-1160,"Final Issue for Design-Plumbing Design, Calculation & Details",6,P2543-R01-Oct24..1.EN.12.4,HE-BL-1170,HE-BL-1170: FS,HE-BL-1310,HE-BL-1310: FS,2024-03-16 00:00:00,2024-03-27 00:00:00,11
HE-BL-1230,"Issue ICR-Layout, Elevation & Finishing for E&I Building at Habshan complex",20,P2543-R01-Oct24..1.EN.12.5,HE-BL-1000,HE-BL-1000: FF 10,"HE-BL-1280, HE-BL-1240, HE-BL-1330","HE-BL-1280: FS, HE-BL-1240: FS, HE-BL-1330: FS",2024-01-19 00:00:00,2024-02-16 00:00:00,28
HE-BL-1240,"Receive Company Comments-Layout, Elevation & Finishing for E&I Building at Habshan complex",10,P2543-R01-Oct24..1.EN.12.5,HE-BL-1230,HE-BL-1230: FS,HE-BL-1200,HE-BL-1200: FS,2024-02-18 00:00:00,2024-03-02 00:00:00,13
HE-BL-1200,"Re-Issue for Approval-Layout, Elevation & Finishing for E&I Building at Habshan complex",10,P2543-R01-Oct24..1.EN.12.5,HE-BL-1240,HE-BL-1240: FS,HE-BL-1220,HE-BL-1220: FS,2024-03-04 00:00:00,2024-03-18 00:00:00,14
HE-BL-1220,"Obtain Company Approval-Layout, Elevation & Finishing for E&I Building at Habshan complex",7,P2543-R01-Oct24..1.EN.12.5,HE-BL-1200,HE-BL-1200: FS,HE-BL-1210,HE-BL-1210: FS,2024-03-18 00:00:00,2024-03-29 00:00:00,11
HE-BL-1280,"Issue ICR-Layout, Elevation & Finishing for E&I Building at Sweihan CRS",10,P2543-R01-Oct24..1.EN.12.6,HE-BL-1230,HE-BL-1230: FS,HE-BL-1290,HE-BL-1290: FS,2024-07-29 07:30:00,2024-08-09 17:30:00,11
HE-BL-1290,"Receive Company Comments-Layout, Elevation & Finishing for E&I Building at Sweihan CRS",10,P2543-R01-Oct24..1.EN.12.6,HE-BL-1280,HE-BL-1280: FS,HE-BL-1250,HE-BL-1250: FS,2024-08-12 07:30:00,2024-08-23 17:30:00,11
HE-BL-1250,"Re-Issue for Approval-Layout, Elevation & Finishing for E&I Building at Sweihan CRS",10,P2543-R01-Oct24..1.EN.12.6,HE-BL-1290,HE-BL-1290: FS,HE-BL-1270,HE-BL-1270: FS,2024-08-26 07:30:00,2024-09-06 17:30:00,11
HE-BL-1270,"Obtain Company Approval-Layout, Elevation & Finishing for E&I Building at Sweihan CRS",11,P2543-R01-Oct24..1.EN.12.6,HE-BL-1250,HE-BL-1250: FS,HE-BL-1260,HE-BL-1260: FS,2024-09-09 07:30:00,2024-09-23 17:30:00,14
HE-BL-1330,Issue ICR-Plumbing & Drainage Layout for E&I Building at Sweihan CRS,14,P2543-R01-Oct24..1.EN.12.7,HE-BL-1230,HE-BL-1230: FS,HE-BL-1340,HE-BL-1340: FS,2023-12-10 00:00:00,2023-12-29 00:00:00,19
HE-BL-1340,Receive Company Comments-Plumbing & Drainage Layout for E&I Building at Sweihan CRS,10,P2543-R01-Oct24..1.EN.12.7,HE-BL-1330,HE-BL-1330: FS,HE-BL-1300,HE-BL-1300: FS,2023-12-30 00:00:00,2024-01-16 00:00:00,17
HE-BL-1300,Re-Issue for Approval-Plumbing & Drainage Layout for E&I Building at Sweihan CRS,14,P2543-R01-Oct24..1.EN.12.7,HE-BL-1340,HE-BL-1340: FS,HE-BL-1320,HE-BL-1320: FS,2024-02-26 00:00:00,2024-03-17 00:00:00,20
HE-BL-1320,Obtain Company Approval-Plumbing & Drainage Layout for E&I Building at Sweihan CRS,6,P2543-R01-Oct24..1.EN.12.7,HE-BL-1300,HE-BL-1300: FS,HE-BL-1310,HE-BL-1310: FS,2024-03-18 00:00:00,2024-03-27 00:00:00,9
HE-BL-1380,Issue ICR-Instrument & Control Layouts,2,P2543-R01-Oct24..1.EN.12.8,HE-BL-1080,HE-BL-1080: FF 1,HE-BL-1390,HE-BL-1390: FS,2024-06-16 07:30:00,2024-06-23 17:30:00,7
HE-BL-1390,Receive Company Comments-Instrument & Control Layouts,10,P2543-R01-Oct24..1.EN.12.8,HE-BL-1380,HE-BL-1380: FS,HE-BL-1350,HE-BL-1350: FS,2024-10-14 00:00:00,2024-10-25 17:30:00,11
HP-ME-0010,"RFQ, Receipt of Bid for Custody Metering Skid",14,P2543-R01-Oct24..1.1.2.LL.22.1,HE-IC-1810,HE-IC-1810: FS,"HP-ME-0020, HE-IC-2110, HE-CS-0790","HP-ME-0020: FS, HE-IC-2110: FS, HE-CS-0790: FS",2023-11-03 00:00:00,2023-11-23 00:00:00,20
HP-ME-0020,Prepare TBE and Company approval for Custody Metering Skid,43,P2543-R01-Oct24..1.1.2.LL.22.1,"HP-ME-0010, HE-IC-2110, HE-IC-2140","HP-ME-0010: FS, HE-IC-2110: SS, HE-IC-2140: FF",HP-ME-0030,HP-ME-0030: FS,2023-11-24 00:00:00,2024-01-26 00:00:00,63
HP-ME-0030,Commercial Clarifications & Placement of PO for Custody Metering Skid,14,P2543-R01-Oct24..1.1.2.LL.22.1,"HP-ME-0020, HE-IC-2150","HP-ME-0020: FS, HE-IC-2150: FF","ML1259-C09, HM-ME-0050, HM-ME-0010","ML1259-C09: FS, HM-ME-0050: FS, HM-ME-0010: FS",2024-01-29 00:00:00,2024-02-16 00:00:00,18
HP-ME-0060,"RFQ, Receipt of Bid for Pressure Reduction Skid",9,P2543-R01-Oct24..1.1.2.LL.21.1,HE-IC-1690,HE-IC-1690: FS,"HP-ME-0070, HE-IC-2170","HP-ME-0070: FS, HE-IC-2170: FS",2023-11-02 00:00:00,2023-11-15 00:00:00,13
HP-ME-0070,Prepare TBE and Company approval for Pressure Reduction Skid,49,P2543-R01-Oct24..1.1.2.LL.21.1,"HE-IC-2200, HP-ME-0060, HE-IC-2170","HE-IC-2200: FF, HP-ME-0060: FS, HE-IC-2170: SS",HP-ME-0080,HP-ME-0080: FS,2023-11-16 00:00:00,2024-01-26 00:00:00,71
HP-ME-0080,Commercial Clarifications & Placement of PO for Pressure Reduction Skid,19,P2543-R01-Oct24..1.1.2.LL.21.1,"HE-IC-2200, HP-ME-0070, HE-IC-2210","HE-IC-2200: FS, HP-ME-0070: FS, HE-IC-2210: FF","HM-ME-0150, ML1039-C08, HM-ME-0110","HM-ME-0150: FS, ML1039-C08: FS, HM-ME-0110: FS",2024-01-29 00:00:00,2024-02-23 00:00:00,25
HP-ME-0110,"RFQ, Receipt of Bid for Leak Detection System",12,P2543-R01-Oct24..1.1.2.LL.17.1,HE-IC-1750,HE-IC-1750: FS,"HP-ME-0120, HE-IC-2230","HP-ME-0120: FS, HE-IC-2230: FS",2023-11-29 00:00:00,2023-12-17 00:00:00,18
HP-ME-0120,Prepare TBE and Company approval for Leak Detection System,68,P2543-R01-Oct24..1.1.2.LL.17.1,"HP-ME-0110, HE-IC-2230","HP-ME-0110: FS, HE-IC-2230: SS",HP-ME-0130,HP-ME-0130: FS,2023-12-18 00:00:00,2024-03-25 00:00:00,98
HP-ME-0130,Commercial Clarifications & Placement of PO for Leak Detection System,2,P2543-R01-Oct24..1.1.2.LL.17.1,HP-ME-0120,HP-ME-0120: FS,"HM-ME-0210, ML1289-C11","HM-ME-0210: FS, ML1289-C11: FF",2024-03-26 00:00:00,2024-03-29 00:00:00,3
HP-ME-0160,"RFQ, Receipt of Bid for Filter Package",6,P2543-R01-Oct24..1.1.2.LL.11.1,HE-ME-0130,HE-ME-0130: FS,"HE-ME-0190, HP-ME-0170, HE-ME-530","HE-ME-0190: FS, HP-ME-0170: FS, HE-ME-530: FS",2023-10-30 00:00:00,2023-11-07 00:00:00,8
HP-ME-0170,Prepare TBE and Company approval for Filter Package,26,P2543-R01-Oct24..1.1.2.LL.11.1,"HP-ME-0160, HE-ME-0190, HE-ME-0220","HP-ME-0160: FS, HE-ME-0190: SS, HE-ME-0220: FF",HP-ME-0180,HP-ME-0180: FS,2023-11-08 00:00:00,2023-12-15 00:00:00,37
HP-ME-0180,Commercial Clarifications & Placement of PO for Filter Package,1,P2543-R01-Oct24..1.1.2.LL.11.1,"HE-ME-0220, HP-ME-0170, HE-ME-0230","HE-ME-0220: FS, HP-ME-0170: FS, HE-ME-0230: SS","HM-ME-0310, HM-ME-0350","HM-ME-0310: FS, HM-ME-0350: FS",2023-12-18 00:00:00,2023-12-19 00:00:00,1
HP-ME-0210,"RFQ, Receipt of Bid for Pig Launchers & Receivers",3,P2543-R01-Oct24..1.1.2.LL.12.1,"HE-ME-480, HE-PR-0490","HE-ME-480: FS, HE-PR-0490: FS","HP-ME-0220, HP-ME-0220, HP-ME-0230, CAB-4480","HP-ME-0220: FS, HP-ME-0220: FF, HP-ME-0230: FS, CAB-4480: FS",2023-11-02 00:00:00,2023-11-07 00:00:00,5
HP-ME-0220,Prepare TBE and Company approval for Pig Launchers & Receivers,27,P2543-R01-Oct24..1.1.2.LL.12.1,"HP-ME-0210, HP-ME-0210, HE-ME-560","HP-ME-0210: FS, HP-ME-0210: FF, HE-ME-560: FF",HP-ME-0230,HP-ME-0230: FS,2023-11-08 00:00:00,2023-12-18 00:00:00,40
HP-ME-0230,Commercial Clarifications & Placement of PO for Pig Launchers & Receivers,4,P2543-R01-Oct24..1.1.2.LL.12.1,"HP-ME-0220, HP-ME-0210","HP-ME-0220: FS, HP-ME-0210: FS","HM-ME-0410, HM-ME-0450, ML1279-C05","HM-ME-0410: FS, HM-ME-0450: FS, ML1279-C05: FF",2023-12-20 00:00:00,2023-12-26 00:00:00,6
HP-ME-0260,"RFQ, Receipt of Bid for ROV/ GOV",9,P2543-R01-Oct24..1.1.2.LL.10.1,HE-IC-1630,HE-IC-1630: FS,"HP-ME-0270, HE-IC-2290","HP-ME-0270: FS, HE-IC-2290: FS",2023-10-30 00:00:00,2023-11-10 00:00:00,11
HP-ME-0270,Prepare TBE and Company approval for ROV/ GOV,52,P2543-R01-Oct24..1.1.2.LL.10.1,"HP-ME-0260, HE-IC-2290, HE-IC-2320","HP-ME-0260: FS, HE-IC-2290: SS, HE-IC-2320: FF",HP-ME-0280,HP-ME-0280: FS,2023-11-11 00:00:00,2024-01-26 00:00:00,76
HP-ME-0280,Commercial Clarifications & Placement of PO for ROV/ GOV,9,P2543-R01-Oct24..1.1.2.LL.10.1,"HE-IC-2320, HP-ME-0270, HE-IC-1670","HE-IC-2320: FS, HP-ME-0270: FS, HE-IC-1670: FS","HM-ME-0510, ML1022-C07, HM-ME-0550, ML1349-C19","HM-ME-0510: FS, ML1022-C07: FS, HM-ME-0550: FS, ML1349-C19: FS",2024-03-10 00:00:00,2024-03-25 00:00:00,15
HP-ME-0310,"RFQ, Receipt of Bid for MOV",9,P2543-R01-Oct24..1.1.2.LL.9.1,HE-IC-1570,HE-IC-1570: FS,"HE-IC-2050, HP-ME-0320, HP-ME-0330","HE-IC-2050: FS, HP-ME-0320: FS, HP-ME-0330: FS 30",2023-10-30 00:00:00,2023-11-10 00:00:00,11
HP-ME-0320,Prepare TBE and Company approval for MOV,87,P2543-R01-Oct24..1.1.2.LL.9.1,"HE-IC-2060, HP-ME-0310, HE-IC-2050, HE-IC-2080","HE-IC-2060: FF, HP-ME-0310: FS, HE-IC-2050: SS, HE-IC-2080: FF","ML1038-C20, HP-ME-0330","ML1038-C20: FF, HP-ME-0330: FS",2023-11-11 00:00:00,2024-03-17 00:00:00,127
HP-ME-0330,Commercial Clarifications & Placement of PO for MOV,6,P2543-R01-Oct24..1.1.2.LL.9.1,"HP-ME-0320, HP-ME-0310","HP-ME-0320: FS, HP-ME-0310: FS 30","ML1349-C19, HM-ME-0650, HM-ME-0610, ML1022-C07","ML1349-C19: FS, HM-ME-0650: FS, HM-ME-0610: FS, ML1022-C07: FS",2024-03-18 00:00:00,2024-03-27 00:00:00,9
HP-ME-0360,"RFQ, Receipt of Bid for AC UPS",3,P2543-R01-Oct24..1.1.2.LL.8.1,"HE-EL-0920, HE-EL-0910","HE-EL-0920: FS, HE-EL-0910: FS","HP-ME-0370, HE-EL-1330","HP-ME-0370: FS, HE-EL-1330: FS",2023-12-12 00:00:00,2023-12-15 00:00:00,3
HP-ME-0370,Prepare TBE and Company approval for AC UPS,66,P2543-R01-Oct24..1.1.2.LL.8.1,"HP-ME-0360, HE-EL-1330, HE-EL-1360","HP-ME-0360: FS, HE-EL-1330: SS, HE-EL-1360: FF",HP-ME-0380,HP-ME-0380: FS,2023-12-15 00:00:00,2024-03-20 00:00:00,96
HP-ME-0380,Commercial Clarifications & Placement of PO for AC UPS,14,P2543-R01-Oct24..1.1.2.LL.8.1,HP-ME-0370,HP-ME-0370: FS,"HM-ME-0760, HM-ME-0720, ML1319-C16","HM-ME-0760: FS, HM-ME-0720: FS, ML1319-C16: FF",2024-03-04 00:00:00,2024-03-25 00:00:00,21
HP-ME-0510,"RFQ, Receipt of Bid for Solar PV system",17,P2543-R01-Oct24..1.1.2.LL.6.1,HE-EL-1090,HE-EL-1090: FS,"HP-ME-0520, HE-EL-1270","HP-ME-0520: FS, HE-EL-1270: FS",2024-02-03 00:00:00,2024-02-28 00:00:00,25
HP-ME-0520,Prepare TBE and Company approval for Solar PV system,72,P2543-R01-Oct24..1.1.2.LL.6.1,"HP-ME-0510, HE-EL-1120, HE-EL-1270","HP-ME-0510: FS, HE-EL-1120: FF, HE-EL-1270: SS",HP-ME-0530,HP-ME-0530: FS,2024-02-23 00:00:00,2024-06-12 00:00:00,110
HP-ME-0530,Commercial Clarifications & Placement of PO for Solar PV system,1,P2543-R01-Oct24..1.1.2.LL.6.1,HP-ME-0520,HP-ME-0520: FS,"HE-CS-0850, HM-ME-1020, ML1026-C13, HM-ME-1060","HE-CS-0850: SS, HM-ME-1020: FS, ML1026-C13: FF, HM-ME-1060: FS",2024-06-13 00:00:00,2024-06-14 00:00:00,1
HP-ME-0560,"RFQ, Receipt of Bid for Active/ Passive Cooled Shelter",12,P2543-R01-Oct24..1.1.2.LL.5.1,HE-EL-0850,HE-EL-0850: FS,"HP-ME-0570, HE-EL-1210","HP-ME-0570: FS, HE-EL-1210: FS",2024-01-26 00:00:00,2024-02-13 00:00:00,18
HP-ME-0570,Prepare TBE and Company approval for Active/ Passive Cooled Shelter,13,P2543-R01-Oct24..1.1.2.LL.5.1,"HP-ME-0560, HE-EL-1210, HE-EL-1240","HP-ME-0560: FS, HE-EL-1210: SS, HE-EL-1240: FF",HP-ME-0580,HP-ME-0580: FS,2024-05-17 00:00:00,2024-06-05 00:00:00,19
HP-ME-0580,Commercial Clarifications & Placement of PO for Active/ Passive Cooled Shelter,6,P2543-R01-Oct24..1.1.2.LL.5.1,HP-ME-0570,HP-ME-0570: FS,"HM-ME-1120, ML1309-C15","HM-ME-1120: FS, ML1309-C15: FF",2024-06-06 00:00:00,2024-06-14 00:00:00,8
HP-ME-0610,"RFQ, Receipt of Bid for Telecom System (CCTV, Telephone, LAN, SDH, PIDS, IDS etc.)",16,P2543-R01-Oct24..1.1.2.LL.4.1,"HE-TL-0490, HE-TL-0550","HE-TL-0490: FS, HE-TL-0550: FS","HP-ME-0620, HE-TL-0610","HP-ME-0620: FS, HE-TL-0610: FS",2023-11-29 00:00:00,2023-12-22 00:00:00,23
HP-ME-0620,"Prepare TBE and Company approval for Telecom System (CCTV, Telephone, LAN, SDH, PIDS, IDS etc.)",94,P2543-R01-Oct24..1.1.2.LL.4.1,"HP-ME-0610, HE-TL-0610","HP-ME-0610: FS, HE-TL-0610: SS",HP-ME-0630,HP-ME-0630: FS,2024-01-10 00:00:00,2024-05-29 00:00:00,140
HP-ME-0630,"Commercial Clarifications & Placement of PO for Telecom System (CCTV, Telephone, LAN, SDH, PIDS, IDS etc.)",6,P2543-R01-Oct24..1.1.2.LL.4.1,HP-ME-0620,HP-ME-0620: FS,"ML1339-C18, ML1028-C20, HM-ME-1260, HM-ME-1220","ML1339-C18: FF, ML1028-C20: FS, HM-ME-1260: FS, HM-ME-1220: FS",2024-05-30 00:00:00,2024-06-07 00:00:00,8
HP-ME-0710,"RFQ, Receipt of Bid for Gas Detectors",17,P2543-R01-Oct24..1.1.2.LL.18.1,"HE-IC-1930, HE-IC-1870","HE-IC-1930: FS, HE-IC-1870: FS","HE-IC-2350, HP-ME-0720","HE-IC-2350: FS, HP-ME-0720: FS",2024-03-20 00:00:00,2024-04-19 00:00:00,30
HP-ME-0720,Prepare TBE and Company approval for Gas Detectors,12,P2543-R01-Oct24..1.1.2.LL.18.1,"HP-ME-0710, HE-IC-2350","HP-ME-0710: FS, HE-IC-2350: SS",HP-ME-0730,HP-ME-0730: FS,2024-05-31 00:00:00,2024-06-21 00:00:00,21
HP-ME-0730,Commercial Clarifications & Placement of PO for Gas Detectors,1,P2543-R01-Oct24..1.1.2.LL.18.1,"HE-IC-1970, HP-ME-0720","HE-IC-1970: FS, HP-ME-0720: FS","HM-ME-1420, ML1269-C12, HE-IC-0670","HM-ME-1420: FS, ML1269-C12: FF, HE-IC-0670: FF",2024-06-22 00:00:00,2024-06-24 17:30:00,2
HP-BK-0060,"RFQ, Receipt of Bid for FOC Cables",5,P2543-R01-Oct24..1.1.2.LL.19.1,HE-TL-0550,HE-TL-0550: FS,"HS-CN-0260, HP-BK-0070, HE-TL-0610","HS-CN-0260: FS, HP-BK-0070: FS, HE-TL-0610: FS",2023-11-29 00:00:00,2023-12-07 00:00:00,8
HP-BK-0070,Prepare TBE and Company approval for FOC Cables,44,P2543-R01-Oct24..1.1.2.LL.19.1,HP-BK-0060,HP-BK-0060: FS,HP-BK-0080,HP-BK-0080: FS,2024-01-23 00:00:00,2024-03-26 00:00:00,63
HP-BK-0080,Commercial Clarifications & Placement of PO for FOC Cables,14,P2543-R01-Oct24..1.1.2.LL.19.1,HP-BK-0070,HP-BK-0070: FS,"HM-EL-0110, ML1329-C17","HM-EL-0110: FS, ML1329-C17: FF",2024-03-31 00:00:00,2024-04-25 00:00:00,25
HP-ME-1330,"RFQ, Receipt of Bid for LV Switch Gear",4,P2543-R01-Oct24..1.1.2.25.23.1,HE-EL-1960,HE-EL-1960: FS,"HP-ME-1340, HP-ME-1350, HE-EL-2210","HP-ME-1340: FS, HP-ME-1350: FS, HE-EL-2210: FS",2024-05-13 00:00:00,2024-05-17 00:00:00,4
HP-ME-1350,Prepare TBE and Company approval for LV Switch Gear,55,P2543-R01-Oct24..1.1.2.25.23.1,"HE-EL-2210, HP-ME-1330, HE-EL-2220","HE-EL-2210: FS, HP-ME-1330: FS, HE-EL-2220: FF",HP-ME-1340,HP-ME-1340: FS,2024-08-05 07:30:00,2024-10-18 17:30:00,74
HP-ME-1340,Commercial Clarifications & Placement of PO for LV Switch Gear,6,P2543-R01-Oct24..1.1.2.25.23.1,"HP-ME-1330, HP-ME-1350","HP-ME-1330: FS, HP-ME-1350: FS",HM-ME-2040,HM-ME-2040: FS,2024-10-18 07:30:00,2024-10-25 17:30:00,7
HP-ME-0760,"RFQ, Receipt of Bid for Field Instruments",44,P2543-R01-Oct24..1.1.2.25.15.1,HE-IC-1930,HE-IC-1930: FS,"HP-ME-0770, HE-IC-2410, HE-IC-2350","HP-ME-0770: FS, HE-IC-2410: FS, HE-IC-2350: FS",2024-02-02 00:00:00,2024-04-11 00:00:00,69
HP-ME-0770,Prepare TBE and Company approval for Field Instruments,35,P2543-R01-Oct24..1.1.2.25.15.1,"HP-ME-0760, HE-IC-2410, HE-IC-2440","HP-ME-0760: FS, HE-IC-2410: SS, HE-IC-2440: FF",HP-ME-0780,HP-ME-0780: FS,2024-04-12 00:00:00,2024-05-31 00:00:00,49
HP-ME-0780,Commercial Clarifications & Placement of PO for Field Instruments,6,P2543-R01-Oct24..1.1.2.25.15.1,HP-ME-0770,HP-ME-0770: FS,"ML1269-C12, HM-ME-1520, HE-IC-0670","ML1269-C12: FF, HM-ME-1520: FS, HE-IC-0670: FS",2024-06-04 00:00:00,2024-06-12 00:00:00,8
HP-ME-0410,"RFQ, Receipt of Bid for Power Distribution Boards",26,P2543-R01-Oct24..1.1.2.25.7.1,HE-EL-0970,HE-EL-0970: FS,"HE-EL-1390, HP-ME-0420, HE-EL-1390","HE-EL-1390: FS, HP-ME-0420: FS, HE-EL-1390: FF",2024-04-05 00:00:00,2024-05-16 00:00:00,41
HP-ME-0420,Prepare TBE and Company approval for Power Distribution Boards,56,P2543-R01-Oct24..1.1.2.25.7.1,"HP-ME-0410, HE-EL-1390, HE-EL-1420","HP-ME-0410: FS, HE-EL-1390: SS, HE-EL-1420: FF",HP-ME-0430,HP-ME-0430: FS,2024-05-27 00:00:00,2024-08-18 17:30:00,83
HP-ME-0430,Commercial Clarifications & Placement of PO for Power Distribution Boards,5,P2543-R01-Oct24..1.1.2.25.7.1,HP-ME-0420,HP-ME-0420: FS,"HM-ME-0860, HM-ME-0820","HM-ME-0860: FS, HM-ME-0820: FS",2024-08-19 07:30:00,2024-08-23 17:30:00,4
HP-ME-0810,"RFQ, Receipt of Bid for Junction Boxes",19,P2543-R01-Oct24..1.1.2.25.16.1,"HE-IC-1990, HE-HV-2840","HE-IC-1990: FS, HE-HV-2840: FS","HP-ME-0820, HE-IC-2470, HE-HV-2890","HP-ME-0820: FS, HE-IC-2470: FS, HE-HV-2890: FS",2024-05-20 00:00:00,2024-06-14 00:00:00,25
HP-ME-0820,Prepare TBE and Company approval for Junction Boxes,66,P2543-R01-Oct24..1.1.2.25.16.1,HP-ME-0810,HP-ME-0810: FS,HP-ME-0830,HP-ME-0830: FS,2024-06-15 00:00:00,2024-09-20 17:30:00,97
HP-ME-0830,Commercial Clarifications & Placement of PO for Junction Boxes,9,P2543-R01-Oct24..1.1.2.25.16.1,"HP-ME-0820, HE-IC-2030","HP-ME-0820: FS, HE-IC-2030: FS",HM-ME-1620,HM-ME-1620: FS,2024-09-23 07:30:00,2024-10-03 17:30:00,10
HP-ME-0860,"RFQ, Receipt of Bid for HVAC Equipment",1,P2543-R01-Oct24..1.1.2.25.3.1,"HE-ME-0010, HE-ME-270, HE-IC-620, HE-HV-2840","HE-ME-0010: FS, HE-ME-270: FS, HE-IC-620: FS, HE-HV-2840: FS","HP-ME-0870, HS-CN-0610","HP-ME-0870: FS, HS-CN-0610: FS",2024-04-08 00:00:00,2024-04-15 00:00:00,7
HP-ME-0870,Prepare TBE and Company approval for HVAC Equipment,12,P2543-R01-Oct24..1.1.2.25.3.1,"HP-ME-0860, HE-HV-2890","HP-ME-0860: FS, HE-HV-2890: SS",HP-ME-0880,HP-ME-0880: FS,2024-04-17 00:00:00,2024-05-03 00:00:00,16
HP-ME-0880,Commercial Clarifications & Placement of PO for  HVAC Equipment,4,P2543-R01-Oct24..1.1.2.25.3.1,HP-ME-0870,HP-ME-0870: FS,"ML1038-C20, HM-ME-1720, HM-ME-1760","ML1038-C20: FF, HM-ME-1720: FS, HM-ME-1760: FS",2024-05-03 00:00:00,2024-05-09 00:00:00,6
HP-ME-0460,"RFQ, Receipt of Bid for Distribution Transformer",1,P2543-R01-Oct24..1.1.2.25.1.1,HE-EL-1030,HE-EL-1030: FS,"HP-ME-0470, HE-EL-1450","HP-ME-0470: FS, HE-EL-1450: FS",2023-12-04 00:00:00,2023-12-05 00:00:00,1
HP-ME-0470,Prepare TBE and Company approval for Distribution Transformer,42,P2543-R01-Oct24..1.1.2.25.1.1,"HP-ME-0460, HE-EL-1450","HP-ME-0460: FS, HE-EL-1450: SS",HP-ME-0480,HP-ME-0480: FS,2024-01-05 00:00:00,2024-03-05 00:00:00,60
HP-ME-0480,Commercial Clarifications & Placement of PO for Distribution Transformer,26,P2543-R01-Oct24..1.1.2.25.1.1,HP-ME-0470,HP-ME-0470: FS,"HM-ME-0920, HM-ME-0960","HM-ME-0920: FS, HM-ME-0960: FS",2024-03-06 00:00:00,2024-04-19 00:00:00,44
HP-ME-0660,"RFQ, Receipt of Bid for Access Switch, Fiber Optic Patch Panel and Media Converter",9,P2543-R01-Oct24..1.1.2.25.14.1,"HE-TL-0550, HE-TL-0490","HE-TL-0550: FS, HE-TL-0490: FS","HE-TL-0610, HP-ME-0670","HE-TL-0610: FS, HP-ME-0670: FS",2024-02-26 00:00:00,2024-03-08 00:00:00,11
HP-ME-0670,"Prepare TBE and Company approval for Access Switch, Fiber Optic Patch Panel and Media Converter",18,P2543-R01-Oct24..1.1.2.25.14.1,"HP-ME-0660, HE-TL-0610","HP-ME-0660: FS, HE-TL-0610: SS",HP-ME-0680,HP-ME-0680: FS,2024-05-03 00:00:00,2024-05-29 00:00:00,26
HP-ME-0680,"Commercial Clarifications & Placement of PO for Access Switch, Fiber Optic Patch Panel and Media Converter",6,P2543-R01-Oct24..1.1.2.25.14.1,HP-ME-0670,HP-ME-0670: FS,"HM-ME-1320, HM-ME-1360","HM-ME-1320: FS, HM-ME-1360: FS",2024-05-30 00:00:00,2024-06-07 00:00:00,8
HP-ME-0910,"RFQ, Receipt of Bid for Fire Suppression System",5,P2543-R01-Oct24..1.1.2.25.2.1,HE-HS-0370,HE-HS-0370: FS,"ML1549-D32, HP-ME-0920","ML1549-D32: FF, HP-ME-0920: FS",2024-06-10 00:00:00,2024-06-17 00:00:00,7
HP-ME-0920,Prepare TBE and Company approval for Fire Suppression System,16,P2543-R01-Oct24..1.1.2.25.2.1,"HE-HS-1180, HP-ME-0910, HE-HS-1150","HE-HS-1180: FF, HP-ME-0910: FS, HE-HS-1150: SS",HP-ME-0930,HP-ME-0930: FS,2024-08-15 07:30:00,2024-09-05 17:30:00,21
HP-ME-0930,Commercial Clarifications & Placement of PO for  Fire Suppression System,1,P2543-R01-Oct24..1.1.2.25.2.1,HP-ME-0920,HP-ME-0920: FS,"ML1038-C20, HM-ME-1890, HM-ME-1850","ML1038-C20: FF 80, HM-ME-1890: FS, HM-ME-1850: FS",2024-09-06 07:30:00,2024-09-06 17:30:00,0
HP-ME-0960,"RFQ, Receipt of Bid for Fire Fighting & Safety Equipment",17,P2543-R01-Oct24..1.1.2.25.13.1,HE-HS-1092,HE-HS-1092: FS,"HP-ME-0970, HE-HS-1150","HP-ME-0970: FS, HE-HS-1150: FS",2024-05-23 07:30:00,2024-06-15 17:30:00,23
HP-ME-0970,Prepare TBE and Company approval for Fire Fighting & Safety Equipment,10,P2543-R01-Oct24..1.1.2.25.13.1,"HP-ME-0960, HE-HS-1150, HE-HS-1180","HP-ME-0960: FS, HE-HS-1150: SS, HE-HS-1180: FF",HP-ME-0980,HP-ME-0980: FS,2024-08-30 07:30:00,2024-09-13 00:00:00,13
HP-ME-0980,Commercial Clarifications & Placement of PO for Fire Fighting & Safety Equipment,5,P2543-R01-Oct24..1.1.2.25.13.1,"HE-HS-1130, HP-ME-0970","HE-HS-1130: FS, HP-ME-0970: FS","ML1038-C20, HM-ME-1920","ML1038-C20: FF, HM-ME-1920: FS",2024-09-16 07:30:00,2024-09-20 17:30:00,4
HP-ME-1360,"RFQ, Receipt of Bid for Lifting Equipment",12,P2543-R01-Oct24..1.1.2.25.24.1,HE-HV-2840,HE-HV-2840: FS,"HP-ME-1380, HP-ME-1380, HP-ME-1370","HP-ME-1380: FS, HP-ME-1380: FF, HP-ME-1370: FS",2024-04-19 00:00:00,2024-05-07 00:00:00,18
HP-ME-1380,Prepare TBE and Company approval for Lifting Equipment,31,P2543-R01-Oct24..1.1.2.25.24.1,"HE-HV-2890, HP-ME-1360, HP-ME-1360","HE-HV-2890: FS, HP-ME-1360: FS, HP-ME-1360: FF",HP-ME-1370,HP-ME-1370: FS,2024-06-17 00:00:00,2024-08-02 17:30:00,46
HP-ME-1370,Commercial Clarifications & Placement of PO for Lifting Equipment,15,P2543-R01-Oct24..1.1.2.25.24.1,"HE-HV-2900, HP-ME-1380, HP-ME-1360","HE-HV-2900: FS, HP-ME-1380: FS, HP-ME-1360: FS","HM-ME-2180, HM-ME-2070","HM-ME-2180: FS, HM-ME-2070: FS",2024-08-03 07:30:00,2024-08-23 17:30:00,20
HP-ME-1020,"RFQ, Receipt of Bid for Line Pipes (Coated)",5,P2543-R01-Oct24..1.1.1.16.1,HE-PL-1630,HE-PL-1630: FS,"HP-ME-1030, HE-PL-2050","HP-ME-1030: FS, HE-PL-2050: FS",2023-08-03 00:00:00,2023-08-10 00:00:00,7
HP-ME-1030,Prepare TBE and Company approval for Line Pipes (Coated),10,P2543-R01-Oct24..1.1.1.16.1,"HP-ME-1020, HE-PL-2060, HE-PL-2050","HP-ME-1020: FS, HE-PL-2060: FF, HE-PL-2050: SS",HP-ME-1040,HP-ME-1040: FS,2023-08-10 00:00:00,2023-08-24 00:00:00,14
HP-ME-1040,Commercial Clarifications & Placement of PO for Line Pipes (Coated),0,P2543-R01-Oct24..1.1.1.16.1,"HE-PL-1670, HE-PL-2070, HP-ME-1030","HE-PL-1670: FF, HE-PL-2070: FS, HP-ME-1030: FS","CTF-SO1000, HM-PL-0050, ML1040-C01, HM-PL-0010","CTF-SO1000: FS, HM-PL-0050: FS, ML1040-C01: FS, HM-PL-0010: FS",2023-08-25 00:00:00,2023-08-25 00:00:00,1
HP-ME-1120,"RFQ, Receipt of Bid for Pig Signaler",18,P2543-R01-Oct24..1.1.1.19.1,HE-PL-1930,HE-PL-1930: FS,"HE-PL-2330, HP-ME-1130","HE-PL-2330: FS, HP-ME-1130: FS",2024-02-26 00:00:00,2024-03-22 00:00:00,25
HP-ME-1130,Prepare TBE and Company approval for Pig Signaler,30,P2543-R01-Oct24..1.1.1.19.1,"HP-ME-1120, HE-PL-2330, HE-PL-2360","HP-ME-1120: FS, HE-PL-2330: SS, HE-PL-2360: FF",HP-ME-1140,HP-ME-1140: FS,2024-03-18 00:00:00,2024-05-07 00:00:00,50
HP-ME-1140,Commercial Clarifications & Placement of PO for Pig Signaler,10,P2543-R01-Oct24..1.1.1.19.1,HP-ME-1130,HP-ME-1130: FS,HM-PL-0460,HM-PL-0460: FS,2024-05-08 00:00:00,2024-05-22 00:00:00,14
HP-ME-1170,"RFQ, Receipt of Bid for Hot Incution Bend",9,P2543-R01-Oct24..1.1.1.1.1,HE-PL-1750,HE-PL-1750: FS,"HP-ME-1180, HE-PL-2090","HP-ME-1180: FS, HE-PL-2090: FS",2023-09-05 00:00:00,2023-09-18 00:00:00,13
HP-ME-1180,Prepare TBE and Company approval for Hot Incution Bend,3,P2543-R01-Oct24..1.1.1.1.1,"HP-ME-1170, HE-PL-2090, HE-PL-2120","HP-ME-1170: FS, HE-PL-2090: SS, HE-PL-2120: FF",HP-ME-1190,HP-ME-1190: FS,2023-09-22 00:00:00,2023-09-27 00:00:00,5
HP-ME-1190,Commercial Clarifications & Placement of PO for Hot Induction Bend,2,P2543-R01-Oct24..1.1.1.1.1,"HE-PL-1790, HP-ME-1180, ML1189-B16","HE-PL-1790: FS, HP-ME-1180: FS, ML1189-B16: FS","HM-PL-0560, ML1229-C02, HM-PL-0600","HM-PL-0560: FS, ML1229-C02: FS, HM-PL-0600: FS",2023-09-28 00:00:00,2023-10-02 00:00:00,4
HP-ME-1220,"RFQ, Receipt of Bid for Isolating Joints",7,P2543-R01-Oct24..1.1.1.3.1,HE-PL-1870,HE-PL-1870: FS,"HE-PL-2210, HP-ME-1230","HE-PL-2210: FS, HP-ME-1230: FS",2023-09-29 00:00:00,2023-10-10 00:00:00,11
HP-ME-1230,Prepare TBE and Company approval for Isolating Joints,25,P2543-R01-Oct24..1.1.1.3.1,"HP-ME-1220, HE-PL-2210, HE-PL-2240","HP-ME-1220: FS, HE-PL-2210: SS, HE-PL-2240: FF",HP-ME-1240,HP-ME-1240: FS,2023-10-11 00:00:00,2023-11-15 00:00:00,35
HP-ME-1240,Commercial Clarifications & Placement of PO for Isolating Joints,5,P2543-R01-Oct24..1.1.1.3.1,"HP-ME-1230, HE-PL-1910","HP-ME-1230: FS, HE-PL-1910: FS","ML1249-C06, HM-PL-0670, HM-PL-0710, ML1041-C03","ML1249-C06: FF, HM-PL-0670: FS, HM-PL-0710: FS, ML1041-C03: FS",2023-11-16 00:00:00,2023-11-23 00:00:00,7
HP-ME-1270,"RFQ, Receipt of Bid for Pigging & Split Tee",10,P2543-R01-Oct24..1.1.1.2.1,"HE-PL-1810, HE-PL-3650","HE-PL-1810: FS, HE-PL-3650: FS","HE-PL-2150, HP-ME-1280","HE-PL-2150: FS, HP-ME-1280: FS",2024-01-26 00:00:00,2024-02-09 00:00:00,14
HP-ME-1280,Prepare TBE and Company approval for Pigging & Split Tee,20,P2543-R01-Oct24..1.1.1.2.1,"HP-ME-1270, HE-PL-2150, HE-PL-2180, HE-PL-3680","HP-ME-1270: FS, HE-PL-2150: SS, HE-PL-2180: FF, HE-PL-3680: FF",HP-ME-1290,HP-ME-1290: FS,2024-02-26 00:00:00,2024-03-26 00:00:00,29
HP-ME-1290,Commercial Clarifications & Placement of PO for Pigging & Split Tee,14,P2543-R01-Oct24..1.1.1.2.1,"HP-ME-1280, HE-PL-1850","HP-ME-1280: FS, HE-PL-1850: FS","ML1239-C04, HM-PL-0770, HM-PL-0810","ML1239-C04: FF, HM-PL-0770: FS, HM-PL-0810: FS",2024-03-31 00:00:00,2024-04-25 00:00:00,25
HP-ME-1310,"RFQ, Receipt of Bid for Anchor Flanges",19,P2543-R01-Oct24..1.1.1.4.1,HE-PL-3460,HE-PL-3460: FS,"ML1549-D32, HP-ME-1320","ML1549-D32: FF, HP-ME-1320: FS",2024-04-15 00:00:00,2024-05-10 00:00:00,25
HP-ME-1320,Prepare TBE and Company approval for Anchor Flanges,2,P2543-R01-Oct24..1.1.1.4.1,"HP-ME-1310, HE-PL-3480","HP-ME-1310: FS, HE-PL-3480: SS",HP-ME-1300,HP-ME-1300: FS,2024-06-14 00:00:00,2024-06-21 00:00:00,7
HP-ME-1300,Commercial Clarifications & Placement of PO for Anchor Flanges,6,P2543-R01-Oct24..1.1.1.4.1,HP-ME-1320,HP-ME-1320: FS,HM-PL-890,HM-PL-890: FS,2024-06-22 00:00:00,2024-07-01 17:30:00,9
HS-GN-0190,"RFQ, Receipt of Bid for - Hot Tapping",9,P2543-R01-Oct24..1.1.1.5,HE-PL-1330,HE-PL-1330: FS,HS-GN-0220,HS-GN-0220: FS,2024-01-29 00:00:00,2024-02-09 00:00:00,11
HS-GN-0220,+,13,P2543-R01-Oct24..1.1.1.5,HS-GN-0190,HS-GN-0190: FS,HS-GN-0230,HS-GN-0230: FS,2024-02-26 00:00:00,2024-03-15 00:00:00,18
HS-GN-0230,Commercial Clarifications & Placement of PO- Hot Tapping,18,P2543-R01-Oct24..1.1.1.5,HS-GN-0220,HS-GN-0220: FS,"HE-PL-1530, HM-PL-0250, HE-PI-0180, ML1219-B29, CAB-4480, C-56-G-HT101-ME-1000, C-52-D-HT002-ME-1000, C-36-KM-HT03-ME-1000, C-36-KM-HT04-ME-1000","HE-PL-1530: FS, HM-PL-0250: FS, HE-PI-0180: FS, ML1219-B29: FF, CAB-4480: FS, C-56-G-HT101-ME-1000: FS, C-52-D-HT002-ME-1000: FS, C-36-KM-HT03-ME-1000: FS, C-36-KM-HT04-ME-1000: FS",2024-02-26 00:00:00,2024-03-22 00:00:00,25
HP-BK-0010,"RFQ, Receipt of Bid for Power & Control Cables",4,P2543-R01-Oct24..1.1.BK.17.1,HE-EL-1150,HE-EL-1150: FS,"HE-EL-1510, HP-BK-0020, HE-EL-2260, HE-EL-2310, HE-EL-2360, HE-EL-2410","HE-EL-1510: FS, HP-BK-0020: FS, HE-EL-2260: FS, HE-EL-2310: FS, HE-EL-2360: FS, HE-EL-2410: FS",2024-04-29 00:00:00,2024-05-03 00:00:00,4
HP-BK-0020,Prepare TBE and Company approval for Power & Control Cables,69,P2543-R01-Oct24..1.1.BK.17.1,HP-BK-0010,HP-BK-0010: FS,HP-BK-0030,HP-BK-0030: FS,2024-05-03 00:00:00,2024-08-13 17:30:00,102
HP-BK-0030,Commercial Clarifications & Placement of PO for Power & Control Cables,8,P2543-R01-Oct24..1.1.BK.17.1,HP-BK-0020,HP-BK-0020: FS,HM-EL-0010,HM-EL-0010: FS,2024-08-14 07:30:00,2024-08-23 17:30:00,9
HP-BK-0110,"RFQ, Receipt of Bid for Cable Trays",9,P2543-R01-Oct24..1.1.BK.13.1,HE-EL-1630,HE-EL-1630: FS,"ML1549-D32, HP-BK-0120","ML1549-D32: FF, HP-BK-0120: FS",2024-07-30 07:30:00,2024-08-11 17:30:00,12
HP-BK-0120,Prepare TBE and Company approval for Cable Trays,12,P2543-R01-Oct24..1.1.BK.13.1,"HP-BK-0110, HE-EL-1510","HP-BK-0110: FS, HE-EL-1510: SS",HP-BK-0130,HP-BK-0130: FS,2024-08-14 07:30:00,2024-08-29 17:30:00,15
HP-BK-0130,Commercial Clarifications & Placement of PO for  Cable Trays,16,P2543-R01-Oct24..1.1.BK.13.1,HP-BK-0120,HP-BK-0120: FS,"HM-EL-0250, HM-EL-0210","HM-EL-0250: FS, HM-EL-0210: FS",2024-09-04 07:30:00,2024-09-25 17:30:00,21
HP-BK-0160,"RFQ, Receipt of Bid for Earthing Material",6,P2543-R01-Oct24..1.1.BK.15.1,HE-EL-1630,HE-EL-1630: FS,"ML1549-D32, HP-BK-0170","ML1549-D32: FF, HP-BK-0170: FS",2024-04-29 07:30:00,2024-05-06 17:30:00,7
HP-BK-0170,Prepare TBE and Company approval for Earthing Material,74,P2543-R01-Oct24..1.1.BK.15.1,"HP-BK-0160, HE-EL-2410, HE-EL-2440","HP-BK-0160: FS, HE-EL-2410: SS, HE-EL-2440: FF",HP-BK-0180,HP-BK-0180: FS,2024-05-06 17:30:00,2024-08-22 17:30:00,108
HP-ME-1070,"RFQ, Receipt of Bid for Manual/Ball/ Globe/ Check/ Plug Valves",38,P2543-R01-Oct24..1.1.BK.1.1,"HE-PI-1020, HE-PL-1690","HE-PI-1020: FS, HE-PL-1690: FS","HP-ME-1080, HE-PI-1080, HE-PL-2270","HP-ME-1080: FS, HE-PI-1080: FS, HE-PL-2270: FS",2023-12-01 00:00:00,2024-01-26 00:00:00,56
HP-ME-1080,Prepare TBE and Company approval for Manual/ Ball/ Globe/ Check/ Plug Valves,3,P2543-R01-Oct24..1.1.BK.1.1,"HP-ME-1070, HE-PI-1080, HE-PI-1110, HE-PL-2270, HE-PL-2300","HP-ME-1070: FS, HE-PI-1080: SS, HE-PI-1110: FF, HE-PL-2270: SS, HE-PL-2300: FF",HP-ME-1090,HP-ME-1090: FS,2024-03-16 00:00:00,2024-03-22 00:00:00,6
HP-ME-1090,Commercial Clarifications & Placement of PO for Manual/ Ball/ Globe/ Check/ Plug Valves,3,P2543-R01-Oct24..1.1.BK.1.1,"HP-ME-1080, HE-PI-1060, HE-PI-1110","HP-ME-1080: FS, HE-PI-1060: FS, HE-PI-1110: FS","HM-PL-0190, HM-PL-0150, ML1043-C14, ML1369-C21","HM-PL-0190: FS, HM-PL-0150: FS, ML1043-C14: FF, ML1369-C21: FF",2024-03-23 00:00:00,2024-03-29 00:00:00,6
HP-BK-550,"RFQ, Receipt of Bid for Cable Gland & Termination",10,P2543-R01-Oct24..1.1.BK.3.1,HE-EL-2010,HE-EL-2010: FS,"HP-BK-540, HE-EL-2360","HP-BK-540: FS, HE-EL-2360: FS",2024-08-12 07:30:00,2024-08-23 17:30:00,11
HP-BK-540,Prepare TBE and Company approval for Cable Gland & Termination,6,P2543-R01-Oct24..1.1.BK.3.1,"HP-BK-550, HE-EL-2360","HP-BK-550: FS, HE-EL-2360: FF",HP-BK-530,HP-BK-530: FS,2024-08-26 07:30:00,2024-09-02 17:30:00,7
HP-BK-530,Commercial Clarifications & Placement of PO for  Cable Gland & Termination,9,P2543-R01-Oct24..1.1.BK.3.1,HP-BK-540,HP-BK-540: FS,HM-EL-530,HM-EL-530: FS,2024-09-03 07:30:00,2024-09-13 17:30:00,10
HP-BK-0210,"RFQ, Receipt of Bid for MCT",6,P2543-R01-Oct24..1.1.BK.16.1,HE-EL-1960,HE-EL-1960: FS,"ML1549-D32, HP-BK-0220","ML1549-D32: FF, HP-BK-0220: FS",2024-05-31 07:30:00,2024-06-09 17:30:00,9
HS-GN-0250,"RFQ, Receipt of Bid  - Modification of Exiting CTMM",22,P2543-R01-Oct24..1.1.BK.10,HE-IC-1930,HE-IC-1930: FS,HS-GN-0280,HS-GN-0280: FS,2023-10-30 00:00:00,2023-11-29 00:00:00,30
HS-GN-0280,Prepare TBE and Company approval - Modification of Exiting CTMM,40,P2543-R01-Oct24..1.1.BK.10,"HS-GN-0250, HE-IC-2440","HS-GN-0250: FS, HE-IC-2440: FF",HS-GN-0290,HS-GN-0290: FS,2023-11-30 00:00:00,2024-01-29 00:00:00,60
HS-GN-0290,Commercial Clarifications & Placement of PO - Modification of Exiting CTMM,14,P2543-R01-Oct24..1.1.BK.10,HS-GN-0280,HS-GN-0280: FS,"ML1549-D32, C-MAQTA-EI-1000, C-MAQTA-TE-1000, C-MAQTA-TE-1010, C-541CR-EI-1020, C-541CR-TE-1000, C-577-TE-1000, C-601-TE-1000","ML1549-D32: FF, C-MAQTA-EI-1000: FS, C-MAQTA-TE-1000: FS, C-MAQTA-TE-1010: FS, C-541CR-EI-1020: FS, C-541CR-TE-1000: FS, C-577-TE-1000: FS, C-601-TE-1000: FS",2024-01-29 00:00:00,2024-02-16 00:00:00,18
HS-GN-0430,"RFQ, Receipt of Bid   - Modification of Existing DCS",34,P2543-R01-Oct24..1.1.BK.18,"HE-IC-0190, HE-IC-0550, HE-IC-0230, HE-IC-0290, HE-IC-0250","HE-IC-0190: FS, HE-IC-0550: FS, HE-IC-0230: FS, HE-IC-0290: FS, HE-IC-0250: FS",HS-GN-0460,HS-GN-0460: FS,2024-01-26 00:00:00,2024-03-15 00:00:00,49
HS-GN-0460,Prepare TBE and Company approval - Modification of Existing DCS,43,P2543-R01-Oct24..1.1.BK.18,HS-GN-0430,HS-GN-0430: FS,HS-GN-0470,HS-GN-0470: FS,2024-03-31 00:00:00,2024-06-05 00:00:00,66
HS-GN-0470,Commercial Clarifications & Placement of PO - Modification of Existing DCS,2,P2543-R01-Oct24..1.1.BK.18,HS-GN-0460,HS-GN-0460: FS,"C-COM-790, C-MAQTA-EI-1000, C-MAQTA-TE-1000, C-MAQTA-TE-1010, C-541CR-EI-1020, C-541CR-TE-1000, C-577-TE-1000, C-601-TE-1000","C-COM-790: FS, C-MAQTA-EI-1000: FS, C-MAQTA-TE-1000: FS, C-MAQTA-TE-1010: FS, C-541CR-EI-1020: FS, C-541CR-TE-1000: FS, C-577-TE-1000: FS, C-601-TE-1000: FS",2024-06-06 00:00:00,2024-06-10 00:00:00,4
HS-GN-0370,"RFQ, Receipt of Bid - Modification of Exiting SMC / SCADA",34,P2543-R01-Oct24..1.1.BK.14,"HE-IC-1930, HE-IC-2880","HE-IC-1930: FS, HE-IC-2880: FS","HS-GN-0400, HE-IC-2900","HS-GN-0400: FS, HE-IC-2900: FS",2024-01-26 00:00:00,2024-03-15 00:00:00,49
HS-GN-0400,Prepare TBE and Company approval - Modification of Exiting SMC / SCADA,38,P2543-R01-Oct24..1.1.BK.14,"HS-GN-0370, HE-IC-2440","HS-GN-0370: FS, HE-IC-2440: FF",HS-GN-0410,HS-GN-0410: FS,2024-04-11 00:00:00,2024-06-05 00:00:00,55
HS-GN-0410,Commercial Clarifications & Placement of PO - Modification of Exiting SMC / SCADA,3,P2543-R01-Oct24..1.1.BK.14,HS-GN-0400,HS-GN-0400: FS,"C-COM-790, HE-IC-2790, C-MAQTA-EI-1000, C-MAQTA-TE-1000, C-MAQTA-TE-1010, C-541CR-EI-1020, C-541CR-TE-1000, C-577-TE-1000, C-601-TE-1000","C-COM-790: FS, HE-IC-2790: FS, C-MAQTA-EI-1000: FS, C-MAQTA-TE-1000: FS, C-MAQTA-TE-1010: FS, C-541CR-EI-1020: FS, C-541CR-TE-1000: FS, C-577-TE-1000: FS, C-601-TE-1000: FS",2024-06-06 07:30:00,2024-06-10 17:30:00,4
HS-GN-0310,"RFQ, Receipt of Bid - Modification of Existing Telecom System",28,P2543-R01-Oct24..1.1.BK.12,"HE-IC-620, HE-IC-2730","HE-IC-620: SS, HE-IC-2730: FS",HS-GN-0340,HS-GN-0340: FS,2023-11-29 00:00:00,2024-01-10 00:00:00,42
HS-GN-0340,Prepare TBE and Company approval - Modification of Existing Telecom System,93,P2543-R01-Oct24..1.1.BK.12,HS-GN-0310,HS-GN-0310: FS,HS-GN-0350,HS-GN-0350: FS,2024-01-11 00:00:00,2024-05-29 00:00:00,139
HS-GN-0350,Commercial Clarifications & Placement of PO - Modification of Existing Telecom System,6,P2543-R01-Oct24..1.1.BK.12,HS-GN-0340,HS-GN-0340: FS,"ML1549-D32, C-MAQTA-EI-1000, C-MAQTA-TE-1000, C-MAQTA-TE-1010, C-541CR-EI-1020, C-541CR-TE-1000, C-577-TE-1000, C-601-TE-1000","ML1549-D32: FF, C-MAQTA-EI-1000: FS, C-MAQTA-TE-1000: FS, C-MAQTA-TE-1010: FS, C-541CR-EI-1020: FS, C-541CR-TE-1000: FS, C-577-TE-1000: FS, C-601-TE-1000: FS",2024-05-30 00:00:00,2024-06-07 00:00:00,8
HP-BK-0260,1st Civil Bulk material MTO,12,P2543-R01-Oct24..1.1.BK.11.1,"HE-CS-1510, HE-CS-0230","HE-CS-1510: FS, HE-CS-0230: FS",HM-CS-0010,HM-CS-0010: FS,2024-05-02 07:30:00,2024-05-19 17:30:00,17
HP-BK-0340,1st Piping Bulk material MTO,14,P2543-R01-Oct24..1.1.BK.4.1,HE-PI-1260,HE-PI-1260: FS,HM-PI-0010,HM-PI-0010: FS,2024-03-31 00:00:00,2024-04-25 00:00:00,25
HP-BK-0350,Final Piping Bulk material MTO,8,P2543-R01-Oct24..1.1.BK.4.1,"HE-PI-1300, HE-PI-1400","HE-PI-1300: FF, HE-PI-1400: FS",HM-PI-0020,HM-PI-0020: FS,2024-10-01 07:30:00,2024-10-10 17:30:00,9
HP-BK-520,1st Piping Special Items MTO,15,P2543-R01-Oct24..1.1.BK.2.1,HE-PI-1260,HE-PI-1260: FS,"HM-PI-60, HP-BK-510","HM-PI-60: FS, HP-BK-510: FS",2024-07-29 07:30:00,2024-08-16 17:30:00,18
HP-BK-510,Final Piping Special Items MTO,10,P2543-R01-Oct24..1.1.BK.2.1,HP-BK-520,HP-BK-520: FS,HM-PI-50,HM-PI-50: FS,2024-08-17 07:30:00,2024-08-30 17:30:00,13
HP-BK-0390,Final Pipeline Bulk material MTO,5,P2543-R01-Oct24..1.1.BK.6.1,HE-PL-3270,HE-PL-3270: FS,HM-PL-0860,HM-PL-0860: FS,2024-07-29 07:30:00,2024-08-02 17:30:00,4
HP-BK-0380,1st Pipeline Bulk material MTO,14,P2543-R01-Oct24..1.1.BK.6.1,"HE-PL-3230, HE-PL-3260","HE-PL-3230: FS, HE-PL-3260: FS",HM-PL-0850,HM-PL-0850: FS,2024-08-07 07:30:00,2024-08-26 17:30:00,19
HP-BK-0420,1st Electrical Bulk material MTO,29,P2543-R01-Oct24..1.1.BK.7.1,HE-EL-1810,HE-EL-1810: FS,HM-EL-0490,HM-EL-0490: FS,2024-08-19 07:30:00,2024-09-26 17:30:00,38
HP-BK-0460,1st Instrumentation Bulk material MTO,5,P2543-R01-Oct24..1.1.BK.8.1,HE-IC-2590,HE-IC-2590: FS,HM-IC-0010,HM-IC-0010: FS,2024-10-15 07:30:00,2024-10-21 17:30:00,6
HP-BK-0500,1st Telecom Bulk material MTO,10,P2543-R01-Oct24..1.1.BK.9.1,HE-TL-0850,HE-TL-0850: FS,HM-TL-0010,HM-TL-0010: FS,2024-10-01 07:30:00,2024-10-14 17:30:00,13
HS-GN-0070,Prepare/Issue Scope of Work - HSE Studies,4,P2543-R01-Oct24..1.2.13.9,"HE-HS-0070, HE-HS-0010","HE-HS-0070: SS, HE-HS-0010: SS",HS-GN-0080,HS-GN-0080: FS 2,2023-07-24 00:00:00,2023-07-28 00:00:00,4
HS-GN-0080,Receive Bids - HSE Studies,4,P2543-R01-Oct24..1.2.13.9,HS-GN-0070,HS-GN-0070: FS 2,HS-GN-0100,HS-GN-0100: FS,2023-08-01 00:00:00,2023-08-07 00:00:00,6
HS-GN-0100,Complete Evaluation (Internal) - HSE Studies,4,P2543-R01-Oct24..1.2.13.9,HS-GN-0080,HS-GN-0080: FS,HS-GN-0110,HS-GN-0110: FS,2023-08-26 00:00:00,2023-09-01 00:00:00,6
HS-GN-0110,Place LOA/FOA - HSE Studies,17,P2543-R01-Oct24..1.2.13.9,HS-GN-0100,HS-GN-0100: FS,"HE-HS-0970, HE-PI-0150, HE-HS-0670, HE-HS-0490, HE-PI-0130, C-COM-790, CAB-5290, HE-WS-0050, HE-WS-0020, HE-HS-0190, HE-HS-0130","HE-HS-0970: FS, HE-PI-0150: FS, HE-HS-0670: FS, HE-HS-0490: FS, HE-PI-0130: FS, C-COM-790: FS, CAB-5290: FS, HE-WS-0050: FS, HE-WS-0020: FS, HE-HS-0190: FS, HE-HS-0130: FS",2023-09-01 00:00:00,2023-09-26 00:00:00,25
HS-GN-0130,Prepare/Issue Scope of Work - Topographical survey & Geotechnical Investigation,9,P2543-R01-Oct24..1.2.13.4,ML1001,ML1001: SS 3,HS-GN-0140,HS-GN-0140: FS,2023-07-13 00:00:00,2023-07-27 00:00:00,14
HS-GN-0140,Receive Bids - Topographical survey & Geotechnical Investigation,4,P2543-R01-Oct24..1.2.13.4,HS-GN-0130,HS-GN-0130: FS,HS-GN-0160,HS-GN-0160: FS,2023-08-01 00:00:00,2023-08-07 00:00:00,6
HS-GN-0160,Complete Evaluation (Internal) - Topographical survey & Geotechnical Investigation,4,P2543-R01-Oct24..1.2.13.4,HS-GN-0140,HS-GN-0140: FS,HS-GN-0170,HS-GN-0170: FS,2023-08-26 00:00:00,2023-09-01 00:00:00,6
HS-GN-0170,Place LOA/FOA - Topographical survey & Geotechnical Investigation,2,P2543-R01-Oct24..1.2.13.4,HS-GN-0160,HS-GN-0160: FS,"ML1007-B02, HE-SS-0030, HE-SS-0040","ML1007-B02: FS, HE-SS-0030: FS, HE-SS-0040: FS",2023-09-01 00:00:00,2023-09-05 00:00:00,4
HS-GN-0490,Prepare/Issue Scope of Work - Cathodic Protection Work,27,P2543-R01-Oct24..1.2.13.11,"HE-PL-2420, HE-CP-150","HE-PL-2420: FS, HE-CP-150: FS",HS-GN-0500,HS-GN-0500: FS,2023-11-22 00:00:00,2024-01-02 00:00:00,41
HS-GN-0500,Receive Bids -  Cathodic Protection Work,13,P2543-R01-Oct24..1.2.13.11,HS-GN-0490,HS-GN-0490: FS,HS-GN-0520,HS-GN-0520: FS,2024-02-26 00:00:00,2024-03-15 00:00:00,18
HS-GN-0520,Complete Evaluation (Internal) -  Cathodic Protection Work,9,P2543-R01-Oct24..1.2.13.11,HS-GN-0500,HS-GN-0500: FS,HS-GN-0530,HS-GN-0530: FS,2024-03-15 00:00:00,2024-03-29 00:00:00,14
HS-GN-0530,Place LOA/FOA -  Cathodic Protection Work,1,P2543-R01-Oct24..1.2.13.11,HS-GN-0520,HS-GN-0520: FS,"ML1038-C10, HM-PL-0350, C-56-HC01-PL-CA-5220, C-56-HC01-PL-CA-5200, C-56-HC01-PL-CA-5400, C-56-HC01-PL-CA-5430, C-52-HG01-PL-CA-5200, C-52-HG01-PL-CA-5220","ML1038-C10: FF, HM-PL-0350: FS, C-56-HC01-PL-CA-5220: FS, C-56-HC01-PL-CA-5200: FS, C-56-HC01-PL-CA-5400: FS, C-56-HC01-PL-CA-5430: FS, C-52-HG01-PL-CA-5200: FS, C-52-HG01-PL-CA-5220: FS",2024-05-17 00:00:00,2024-05-20 00:00:00,3
HS-CN-0060,NDRC RFQ & Quotation Receipt,5,P2543-R01-Oct24..1.2.12.2,"HE-PL-0170, ML1002","HE-PL-0170: SS, ML1002: FS",HS-CN-0080,HS-CN-0080: FS,2023-08-31 00:00:00,2023-09-07 00:00:00,7
HS-CN-0080,NDRC  Complete Evaluation (Internal),19,P2543-R01-Oct24..1.2.12.2,HS-CN-0060,HS-CN-0060: FS,HS-CN-0090,HS-CN-0090: FS,2023-09-08 00:00:00,2023-10-05 00:00:00,27
HS-CN-0090,NDRC Subcontract Award,30,P2543-R01-Oct24..1.2.12.2,HS-CN-0080,HS-CN-0080: FS,"ML1579-E03, ML1679-E13, C-56-HC01-PL-ME-4800, C-56-01HG-PL-CA-5220, C-56-01HG-PL-CA-5420, C-56-01HG-PL-ME-4800, C-56-01HG-PL-ME-5000, C-52-06CR-PL-CA-5200, C-52-06CR-PL-ME-7400, C-52-0506-PL-CA-5200, C-52-0506-PL-ME-7400, C-52-0405-PL-CA-5200, C-52-0405-PL","ML1579-E03: FS, ML1679-E13: FS, C-56-HC01-PL-ME-4800: FF, C-56-01HG-PL-CA-5220: FS, C-56-01HG-PL-CA-5420: FS, C-56-01HG-PL-ME-4800: FF, C-56-01HG-PL-ME-5000: FF, C-52-06CR-PL-CA-5200: FF, C-52-06CR-PL-ME-7400: FF, C-52-0506-PL-CA-5200: FF, C-52-0506-PL-ME-",2023-10-06 00:00:00,2023-11-17 00:00:00,42
HS-CN-0110,Testing & Precommissioning RFQ & Quotation Receipt,27,P2543-R01-Oct24..1.2.12.3,ML1002,ML1002: FS,HS-CN-0130,HS-CN-0130: FS,2023-11-22 00:00:00,2024-01-02 00:00:00,41
HS-CN-0130,Testing & Precommissioning Complete Evaluation (Internal),35,P2543-R01-Oct24..1.2.12.3,HS-CN-0110,HS-CN-0110: FS,HS-CN-0140,HS-CN-0140: FS,2024-03-06 00:00:00,2024-05-02 00:00:00,57
HS-CN-0140,Testing & Precommissioning Subcontract Award,11,P2543-R01-Oct24..1.2.12.3,HS-CN-0130,HS-CN-0130: FS,"CCM-PM4540, PRECOM-56-PL-1000, PRECOM-56-PL-1000, PRECOM-56-EB2-1000, PRECOM-56-EB2-1000, PRECOM-56-G-1000, PRECOM-56-59101-1000, PRECOM-56-59101-1000, PRECOM-56-PR-1000, PRECOM-56-HGHC-1000, PRECOM-52-59806-1000, PRECOM-52-06CR-1000, PRECOM-52-EB1-1000, P","CCM-PM4540: SS, PRECOM-56-PL-1000: SS, PRECOM-56-PL-1000: FS, PRECOM-56-EB2-1000: SS, PRECOM-56-EB2-1000: FS, PRECOM-56-G-1000: FS, PRECOM-56-59101-1000: SS, PRECOM-56-59101-1000: FS, PRECOM-56-PR-1000: FS, PRECOM-56-HGHC-1000: FS, PRECOM-52-59806-1000: FS",2024-05-03 00:00:00,2024-05-20 00:00:00,17
HS-CN-0160,NDT / PWHT RFQ & Quotation Receipt,20,P2543-R01-Oct24..1.2.12.4,"HE-SS-0030, ML1002","HE-SS-0030: SS, ML1002: FS","HS-CN-750, HS-CN-710, HS-CN-0180","HS-CN-750: FS, HS-CN-710: FS 15, HS-CN-0180: FS",2023-09-07 00:00:00,2023-10-05 00:00:00,28
HS-CN-0180,NDT / PWHT   Complete Evaluation (Internal),20,P2543-R01-Oct24..1.2.12.4,HS-CN-0160,HS-CN-0160: FS,HS-CN-0190,HS-CN-0190: FS,2023-10-06 00:00:00,2023-11-03 00:00:00,28
HS-CN-0190,NDT / PWHT Subcontract Award,10,P2543-R01-Oct24..1.2.12.4,HS-CN-0180,HS-CN-0180: FS,"ML1559-E01, C-56-PL-607-PI-1000, C-56-PL-607-PI-1400, C-56-PL-607-PI-2000, C-56-G-HT-PI-1000, C-56-G-HT-PI-1200, C-56-G-HT-PI-1400, C-56-G-HT-PI-2000, C-56-HC01-PL-ME-4000, C-56-PR-838-PI-1000, C-56-PR-838-PI-1200, C-56-PR-838-PI-1400, C-56-PR-838-PI-2000,","ML1559-E01: FS 30, C-56-PL-607-PI-1000: FS, C-56-PL-607-PI-1400: FS, C-56-PL-607-PI-2000: FS, C-56-G-HT-PI-1000: FS, C-56-G-HT-PI-1200: FS, C-56-G-HT-PI-1400: FS, C-56-G-HT-PI-2000: FS, C-56-HC01-PL-ME-4000: FS, C-56-PR-838-PI-1000: FS, C-56-PR-838-PI-1200",2023-11-03 00:00:00,2023-11-17 00:00:00,14
HS-CN-0210,CP Drilling & Earthing Drilling RFQ & Quotation Receipt,27,P2543-R01-Oct24..1.2.12.5,"HE-CP-230, ML1002","HE-CP-230: FS 10, ML1002: FS",HS-CN-0230,HS-CN-0230: FS,2023-11-22 00:00:00,2024-01-02 00:00:00,41
HS-CN-0230,CP Drilling & Earthing Drilling  Complete Evaluation (Internal),8,P2543-R01-Oct24..1.2.12.5,HS-CN-0210,HS-CN-0210: FS,HS-CN-0240,HS-CN-0240: FS,2024-01-03 00:00:00,2024-01-15 00:00:00,12
HS-CN-0240,CP Drilling & Earthing Drilling Subcontract Award,21,P2543-R01-Oct24..1.2.12.5,HS-CN-0230,HS-CN-0230: FS,"C-56-591-01-EI-1600, C-52-598-06-EI-1210, C-52-598-06-EI-1400, C-52-598-06-CA-1000, C-52-598-05-EI-1210, C-52-598-05-EI-1400, C-52-598-05-CA-1000, C-52-598-04-EI-1210, C-52-598-04-EI-1400, C-52-598-03-EI-1210, C-52-598-03-EI-1400, C-52-598-03-CA-1000, C-52","C-56-591-01-EI-1600: FS, C-52-598-06-EI-1210: FS, C-52-598-06-EI-1400: FS, C-52-598-06-CA-1000: FS, C-52-598-05-EI-1210: FS, C-52-598-05-EI-1400: FS, C-52-598-05-CA-1000: FS, C-52-598-04-EI-1210: FS, C-52-598-04-EI-1400: FS, C-52-598-03-EI-1210: FS, C-52-5",2024-02-26 00:00:00,2024-03-27 00:00:00,30
HS-CN-0260,FOC Splicing / Termination RFQ & Quotation Receipt,5,P2543-R01-Oct24..1.2.12.6,"ML1002, HP-BK-0060","ML1002: FS, HP-BK-0060: FS",HS-CN-0280,HS-CN-0280: FS,2023-12-22 00:00:00,2023-12-29 00:00:00,7
HS-CN-0280,FOC Splicing / Termination Complete Evaluation (Internal),12,P2543-R01-Oct24..1.2.12.6,HS-CN-0260,HS-CN-0260: FS,HS-CN-0290,HS-CN-0290: FS,2024-02-26 00:00:00,2024-03-13 00:00:00,16
HS-CN-0290,FOC Splicing / Termination Subcontract Award,4,P2543-R01-Oct24..1.2.12.6,HS-CN-0280,HS-CN-0280: FS,"ML1030, C-56-PL-607-TE-1200, C-56-PL-607-TE-1400, C-56-PL-607-TE-1600, C-56-EB2-TE-1000, C-56-HC01-PL-TE-8200, C-56-HC01-PL-TE-8400, C-56-01HG-PL-TE-8200, C-56-01HG-PL-TE-8400, C-56-PR-838-TE-1000, C-56-591-01-TE-1000, C-52-06CR-PL-TE-8200, C-52-0506-PL-TE","ML1030: FS, C-56-PL-607-TE-1200: FS, C-56-PL-607-TE-1400: FS, C-56-PL-607-TE-1600: FS, C-56-EB2-TE-1000: FS, C-56-HC01-PL-TE-8200: FS, C-56-HC01-PL-TE-8400: SS, C-56-01HG-PL-TE-8200: FS, C-56-01HG-PL-TE-8400: FS, C-56-PR-838-TE-1000: FS, C-56-591-01-TE-100",2024-03-14 00:00:00,2024-03-20 00:00:00,6
HS-CN-0410,OHPL RFQ & Quotation Receipt,3,P2543-R01-Oct24..1.2.12.7,"ML1002, HE-IC-1010","ML1002: FS, HE-IC-1010: FS 76",HS-CN-0430,HS-CN-0430: FS,2024-01-03 00:00:00,2024-01-07 00:00:00,4
HS-CN-0430,OHPL Complete Evaluation (Internal),10,P2543-R01-Oct24..1.2.12.7,HS-CN-0410,HS-CN-0410: FS,HS-CN-0440,HS-CN-0440: FS,2024-01-08 00:00:00,2024-01-22 00:00:00,14
HS-CN-0440,OHPL Subcontract Award,3,P2543-R01-Oct24..1.2.12.7,HS-CN-0430,HS-CN-0430: FS,"C-52-OHPL-EL-1400, C-52-OHPL-EL-2000","C-52-OHPL-EL-1400: FS, C-52-OHPL-EL-2000: FS",2024-01-23 00:00:00,2024-01-26 00:00:00,3
HS-CN-0460,Earthworks RFQ & Quotation Receipt,20,P2543-R01-Oct24..1.2.12.10,"HE-CS-1570, ML1002","HE-CS-1570: FS, ML1002: FS",HS-CN-0480,HS-CN-0480: FS,2023-08-31 00:00:00,2023-09-28 00:00:00,28
HS-CN-0480,Earthworks Complete Evaluation (Internal),4,P2543-R01-Oct24..1.2.12.10,HS-CN-0460,HS-CN-0460: FS,HS-CN-0490,HS-CN-0490: FS,2023-09-29 00:00:00,2023-10-05 00:00:00,6
HS-CN-0490,Earthworks Subcontract Award,26,P2543-R01-Oct24..1.2.12.10,HS-CN-0480,HS-CN-0480: FS,C-52-06CR-PL-CI-1400,C-52-06CR-PL-CI-1400: FS,2023-10-06 00:00:00,2023-11-13 00:00:00,38
HS-CN-0510,Hot Tapping RFQ & Quotation Receipt,19,P2543-R01-Oct24..1.2.12.11,"ML1002, HE-PR-0860","ML1002: FS, HE-PR-0860: FS 14",HS-CN-0530,HS-CN-0530: FS,2023-09-16 00:00:00,2023-10-13 00:00:00,27
HS-CN-0530,Hot Tapping Complete Evaluation (Internal),25,P2543-R01-Oct24..1.2.12.11,HS-CN-0510,HS-CN-0510: FS,HS-CN-0540,HS-CN-0540: FS,2023-10-13 00:00:00,2023-11-17 00:00:00,35
HS-CN-0540,Hot Tapping Subcontract Award,1,P2543-R01-Oct24..1.2.12.11,HS-CN-0530,HS-CN-0530: FS,"HE-PL-0430, C-56-G-HT101-ME-1000, C-52-D-HT002-ME-1000, C-36-KM-HT03-ME-1000, C-36-KM-HT04-ME-1000","HE-PL-0430: FS, C-56-G-HT101-ME-1000: FS, C-52-D-HT002-ME-1000: FS, C-36-KM-HT03-ME-1000: FS, C-36-KM-HT04-ME-1000: FS",2023-12-12 00:00:00,2023-12-13 00:00:00,1
HS-CN-0560,Building RFQ & Quotation Receipt,14,P2543-R01-Oct24..1.2.12.12,ML1002,ML1002: FS,HS-CN-0580,HS-CN-0580: FS,2023-12-13 00:00:00,2024-01-03 00:00:00,21
HS-CN-0580,Building Complete Evaluation (Internal),42,P2543-R01-Oct24..1.2.12.12,HS-CN-0560,HS-CN-0560: FS,HS-CN-0590,HS-CN-0590: FS,2024-02-26 00:00:00,2024-05-02 00:00:00,66
HS-CN-0590,Building Subcontract Award,4,P2543-R01-Oct24..1.2.12.12,HS-CN-0580,HS-CN-0580: FS,"C-56-EB2-ME-1000, C-56-EB2-ME-1010, C-56-EB2-ME-1200, C-52-EB1-ME-1000","C-56-EB2-ME-1000: FS, C-56-EB2-ME-1010: FS, C-56-EB2-ME-1200: FS, C-52-EB1-ME-1000: FS",2024-05-03 00:00:00,2024-05-09 00:00:00,6
HS-CN-0610,E&I Works RFQ & Quotation Receipt,22,P2543-R01-Oct24..1.2.12.13,"HP-ME-0860, ML1002","HP-ME-0860: FS, ML1002: FS",HS-CN-0630,HS-CN-0630: FS,2023-11-08 00:00:00,2023-12-11 00:00:00,33
HS-CN-0630,E&I Works  Complete Evaluation (Internal),14,P2543-R01-Oct24..1.2.12.13,HS-CN-0610,HS-CN-0610: FS,HS-CN-0640,HS-CN-0640: FS,2024-03-31 00:00:00,2024-04-25 00:00:00,25
HS-CN-0640,E&I Works Subcontract Award,10,P2543-R01-Oct24..1.2.12.13,HS-CN-0630,HS-CN-0630: FS,"C-56-EB2-ME-1000, C-56-EB2-ME-1010, C-56-PR-838-CA-1000, C-56-PR-838-CA-1030, C-56-PR-838-EI-2000, C-56-PR-838-EI-2010, C-56-PR-838-EI-2040, C-52-06CR-PL-TE-8200, C-52-EB1-ME-1000, C-52-OHPL-EL-1000","C-56-EB2-ME-1000: FS, C-56-EB2-ME-1010: FS, C-56-PR-838-CA-1000: FS, C-56-PR-838-CA-1030: FS, C-56-PR-838-EI-2000: FS, C-56-PR-838-EI-2010: FS, C-56-PR-838-EI-2040: FS, C-52-06CR-PL-TE-8200: FS, C-52-EB1-ME-1000: FS, C-52-OHPL-EL-1000: FS",2024-04-25 00:00:00,2024-05-09 00:00:00,14
HS-CN-0660,Fence Works RFQ & Quotation Receipt,14,P2543-R01-Oct24..1.2.12.14,ML1002,ML1002: FS,HS-CN-0680,HS-CN-0680: FS,2023-12-08 00:00:00,2023-12-28 00:00:00,20
HS-CN-0680,Fence Works Complete Evaluation (Internal),39,P2543-R01-Oct24..1.2.12.14,HS-CN-0660,HS-CN-0660: FS,HS-CN-0690,HS-CN-0690: FS,2024-02-26 00:00:00,2024-04-29 00:00:00,63
HS-CN-0690,Fence Works Subcontract Award,28,P2543-R01-Oct24..1.2.12.14,HS-CN-0680,HS-CN-0680: FS,"C-56-PL-607-CI-2000, C-56-PL-607-CI-3000, C-56-G-HT-CI-2000, C-56-G-HT-CI-1420, C-56-PR-838-CI-2000, C-56-PR-838-CI-3000, C-56-591-01-CI-2000, C-56-591-01-CI-3000, C-52-06CR-FENCE-1050, C-52-598-06-CI-2000, C-52-598-06-CI-3000, C-52-598-06-CI-3010, C-52-59","C-56-PL-607-CI-2000: FS, C-56-PL-607-CI-3000: FS, C-56-G-HT-CI-2000: FS, C-56-G-HT-CI-1420: FS, C-56-PR-838-CI-2000: FS, C-56-PR-838-CI-3000: FS, C-56-591-01-CI-2000: FS, C-56-591-01-CI-3000: FS, C-52-06CR-FENCE-1050: FS, C-52-598-06-CI-2000: FS, C-52-598-",2024-04-30 00:00:00,2024-06-07 00:00:00,38
HS-CN-750,Pipe Internal Coating RFQ & Quotation Receipt,7,P2543-R01-Oct24..1.2.12.16,HS-CN-0160,HS-CN-0160: FS,HS-CN-760,HS-CN-760: FS,2023-09-11 00:00:00,2023-09-20 00:00:00,9
HS-CN-760,Pipe Internal Coating Complete Evaluation (Internal),11,P2543-R01-Oct24..1.2.12.16,HS-CN-750,HS-CN-750: FS,HS-CN-730,HS-CN-730: FS,2023-09-20 00:00:00,2023-10-05 00:00:00,15
HS-CN-730,Pipe Internal Coating Subcontract Award,3,P2543-R01-Oct24..1.2.12.16,HS-CN-760,HS-CN-760: FS,C-52-06CR-PL-ME-2800,C-52-06CR-PL-ME-2800: FS,2023-10-05 00:00:00,2023-10-10 00:00:00,5
HS-CN-710,Automatic Welding RFQ & Quotation Receipt,26,P2543-R01-Oct24..1.2.12.15,HS-CN-0160,HS-CN-0160: FS 15,HS-CN-720,HS-CN-720: FS,2023-08-30 00:00:00,2023-10-05 00:00:00,36
HS-CN-720,Automatic Welding Complete Evaluation (Internal),34,P2543-R01-Oct24..1.2.12.15,HS-CN-710,HS-CN-710: FS,"HS-CN-690, C-56-01HG-PL-ME-3600","HS-CN-690: FS, C-56-01HG-PL-ME-3600: FS",2023-10-06 00:00:00,2023-11-23 00:00:00,48
HS-CN-690,Automatic Welding Subcontract Award,8,P2543-R01-Oct24..1.2.12.15,HS-CN-720,HS-CN-720: FS,C-52-06CR-PL-ME-3600,C-52-06CR-PL-ME-3600: FS,2023-11-15 00:00:00,2023-11-25 00:00:00,10
HM-ME-0010,Vendor Document Review of Custody Metering Skid,137,P2543-R01-Oct24..PR.26.LL.22.2,"ML1259-C09, HP-ME-0030","ML1259-C09: FS, HP-ME-0030: FS",HM-ME-0020,HM-ME-0020: FS,2024-03-13 00:00:00,2024-07-27 18:00:00,136
HM-ME-0110,Vendor Document Review of Pressure Reduction Skid,73,P2543-R01-Oct24..PR.26.LL.21.2,"ML1039-C08, HP-ME-0080","ML1039-C08: FS, HP-ME-0080: FS",HM-ME-0120,HM-ME-0120: SS,2024-04-17 00:00:00,2024-06-28 18:00:00,72
HM-ME-0210,Vendor Document Review of Leak Detection System,79,P2543-R01-Oct24..PR.26.LL.17.2,"HP-ME-0130, ML1289-C11","HP-ME-0130: FS, ML1289-C11: FF",HM-ME-0220,HM-ME-0220: FS,2024-05-17 00:00:00,2024-08-03 18:00:00,78
HM-ME-0310,Vendor Document Review of Filter Package,71,P2543-R01-Oct24..PR.26.LL.11.2,HP-ME-0180,HP-ME-0180: FS,HM-ME-0320,HM-ME-0320: SS,2024-04-05 00:00:00,2024-06-14 18:00:00,70
HM-ME-0410,Vendor Document Review of Pig Launchers & Receivers,29,P2543-R01-Oct24..PR.26.LL.12.2,"HP-ME-0230, ML1279-C05","HP-ME-0230: FS, ML1279-C05: FF","HE-PI-1140, HE-CS-0630, HE-PI-0620, HM-ME-0420, HE-PI-0740, HE-PI-0680, HE-PI-0170, HE-CO-170, HE-CS-0610","HE-PI-1140: SS 15, HE-CS-0630: SS 20, HE-PI-0620: FS, HM-ME-0420: FS, HE-PI-0740: SS 8, HE-PI-0680: FS, HE-PI-0170: FS, HE-CO-170: FS, HE-CS-0610: FS",2024-02-24 00:00:00,2024-03-24 00:00:00,29
HM-ME-0720,Vendor Document Review of AC UPS,18,P2543-R01-Oct24..PR.26.LL.8.2,"HP-ME-0380, ML1319-C16","HP-ME-0380: FS, ML1319-C16: FS",HM-ME-0730,HM-ME-0730: FS,2024-05-13 00:00:00,2024-05-30 18:00:00,17
HM-ME-0730,Manufacturing & Assembly of AC UPS,113,P2543-R01-Oct24..PR.26.LL.8.2,"HM-ME-0720, HE-EL-0950","HM-ME-0720: FS, HE-EL-0950: FS",HM-ME-0740,HM-ME-0740: FS,2024-06-21 08:00:00,2024-10-11 18:00:00,112
HM-ME-1120,Vendor Document Review of Active/ Passive Cooled Shelter,124,P2543-R01-Oct24..PR.26.LL.5.2,"HP-ME-0580, ML1309-C15","HP-ME-0580: FS, ML1309-C15: FS",HM-ME-1130,HM-ME-1130: FF 20,2024-06-17 00:00:00,2024-10-18 18:00:00,123
HM-ME-1220,"Vendor Document Review of Telecom System (CCTV, Telephone, LAN, SDH, PIDS, IDS etc)",96,P2543-R01-Oct24..PR.26.LL.4.2,HP-ME-0630,HP-ME-0630: FS,HM-ME-1230,HM-ME-1230: FF,2024-06-27 00:00:00,2024-09-30 18:00:00,95
HM-ME-1420,Vendor Document Review of Gas Detectors,60,P2543-R01-Oct24..PR.26.LL.18.2,"ML1028-C20, HP-ME-0730, ML1269-C12","ML1028-C20: FS, HP-ME-0730: FS, ML1269-C12: FS",HM-ME-1430,HM-ME-1430: FS,2024-06-24 08:00:00,2024-08-22 18:00:00,59
HM-EL-0110,Vendor Document Review of FOC Cables,8,P2543-R01-Oct24..PR.26.LL.19.2,HP-BK-0080,HP-BK-0080: FS,HM-EL-0120,HM-EL-0120: FS,2024-05-07 00:00:00,2024-05-15 00:00:00,8
HM-EL-0120,Manufacturing & Assembly of FOC Cables,52,P2543-R01-Oct24..PR.26.LL.19.2,HM-EL-0110,HM-EL-0110: FS,"HM-EL-0130, HM-EL-0170","HM-EL-0130: FS, HM-EL-0170: FS",2024-05-15 00:00:00,2024-07-05 18:00:00,51
HM-EL-0130,Testing and Inspection of FOC Cables,8,P2543-R01-Oct24..PR.26.LL.19.2,HM-EL-0120,HM-EL-0120: FS,HM-EL-0140,HM-EL-0140: FS,2024-07-26 00:00:00,2024-08-02 18:00:00,7
HM-EL-0140,Packaging & Final Inspection-FOC Cables,40,P2543-R01-Oct24..PR.26.LL.19.2,HM-EL-0130,HM-EL-0130: FS,HM-EL-0150,HM-EL-0150: FS,2024-08-05 08:00:00,2024-09-13 18:00:00,39
HM-EL-0150,Ready for Dispatch of FOC Cables,17,P2543-R01-Oct24..PR.26.LL.19.2,HM-EL-0140,HM-EL-0140: FS,HM-EL-600,HM-EL-600: FS 21,2024-09-14 08:00:00,2024-09-30 18:00:00,16
HM-EL-0170,Transportation/ Custom Clearance/ Delivery at site of FOC Cables (Lot 1),7,P2543-R01-Oct24..PR.26.LL.19.3,HM-EL-0120,HM-EL-0120: FS,HM-EL-0180,HM-EL-0180: FS,2024-08-03 08:00:00,2024-08-09 18:00:00,6
HM-EL-0180,Receipt at site and inspection of FOC Cables (Lot 1),8,P2543-R01-Oct24..PR.26.LL.19.3,HM-EL-0170,HM-EL-0170: FS,"ML1057-D19, C-56-PL-607-TE-1200, C-56-PL-607-TE-1400, C-56-PL-607-TE-1600, C-56-EB2-TE-1000, C-56-HC01-PL-TE-8200, C-56-HC01-PL-TE-8400, C-56-01HG-PL-TE-8200, C-56-01HG-PL-TE-8400, C-56-PR-838-TE-1000, C-56-591-01-TE-1000, C-52-06CR-PL-TE-8200, C-52-0506-P","ML1057-D19: FF, C-56-PL-607-TE-1200: FS, C-56-PL-607-TE-1400: FS, C-56-PL-607-TE-1600: FS, C-56-EB2-TE-1000: FS, C-56-HC01-PL-TE-8200: FS, C-56-HC01-PL-TE-8400: FS, C-56-01HG-PL-TE-8200: FS, C-56-01HG-PL-TE-8400: FS, C-56-PR-838-TE-1000: FS, C-56-591-01-TE",2024-08-09 08:00:00,2024-08-16 18:00:00,7
HM-EL-600,Transportation/ Custom Clearance/ Delivery at site of FOC Cables (Lot 2),22,P2543-R01-Oct24..PR.26.LL.19.3,HM-EL-0150,HM-EL-0150: FS 21,HM-EL-610,HM-EL-610: FS,2024-10-01 00:00:00,2024-10-22 18:00:00,21
HM-EL-610,Receipt at site and inspection of FOC Cables (Lot 2),3,P2543-R01-Oct24..PR.26.LL.19.3,HM-EL-600,HM-EL-600: FS,"ML1057-D19, C-56-PL-607-TE-1200, C-56-PL-607-TE-1400, C-56-PL-607-TE-1600, C-56-EB2-TE-1000, C-56-HC01-PL-TE-8200, C-56-HC01-PL-TE-8400, C-56-01HG-PL-TE-8200, C-56-01HG-PL-TE-8400, C-56-PR-838-TE-1000, C-56-591-01-TE-1000, C-52-06CR-PL-TE-8200, C-52-0506-P","ML1057-D19: FF, C-56-PL-607-TE-1200: FS, C-56-PL-607-TE-1400: FS, C-56-PL-607-TE-1600: FS, C-56-EB2-TE-1000: FS, C-56-HC01-PL-TE-8200: FS, C-56-HC01-PL-TE-8400: FS, C-56-01HG-PL-TE-8200: FS, C-56-01HG-PL-TE-8400: FS, C-56-PR-838-TE-1000: FS, C-56-591-01-TE",2024-10-23 08:00:00,2024-10-25 18:00:00,2
HM-ME-0820,Vendor Document Review of Power Distribution Boards,39,P2543-R01-Oct24..PR.26.1.7.2,HP-ME-0430,HP-ME-0430: FS,HM-ME-0830,HM-ME-0830: FS,2024-08-24 17:30:00,2024-10-02 18:00:00,39
HM-ME-0920,Vendor Document Review of Distribution Transformer,70,P2543-R01-Oct24..PR.26.1.1.2,HP-ME-0480,HP-ME-0480: FS,HM-ME-0930,HM-ME-0930: FS,2024-07-27 08:00:00,2024-10-04 18:00:00,69
HM-ME-1320,"Vendor Document Review of Access Switch, Fiber Optic Patch Panel and Media Converter",107,P2543-R01-Oct24..PR.26.1.14.2,"ML1329-C17, HP-ME-0680, ML1339-C18","ML1329-C17: FS, HP-ME-0680: FS, ML1339-C18: FS",HM-ME-1330,HM-ME-1330: FF,2024-06-27 17:30:00,2024-10-12 18:00:00,107
HM-ME-1520,Vendor Document Review of Field Instruments,70,P2543-R01-Oct24..PR.26.1.15.2,"ML1269-C12, ML1028-C20, HP-ME-0780, HE-IC-2450","ML1269-C12: FS, ML1028-C20: FS, HP-ME-0780: FS, HE-IC-2450: FF",HM-ME-1530,HM-ME-1530: FF,2024-08-02 00:00:00,2024-10-10 18:00:00,69
HM-ME-1720,Vendor Document Review of HVAC Equipment,21,P2543-R01-Oct24..PR.26.1.3.2,HP-ME-0880,HP-ME-0880: FS,HM-ME-1730,HM-ME-1730: FS,2024-07-27 08:00:00,2024-08-16 18:00:00,20
HM-PL-0010,Vendor Document Review of Line Pipes - Lot 1,38,P2543-R01-Oct24..PR.1.16.2.1,"HE-PL-1670, HP-ME-1040, ML1021-B15, ML1040-C01","HE-PL-1670: FS, HP-ME-1040: FS, ML1021-B15: FS, ML1040-C01: FS","HM-PL-970, HM-PL-0020","HM-PL-970: SS, HM-PL-0020: FS",2023-09-12 00:00:00,2023-10-20 00:00:00,38
HM-PL-0020,Manufacturing & Receive Plates at Fabrication Shop - Lot 1,82,P2543-R01-Oct24..PR.1.16.2.1,HM-PL-0010,HM-PL-0010: FS,"HM-PL-980, HM-PL-0570, HM-PL-0030","HM-PL-980: FF 10, HM-PL-0570: SS 150, HM-PL-0030: FS",2023-10-20 00:00:00,2024-01-10 00:00:00,82
HM-PL-0030,Complete Line Pipe Production - Lot 1,62,P2543-R01-Oct24..PR.1.16.2.1,HM-PL-0020,HM-PL-0020: FS,"C-COM-1000, HM-PL-0035","C-COM-1000: FF 0, HM-PL-0035: FF 19",2024-01-22 00:00:00,2024-03-24 00:00:00,62
HM-PL-0035,Complete External / Internal Coating  - Lot 1,31,P2543-R01-Oct24..PR.1.16.2.1,"HM-PL-0030, HE-PL-3770","HM-PL-0030: FF 19, HE-PL-3770: FS",HM-PL-0040,HM-PL-0040: FS,2024-03-26 00:00:00,2024-04-26 00:00:00,31
HM-PL-0040,Packaging & Final Inspection-Line Pipes (Coated) - Lot 1,28,P2543-R01-Oct24..PR.1.16.2.1,HM-PL-0035,HM-PL-0035: FS,HM-PL-0050,HM-PL-0050: FS,2024-04-27 00:00:00,2024-05-25 00:00:00,28
HM-PL-0050,Ready for Dispatch of Line Pipes (Coated) - Lot 1,0,P2543-R01-Oct24..PR.1.16.2.1,"HP-ME-1040, HM-PL-0040","HP-ME-1040: FS, HM-PL-0040: FS","HM-PL-1010, HM-PL-0080","HM-PL-1010: FF, HM-PL-0080: SS 4",2024-05-26 00:00:00,2024-05-26 00:00:00,1
HM-PL-970,Vendor Document Review of Line Pipes - Lot 2,38,P2543-R01-Oct24..PR.1.16.2.2,HM-PL-0010,HM-PL-0010: SS,"HM-PL-1030, HM-PL-980","HM-PL-1030: SS, HM-PL-980: FS",2023-09-12 00:00:00,2023-10-20 00:00:00,38
HM-PL-980,Manufacturing & Receive Plates at Fabrication Shop - Lot 2,56,P2543-R01-Oct24..PR.1.16.2.2,"HM-PL-0020, HM-PL-970","HM-PL-0020: FF 10, HM-PL-970: FS","HM-PL-1040, HM-PL-990","HM-PL-1040: FF 20, HM-PL-990: FS",2023-11-15 00:00:00,2024-01-10 00:00:00,56
HM-PL-990,Complete Line Pipe Production - Lot 2,20,P2543-R01-Oct24..PR.1.16.2.2,HM-PL-980,HM-PL-980: FS,HM-PL-1020,HM-PL-1020: FS,2024-03-30 00:00:00,2024-04-19 00:00:00,20
HM-PL-1020,Complete External / Internal Coating  - Lot 2,41,P2543-R01-Oct24..PR.1.16.2.2,HM-PL-990,HM-PL-990: FS,HM-PL-1000,HM-PL-1000: FS,2024-04-20 00:00:00,2024-05-31 00:00:00,41
HM-PL-1000,Packaging & Final Inspection-Line Pipes (Coated) - Lot 2,13,P2543-R01-Oct24..PR.1.16.2.2,HM-PL-1020,HM-PL-1020: FS,HM-PL-1010,HM-PL-1010: FS,2024-06-01 00:00:00,2024-06-14 00:00:00,13
HM-PL-1010,Ready for Dispatch of Line Pipes (Coated) - Lot 2,0,P2543-R01-Oct24..PR.1.16.2.2,"HM-PL-0050, HM-PL-1000","HM-PL-0050: FF, HM-PL-1000: FS",HM-PL-0090,HM-PL-0090: FS,2024-06-14 00:00:00,2024-06-14 00:00:00,1
HM-PL-1030,Vendor Document Review of Line Pipes - Lot 3,38,P2543-R01-Oct24..PR.1.16.2.3,HM-PL-970,HM-PL-970: SS,"HM-PL-1330, HM-PL-1090, HM-PL-1040","HM-PL-1330: SS, HM-PL-1090: SS, HM-PL-1040: FS",2023-09-12 00:00:00,2023-10-20 00:00:00,38
HM-PL-1040,Manufacturing & Receive Plates at Fabrication Shop - Lot 3,105,P2543-R01-Oct24..PR.1.16.2.3,"HM-PL-980, HM-PL-1030","HM-PL-980: FF 20, HM-PL-1030: FS","HM-PL-1340, HM-PL-1050","HM-PL-1340: FF 12, HM-PL-1050: FS",2023-12-12 00:00:00,2024-03-26 00:00:00,105
HM-PL-1050,Complete Line Pipe Production - Lot 3,25,P2543-R01-Oct24..PR.1.16.2.3,HM-PL-1040,HM-PL-1040: FS,HM-PL-1080,HM-PL-1080: FS,2024-03-30 00:00:00,2024-04-24 00:00:00,25
HM-PL-1080,Complete External / Internal Coating  - Lot 3,116,P2543-R01-Oct24..PR.1.16.2.3,HM-PL-1050,HM-PL-1050: FS,HM-PL-1060,HM-PL-1060: FF 2,2024-04-06 00:00:00,2024-07-30 18:00:00,115
HM-PL-1060,Packaging & Final Inspection-Line Pipes (Coated) - Lot 3,14,P2543-R01-Oct24..PR.1.16.2.3,HM-PL-1080,HM-PL-1080: FF 2,HM-PL-1070,HM-PL-1070: FF 2,2024-08-01 08:00:00,2024-08-14 18:00:00,13
HM-PL-1070,Ready for Dispatch of Line Pipes (Coated) - Lot 3,9,P2543-R01-Oct24..PR.1.16.2.3,HM-PL-1060,HM-PL-1060: FF 2,HM-PL-0100,HM-PL-0100: FF 5,2024-08-15 08:00:00,2024-08-23 18:00:00,8
HM-PL-1330,Vendor Document Review of Line Pipes - Lot 4,45,P2543-R01-Oct24..PR.1.16.2.7,HM-PL-1030,HM-PL-1030: SS,"HM-PL-1270, HM-PL-1340","HM-PL-1270: SS, HM-PL-1340: FS",2023-09-12 00:00:00,2023-10-27 00:00:00,45
HM-PL-1340,Manufacturing & Receive Plates at Fabrication Shop - Lot 4,55,P2543-R01-Oct24..PR.1.16.2.7,"HM-PL-1040, HM-PL-1330","HM-PL-1040: FF 12, HM-PL-1330: FS","HM-PL-1280, HM-PL-1350","HM-PL-1280: FF 13, HM-PL-1350: FS",2024-01-25 00:00:00,2024-03-20 00:00:00,55
HM-PL-1350,Complete Line Pipe Production - Lot 4,67,P2543-R01-Oct24..PR.1.16.2.7,HM-PL-1340,HM-PL-1340: FS,HM-PL-1380,HM-PL-1380: FS,2024-03-25 00:00:00,2024-05-31 00:00:00,67
HM-PL-1380,Complete External / Internal Coating  - Lot 4,57,P2543-R01-Oct24..PR.1.16.2.7,HM-PL-1350,HM-PL-1350: FS,HM-PL-1360,HM-PL-1360: FS,2024-05-30 00:00:00,2024-07-25 18:00:00,56
HM-PL-1360,Packaging & Final Inspection-Line Pipes (Coated) - Lot 4,17,P2543-R01-Oct24..PR.1.16.2.7,HM-PL-1380,HM-PL-1380: FS,HM-PL-1370,HM-PL-1370: FS,2024-07-10 08:00:00,2024-07-26 18:00:00,16
HM-PL-1370,Ready for Dispatch of Line Pipes (Coated) - Lot 4,8,P2543-R01-Oct24..PR.1.16.2.7,HM-PL-1360,HM-PL-1360: FS,HM-PL-1450,HM-PL-1450: FF 15,2024-07-23 08:00:00,2024-07-30 18:00:00,7
HM-PL-1270,Vendor Document Review of Line Pipes - Lot 5,45,P2543-R01-Oct24..PR.1.16.2.8,HM-PL-1330,HM-PL-1330: SS,HM-PL-1280,HM-PL-1280: FS,2023-09-12 00:00:00,2023-10-27 00:00:00,45
HM-PL-1280,Manufacturing & Receive Plates at Fabrication Shop - Lot 5,19,P2543-R01-Oct24..PR.1.16.2.8,"HM-PL-1340, HM-PL-1270","HM-PL-1340: FF 13, HM-PL-1270: FS","HM-PL-1100, HM-PL-1290","HM-PL-1100: FF 20, HM-PL-1290: FS",2024-04-04 00:00:00,2024-04-23 00:00:00,19
HM-PL-1290,Complete Line Pipe Production - Lot 5,46,P2543-R01-Oct24..PR.1.16.2.8,HM-PL-1280,HM-PL-1280: FS,HM-PL-1320,HM-PL-1320: FS,2024-04-29 00:00:00,2024-06-14 00:00:00,46
HM-PL-1090,Vendor Document Review of Line Pipes - Lot 6,45,P2543-R01-Oct24..PR.1.16.2.4,HM-PL-1030,HM-PL-1030: SS,"HM-PL-1150, HM-PL-1100","HM-PL-1150: SS, HM-PL-1100: FS",2023-09-12 00:00:00,2023-10-27 00:00:00,45
HM-PL-1100,Manufacturing & Receive Plates at Fabrication Shop - Lot 6,47,P2543-R01-Oct24..PR.1.16.2.4,"HM-PL-1280, HM-PL-1090","HM-PL-1280: FF 20, HM-PL-1090: FS","HM-PL-1160, HM-PL-1110","HM-PL-1160: FF 25, HM-PL-1110: FS 10",2024-03-10 00:00:00,2024-04-26 00:00:00,47
HM-PL-1110,Complete Line Pipe Production - Lot 6,99,P2543-R01-Oct24..PR.1.16.2.4,HM-PL-1100,HM-PL-1100: FS 10,HM-PL-1140,HM-PL-1140: FF 28,2024-05-27 00:00:00,2024-09-02 18:00:00,98
HM-PL-1140,Complete External / Internal Coating  - Lot 6,52,P2543-R01-Oct24..PR.1.16.2.4,HM-PL-1110,HM-PL-1110: FF 28,HM-PL-1120,HM-PL-1120: FS,2024-07-17 08:00:00,2024-09-06 18:00:00,51
HM-PL-1150,Vendor Document Review of Line Pipes - Lot 7,45,P2543-R01-Oct24..PR.1.16.2.5,HM-PL-1090,HM-PL-1090: SS,"HM-PL-1390, HM-PL-1210, HM-PL-1160","HM-PL-1390: SS, HM-PL-1210: SS, HM-PL-1160: FS",2023-09-12 00:00:00,2023-10-27 00:00:00,45
HM-PL-1160,Manufacturing & Receive Plates at Fabrication Shop - Lot 7,27,P2543-R01-Oct24..PR.1.16.2.5,"HM-PL-1100, HM-PL-1150","HM-PL-1100: FF 25, HM-PL-1150: FS","HM-PL-1400, HM-PL-1170","HM-PL-1400: FF 14, HM-PL-1170: FS",2024-04-27 00:00:00,2024-05-24 00:00:00,27
HM-PL-1390,Vendor Document Review of Line Pipes - Lot 8,45,P2543-R01-Oct24..PR.1.16.2.9,HM-PL-1150,HM-PL-1150: SS,HM-PL-1400,HM-PL-1400: FS,2023-09-12 00:00:00,2023-10-27 00:00:00,45
HM-PL-1400,Manufacturing & Receive Plates at Fabrication Shop - Lot 8,200,P2543-R01-Oct24..PR.1.16.2.9,"HM-PL-1160, HM-PL-1390","HM-PL-1160: FF 14, HM-PL-1390: FS","HM-PL-1220, HM-PL-1410","HM-PL-1220: FF 21, HM-PL-1410: FS",2023-10-28 00:00:00,2024-05-15 00:00:00,200
HM-PL-1410,Complete Line Pipe Production - Lot 8,29,P2543-R01-Oct24..PR.1.16.2.9,HM-PL-1400,HM-PL-1400: FS,HM-PL-1440,HM-PL-1440: FS,2024-05-16 00:00:00,2024-06-14 00:00:00,29
HM-PL-1440,Complete External / Internal Coating  - Lot 8,29,P2543-R01-Oct24..PR.1.16.2.9,HM-PL-1410,HM-PL-1410: FS,HM-PL-1420,HM-PL-1420: FS,2024-06-21 00:00:00,2024-07-19 18:00:00,28
HM-PL-1420,Packaging & Final Inspection-Line Pipes (Coated) - Lot 8,37,P2543-R01-Oct24..PR.1.16.2.9,HM-PL-1440,HM-PL-1440: FS,HM-PL-1430,HM-PL-1430: FS,2024-07-20 08:00:00,2024-08-26 00:00:00,36
HM-PL-1430,Ready for Dispatch of Line Pipes (Coated) - Lot 8,4,P2543-R01-Oct24..PR.1.16.2.9,HM-PL-1420,HM-PL-1420: FS,HM-PL-1470,HM-PL-1470: FS,2024-08-27 08:00:00,2024-08-30 18:00:00,3
HM-PL-1210,Vendor Document Review of Line Pipes - Lot 9,190,P2543-R01-Oct24..PR.1.16.2.6,HM-PL-1150,HM-PL-1150: SS,HM-PL-1220,HM-PL-1220: FS,2023-09-12 00:00:00,2024-03-20 00:00:00,190
HM-PL-1220,Manufacturing & Receive Plates at Fabrication Shop - Lot 9,200,P2543-R01-Oct24..PR.1.16.2.6,"HM-PL-1400, HM-PL-1210","HM-PL-1400: FF 21, HM-PL-1210: FS",HM-PL-1230,HM-PL-1230: FS,2023-10-28 00:00:00,2024-05-15 00:00:00,200
HM-PL-1230,Complete Line Pipe Production - Lot 9,65,P2543-R01-Oct24..PR.1.16.2.6,HM-PL-1220,HM-PL-1220: FS,HM-PL-1260,HM-PL-1260: FS,2024-05-16 08:00:00,2024-07-19 18:00:00,64
HM-PL-1260,Complete External / Internal Coating  - Lot 9,41,P2543-R01-Oct24..PR.1.16.2.6,HM-PL-1230,HM-PL-1230: FS,"HM-PL-1250, HM-PL-960, HM-PL-1240","HM-PL-1250: FS, HM-PL-960: FS, HM-PL-1240: FS",2024-07-20 08:00:00,2024-08-30 00:00:00,40
HM-PL-0080,Receipt at site and inspection of Line Pipes - Lot 1 (Coated),8,P2543-R01-Oct24..PR.1.16.3,"ML1001-A01, ML1002, HM-PL-0050","ML1001-A01: FS, ML1002: FS, HM-PL-0050: SS 4","HM-PL-0090, C-52-06CR-PL-ME-2800, C-52-HG01-PL-ME-2800","HM-PL-0090: FS, C-52-06CR-PL-ME-2800: FS 4, C-52-HG01-PL-ME-2800: FS",2024-07-05 08:00:00,2024-07-12 18:00:00,7
HM-PL-0090,Receipt at site and inspection of Line Pipes - Lot 2 (Coated),14,P2543-R01-Oct24..PR.1.16.3,"HM-PL-1010, HM-PL-0080","HM-PL-1010: FS, HM-PL-0080: FS","HM-PL-0100, C-52-0506-PL-ME-2800, C-52-HG01-PL-ME-2800","HM-PL-0100: FS, C-52-0506-PL-ME-2800: FS 4, C-52-HG01-PL-ME-2800: FS",2024-07-13 08:00:00,2024-07-26 18:00:00,13
HM-PL-1450,Receipt at site and inspection of Line Pipes - Lot 4 (Coated),52,P2543-R01-Oct24..PR.1.16.3,HM-PL-1370,HM-PL-1370: FF 15,ML1509-D3,ML1509-D3: FF,2024-07-24 08:00:00,2024-09-13 18:00:00,51
HM-PL-0100,Receipt at site and inspection of Line Pipes - Lot 3 (Coated),31,P2543-R01-Oct24..PR.1.16.3,"HM-PL-1070, HM-PL-0090","HM-PL-1070: FF 5, HM-PL-0090: FS","C-4W-SVHG-PIPEL-1000, C-52-0102-PL-ME-2800, C-52-0203-PL-ME-2800, C-52-0304-PL-ME-2800","C-4W-SVHG-PIPEL-1000: FS, C-52-0102-PL-ME-2800: FF, C-52-0203-PL-ME-2800: FF 7, C-52-0304-PL-ME-2800: SS",2024-08-26 08:00:00,2024-09-26 08:00:00,31
HM-PL-0250,Vendor Document Review of Hot Tapping Material,14,P2543-R01-Oct24..PR.1.24.1,HS-GN-0230,HS-GN-0230: FS,HM-PL-0260,HM-PL-0260: FS,2024-03-01 00:00:00,2024-03-15 00:00:00,14
HM-PL-0460,Vendor Document Review of Pig Signaler,95,P2543-R01-Oct24..PR.1.19.2,"ML1041-C03, HP-ME-1140","ML1041-C03: FS, HP-ME-1140: FS",HM-PL-0470,HM-PL-0470: FS,2024-05-23 00:00:00,2024-08-25 18:00:00,94
HM-PL-0560,Vendor Document Review of Hot Incution Bend,58,P2543-R01-Oct24..PR.1.1.2,HP-ME-1190,HP-ME-1190: FS,HM-PL-0570,HM-PL-0570: FS,2023-11-29 00:00:00,2024-01-26 00:00:00,58
HM-PL-0670,Vendor Document Review of Isolating Joints,41,P2543-R01-Oct24..PR.1.3.2,HP-ME-1240,HP-ME-1240: FS,HM-PL-0680,HM-PL-0680: FS,2023-11-30 00:00:00,2024-01-10 00:00:00,41
HM-PL-0770,Vendor Document Review of Pigging & Split Tee,71,P2543-R01-Oct24..PR.1.2.2,"HP-ME-1290, HE-PL-3720","HP-ME-1290: FS, HE-PL-3720: FS",HM-PL-0780,HM-PL-0780: FS,2024-05-27 00:00:00,2024-08-05 18:00:00,70
HM-PL-890,Vendor Document Review of Anchor Flanges,53,P2543-R01-Oct24..PR.1.4.2,HP-ME-1300,HP-ME-1300: FS,HM-PL-900,HM-PL-900: FS,2024-07-02 08:00:00,2024-08-23 18:00:00,52
HM-EL-0010,Vendor Document Review of Power & Control Cables,48,P2543-R01-Oct24..PR.BK.17.2,HP-BK-0030,HP-BK-0030: FS,HM-EL-0020,HM-EL-0020: FS,2024-08-24 08:00:00,2024-10-10 18:00:00,47
HM-PL-0150,Vendor Document Review of Ball/ Globe/ Check/ Plug Valves,85,P2543-R01-Oct24..PR.BK.1.2,"ML1249-C06, HP-ME-1090, ML1369-C21, ML1043-C14, ML1239-C04, ML1040-C01, ML1229-C02","ML1249-C06: FS, HP-ME-1090: FS, ML1369-C21: FS, ML1043-C14: FS, ML1239-C04: FS, ML1040-C01: FS, ML1229-C02: FS",HM-PL-0160,HM-PL-0160: FS,2024-05-17 00:00:00,2024-08-09 18:00:00,84
HM-CS-0010,1st Civil Bulk material MTO,142,P2543-R01-Oct24..PR.BK.11.2,HP-BK-0260,HP-BK-0260: FS,HM-CS-0040,HM-CS-0040: FS,2024-04-09 00:00:00,2024-08-28 18:00:00,141
C-PER-1050,"Trial pit, Crossing Methodology, NOC & Permits-52"" Pipeline-NDRC 4",42,P2543-R01-Oct24..4.1.7,"HE-PL-2990, HE-PL-2990","HE-PL-2990: FS, HE-PL-2990: FF","C-52-HG01-CNM04-1000, C-PER-1140, C-PER-1150","C-52-HG01-CNM04-1000: FS, C-PER-1140: FS, C-PER-1150: FS",2024-01-18 00:00:00,2024-03-18 00:00:00,60
C-PER-1040,"Trial pit, Crossing Methodology, NOC & Permits-52"" Pipeline-NDRC 3",36,P2543-R01-Oct24..4.1.7,"HE-PL-2990, HE-PL-2990","HE-PL-2990: FS, HE-PL-2990: FF","C-52-HG01-CNM03-1000, C-PER-1160, C-PER-1180","C-52-HG01-CNM03-1000: FS, C-PER-1160: FS, C-PER-1180: FS",2024-02-23 00:00:00,2024-04-23 00:00:00,60
C-PER-1000,"Receiving Permits-56"" Pipelines & Stations,4"" Pipeline",37,P2543-R01-Oct24..4.1.7,"C-PER-0915, HE-PL-0170, HE-PL-0290","C-PER-0915: FS, HE-PL-0170: SS 14, HE-PL-0290: SS 14","C-PER-1360, C-PER-1370, C-PER-1380, C-PER-1390, C-PER-1400, C-PER-1420, C-PER-1430, C-PER-1450, C-PER-1470, C-PER-1480, C-PER-1490, C-PER-1500, C-PER-1510, C-PER-1520, C-PER-1530, C-PER-1540, C-PER-1550, C-PER-1560, C-PER-1570, C-4N-H5HG-PIPEL-1000","C-PER-1360: FS, C-PER-1370: FS, C-PER-1380: FS, C-PER-1390: FS, C-PER-1400: FS, C-PER-1420: FS, C-PER-1430: FS, C-PER-1450: FS, C-PER-1470: FS, C-PER-1480: FS, C-PER-1490: FS, C-PER-1500: FS, C-PER-1510: FS, C-PER-1520: FS, C-PER-1530: FS, C-PER-1540: FS,",2024-02-29 07:30:00,2024-04-29 17:30:00,60
C-PER-1110,"Trial pit, Crossing Methodology, NOC & Permits-52"" Pipeline-NDRC 10",37,P2543-R01-Oct24..4.1.7,HE-PL-2990,HE-PL-2990: FS,C-52-0102-CNH10-1000,C-52-0102-CNH10-1000: FS,2024-03-07 00:00:00,2024-05-07 00:00:00,61
C-PER-0915,"Mobilization of Job Performers-56"" Pipelines & Stations,4"" Pipeline",26,P2543-R01-Oct24..4.1.7,HE-PL-2390,HE-PL-2390: FS,C-PER-1000,C-PER-1000: FS,2024-04-09 07:30:00,2024-05-17 17:30:00,38
C-PER-1130,"Trial pit, Crossing Methodology, NOC & Permits-52"" Pipeline-NDRC 12",17,P2543-R01-Oct24..4.1.7,HE-PL-2490,HE-PL-2490: SS 14,"C-52-0203-PL-ME-4810, C-52-0203-PL-CA-5220, C-52-0203-PL-TE-8200, C-52-0203-PL-ME-7400, C-52-0203-PL-CI-6800, PRECOM-52-0203-1000, C-52-0203-PL-CI-6000, ML1679-E13, C-PER-1580","C-52-0203-PL-ME-4810: FF, C-52-0203-PL-CA-5220: FF, C-52-0203-PL-TE-8200: FF, C-52-0203-PL-ME-7400: FS, C-52-0203-PL-CI-6800: FF, PRECOM-52-0203-1000: FS, C-52-0203-PL-CI-6000: FF, ML1679-E13: FS, C-PER-1580: FS",2024-05-04 00:00:00,2024-05-28 17:30:00,24
C-PER-1140,"Trial pit, Crossing Methodology, NOC & Permits-52"" Pipeline-NDRC 13",34,P2543-R01-Oct24..4.1.7,"HE-PL-2490, C-PER-1050","HE-PL-2490: SS, C-PER-1050: FS","C-52-0304-PL-ME-4810, C-52-0304-PL-CA-5220, C-52-0304-PL-TE-8200, C-52-0304-PL-ME-7400, C-52-0304-PL-CI-6800, PRECOM-52-0304-1000, C-52-0304-PL-CI-6000, ML1679-E13","C-52-0304-PL-ME-4810: FF, C-52-0304-PL-CA-5220: FF, C-52-0304-PL-TE-8200: FF, C-52-0304-PL-ME-7400: FS, C-52-0304-PL-CI-6800: FF, PRECOM-52-0304-1000: FS, C-52-0304-PL-CI-6000: FF, ML1679-E13: FS",2024-05-06 07:30:00,2024-06-25 17:30:00,50
C-PER-1090,"Trial pit, Crossing Methodology, NOC & Permits-52"" Pipeline-NDRC 8",39,P2543-R01-Oct24..4.1.7,"HE-PL-2990, HE-PL-2990","HE-PL-2990: FS, HE-PL-2990: FF",C-52-0102-CNH08-1000,C-52-0102-CNH08-1000: FS,2024-05-09 00:00:00,2024-07-09 00:00:00,61
C-PER-1100,"Trial pit, Crossing Methodology, NOC & Permits-52"" Pipeline-NDRC 9",39,P2543-R01-Oct24..4.1.7,HE-PL-2990,HE-PL-2990: FS,C-52-0102-CNH09-1000,C-52-0102-CNH09-1000: FS,2024-05-09 00:00:00,2024-07-09 00:00:00,61
C-PER-1150,"Trial pit, Crossing Methodology, NOC & Permits-52"" Pipeline-NDRC 13A",46,P2543-R01-Oct24..4.1.7,"HE-PL-2490, C-PER-1050","HE-PL-2490: SS, C-PER-1050: FS","C-52-0304-PL-ME-4810, C-52-0304-PL-CA-5220, C-52-0304-PL-TE-8200, C-52-0304-PL-ME-7400, C-52-0304-PL-CI-6800, PRECOM-52-0304-1000, C-52-0304-PL-CI-6000, ML1679-E13","C-52-0304-PL-ME-4810: FF, C-52-0304-PL-CA-5220: FF, C-52-0304-PL-TE-8200: FF, C-52-0304-PL-ME-7400: FS, C-52-0304-PL-CI-6800: FF, PRECOM-52-0304-1000: FS, C-52-0304-PL-CI-6000: FF, ML1679-E13: FS",2024-05-06 07:30:00,2024-07-14 17:30:00,69
C-PER-1160,"Trial pit, Crossing Methodology, NOC & Permits-52"" Pipeline-NDRC 14",28,P2543-R01-Oct24..4.1.7,"HE-PL-2490, C-PER-1040","HE-PL-2490: SS, C-PER-1040: FS","C-PER-1310, C-PER-1320, C-PER-1340, C-52-0304-PL-ME-4810, C-52-0304-PL-CA-5220, C-52-0304-PL-TE-8200, C-52-0304-PL-ME-7400, C-52-0304-PL-CI-6800, PRECOM-52-0304-1000, C-52-0304-PL-CI-6000, ML1679-E13","C-PER-1310: FS, C-PER-1320: FS, C-PER-1340: FS, C-52-0304-PL-ME-4810: FF, C-52-0304-PL-CA-5220: FF, C-52-0304-PL-TE-8200: FF, C-52-0304-PL-ME-7400: FS, C-52-0304-PL-CI-6800: FF, PRECOM-52-0304-1000: FS, C-52-0304-PL-CI-6000: FF, ML1679-E13: FS",2024-05-30 07:30:00,2024-07-14 17:30:00,45
C-PER-1060,"Trial pit, Crossing Methodology, NOC & Permits-52"" Pipeline-NDRC 5",39,P2543-R01-Oct24..4.1.7,HE-PL-2990,HE-PL-2990: FS,C-52-0102-CNM05-1000,C-52-0102-CNM05-1000: FS,2024-05-15 00:00:00,2024-07-15 00:00:00,61
C-PER-1080,"Trial pit, Crossing Methodology, NOC & Permits-52"" Pipeline-NDRC 7",39,P2543-R01-Oct24..4.1.7,HE-PL-2990,HE-PL-2990: FS,"C-52-0102-CNM07-1000, C-PER-1070, C-PER-1070","C-52-0102-CNM07-1000: FS, C-PER-1070: SS 7, C-PER-1070: FF",2024-05-15 00:00:00,2024-07-15 00:00:00,61
C-PER-1180,"Trial pit, Crossing Methodology, NOC & Permits-52"" Pipeline-NDRC 16",29,P2543-R01-Oct24..4.1.7,"HE-PL-2490, C-PER-1040","HE-PL-2490: SS, C-PER-1040: FS","C-52-0506-PL-ME-4810, C-52-0506-PL-CA-5220, C-52-0506-PL-TE-8200, C-52-0506-PL-ME-7400, C-52-0506-PL-CI-6800, PRECOM-52-0506-1000, C-52-0506-PL-CI-6000, ML1679-E13, C-52-0405-PL-ME-4810, C-52-0405-PL-CA-5220, C-52-0405-PL-TE-8200, C-52-0405-PL-ME-7400, C-5","C-52-0506-PL-ME-4810: FF, C-52-0506-PL-CA-5220: FF, C-52-0506-PL-TE-8200: FF, C-52-0506-PL-ME-7400: FS, C-52-0506-PL-CI-6800: FF, PRECOM-52-0506-1000: FS, C-52-0506-PL-CI-6000: FF, ML1679-E13: FS, C-52-0405-PL-ME-4810: FF, C-52-0405-PL-CA-5220: FF, C-52-04",2024-05-30 07:30:00,2024-07-15 17:30:00,46
C-PER-1190,"Trial pit, Crossing Methodology, NOC & Permits-52"" Pipeline-NDRC 17",18,P2543-R01-Oct24..4.1.7,HE-PL-2490,HE-PL-2490: SS,C-52-0405-CNM17-1000,C-52-0405-CNM17-1000: FS,2024-06-30 07:30:00,2024-07-26 00:00:00,25
C-PER-1280,"Trial pit, Crossing Methodology, NOC & Permits-52"" Pipeline-NDRC 25A",40,P2543-R01-Oct24..4.1.7,HE-PL-2490,HE-PL-2490: SS,"C-52-0506-PL-ME-4810, C-52-0506-PL-CA-5220, C-52-0506-PL-TE-8200, C-52-0506-PL-ME-7400, C-52-0506-PL-CI-6800, PRECOM-52-0506-1000, C-52-0506-PL-CI-6000, ML1679-E13","C-52-0506-PL-ME-4810: FF, C-52-0506-PL-CA-5220: FF, C-52-0506-PL-TE-8200: FF, C-52-0506-PL-ME-7400: FS, C-52-0506-PL-CI-6800: FF, PRECOM-52-0506-1000: FS, C-52-0506-PL-CI-6000: FF, ML1679-E13: FS",2024-05-28 07:30:00,2024-07-26 17:30:00,59
C-PER-1580,"NOC & Permits-BVS01-52""",127,P2543-R01-Oct24..4.1.7,C-PER-1130,C-PER-1130: FS,C-52-598-01-CI-1010,C-52-598-01-CI-1010: FS 20,2024-04-25 07:30:00,2024-10-25 00:00:00,182
C-COM-1010,Procedure Qualification (PQT/WQT for Pipeline & Piping etc),70,P2543-R01-Oct24..4.1.2,"C-COM-1000, ML1559-E01","C-COM-1000: FS, ML1559-E01: FS","C-56-PL-607-PI-1000, C-56-G-HT101-ME-1010, C-56-HC01-PL-ME-3600, C-52-06CR-PL-ME-3600, C-56-01HG-PL-ME-3600, C-56-01HG-PL-ME-3800, C-52-0506-PL-ME-3600, C-52-0405-PL-ME-3600, C-52-0304-PL-ME-3600, C-52-0203-PL-ME-3600, C-52-0102-PL-ME-3600, C-52-HG01-PL-ME","C-56-PL-607-PI-1000: FS, C-56-G-HT101-ME-1010: FS, C-56-HC01-PL-ME-3600: FS, C-52-06CR-PL-ME-3600: FS, C-56-01HG-PL-ME-3600: FS, C-56-01HG-PL-ME-3800: FS, C-52-0506-PL-ME-3600: FS, C-52-0405-PL-ME-3600: FS, C-52-0304-PL-ME-3600: FS, C-52-0203-PL-ME-3600: F",2024-05-09 07:00:00,2024-07-30 09:48:00,82
CTF-SO1080,Engineering Office at NPCC,40,P2543-R01-Oct24..4.2.5,ML1002,ML1002: FS,"CTF-1000, CTF-SO1010, CTF-1010","CTF-1000: SS, CTF-SO1010: FS, CTF-1010: FS",2023-07-19 00:00:00,2023-09-05 00:00:00,48
CTF-1000,Site Mobilization for Construction works( including mobilization Plan for Key Personnel & Construction Equipment),121,P2543-R01-Oct24..4.2.1,"CTF-SO1080, ML1002","CTF-SO1080: SS, ML1002: FS","C-COM-850, C-COM-750, C-56-HC01-PL-CI-1000, C-56-HC01-PL-CI-1000, C-56-PR-838-CI-1000, C-56-591-01-CI-1000, C-52-598-06-CI-1000, C-52-PR-839-CI-1000, C-52-EB1-CI-1000, C-52-D-HT-CI-1000, C-52-PL-838-CI-1000, C-52-IDS1-CI-1000, C-52-IDS2-CI-1000, C-52-IDS3-","C-COM-850: FS, C-COM-750: SS 6, C-56-HC01-PL-CI-1000: FS, C-56-HC01-PL-CI-1000: FF, C-56-PR-838-CI-1000: FS, C-56-591-01-CI-1000: FS, C-52-598-06-CI-1000: FS, C-52-PR-839-CI-1000: FF, C-52-EB1-CI-1000: FS, C-52-D-HT-CI-1000: FS, C-52-PL-838-CI-1000: FS, C-",2023-07-19 08:00:00,2023-12-11 17:00:00,145
CTF-SO1000,Main Office,80,P2543-R01-Oct24..4.2.1,"HP-ME-1040, ML1002","HP-ME-1040: FS, ML1002: FS","CTF-SO1010, CTF-SO1010, CTF-1010","CTF-SO1010: FF, CTF-SO1010: SS 15, CTF-1010: SS 9",2023-09-10 00:00:00,2023-12-15 07:30:00,96
CTF-1010,NOC's / Approval /Survey,65,P2543-R01-Oct24..4.2.1,"CTF-SO1080, ML1002, CTF-SO1000","CTF-SO1080: FS, ML1002: FS, CTF-SO1000: SS 9","ML1159-A08, C-COM-850, C-COM-750, C-56-HC01-PL-CI-1000, C-56-HC01-PL-CI-1000, C-56-PR-838-CI-1000, C-56-591-01-CI-1000, C-52-598-06-CI-1000, C-52-PR-839-CI-1000, C-52-EB1-CI-1000, C-52-D-HT-CI-1000, C-52-PL-838-CI-1000, C-52-IDS1-CI-1000, C-52-IDS2-CI-1000","ML1159-A08: FF, C-COM-850: FS, C-COM-750: SS 6, C-56-HC01-PL-CI-1000: FS, C-56-HC01-PL-CI-1000: FF, C-56-PR-838-CI-1000: FS, C-56-591-01-CI-1000: FS, C-52-598-06-CI-1000: FS, C-52-PR-839-CI-1000: FF, C-52-EB1-CI-1000: FS, C-52-D-HT-CI-1000: FS, C-52-PL-838",2023-10-02 07:00:00,2023-12-19 07:30:00,78
CTF-SO1020,Satellite Office-1,96,P2543-R01-Oct24..4.2.1,"CTF-SO1010, CTF-SO1010","CTF-SO1010: FF, CTF-SO1010: SS 45","CTF-SO1040, C-56-HC01-PL-CI-1400, C-56-HC01-PL-CI-1800","CTF-SO1040: SS 14, C-56-HC01-PL-CI-1400: FS, C-56-HC01-PL-CI-1800: FS",2023-11-22 07:00:00,2024-03-20 13:00:00,119
CTF-SO1040,Construction Plant & Equipment Facilities,130,P2543-R01-Oct24..4.2.1,CTF-SO1020,CTF-SO1020: SS 14,"CTF-SO1050, CTF-SO1050","CTF-SO1050: FF, CTF-SO1050: SS",2023-12-11 07:30:00,2024-05-27 16:36:00,168
CTF-SO1050,Fabrication Facilities,127,P2543-R01-Oct24..4.2.1,"CTF-SO1040, CTF-SO1040","CTF-SO1040: FF, CTF-SO1040: SS","CTF-SO1060, C-56-PL-607-PI-1000, C-56-G-HT-CI-2000, C-56-G-HT-PI-1000, C-56-PR-838-PI-1000, C-52-06CR-FENCE-1000, C-52-598-06-PI-1000","CTF-SO1060: SS 7, C-56-PL-607-PI-1000: FS, C-56-G-HT-CI-2000: FS, C-56-G-HT-PI-1000: FS, C-56-PR-838-PI-1000: FS, C-52-06CR-FENCE-1000: FS, C-52-598-06-PI-1000: FS",2023-12-15 07:30:00,2024-05-28 16:36:00,165
CTF-SO1060,Ware House & Storage Facilities,128,P2543-R01-Oct24..4.2.1,CTF-SO1050,CTF-SO1050: SS 7,"CTF-SO1070, CTF-SO1070","CTF-SO1070: FF, CTF-SO1070: SS",2023-12-15 07:30:00,2024-05-29 13:48:00,166
CTF-SO1030,Satellite Office-2,124,P2543-R01-Oct24..4.2.1,"CTF-SO1070, CTF-SO1070","CTF-SO1070: FF, CTF-SO1070: SS 2","C-56-PL-607-CI-1400, C-56-PL-607-CI-1500","C-56-PL-607-CI-1400: FS, C-56-PL-607-CI-1500: FS",2023-12-20 07:30:00,2024-05-30 08:12:00,162
CTF-SO1010,Camp Facilities,184,P2543-R01-Oct24..4.2.1,"CTF-SO1000, CTF-SO1080, CTF-SO1000","CTF-SO1000: FF, CTF-SO1080: FS, CTF-SO1000: SS 15","CTF-SO1020, CTF-SO1020","CTF-SO1020: FF, CTF-SO1020: SS 45",2023-10-18 07:00:00,2024-06-07 13:00:00,233
CTF-SO1070,Laboratory Facilities,64,P2543-R01-Oct24..4.2.1,"CTF-SO1060, CTF-SO1060","CTF-SO1060: FF, CTF-SO1060: SS","CTF-SO1030, CTF-SO1030","CTF-SO1030: FF, CTF-SO1030: SS 2",2024-03-13 08:12:00,2024-06-11 08:12:00,90
C-56-PL-607-CI-1000,"Site Survey, Preparation & Grading Works",55,P2543-R01-Oct24..4.3.1.1.1.12.1.1,"HE-CS-0170, HE-SS-0030, ML1002","HE-CS-0170: FS, HE-SS-0030: SS, ML1002: FS",C-56-PL-607-CI-1010,C-56-PL-607-CI-1010: FS,2024-06-05 07:00:00,2024-08-12 17:00:00,68
C-56-PL-607-CI-1500,Concrete Works (Impact Wall ) (Deleted),29,P2543-R01-Oct24..4.3.1.1.1.12.1.4,"CTF-SO1030, HE-CS-0230, HE-CS-1250","CTF-SO1030: FS, HE-CS-0230: FS, HE-CS-1250: SS","C-56-PL-607-CI-1600, C-56-PL-607-CI-2400","C-56-PL-607-CI-1600: FF, C-56-PL-607-CI-2400: FS",2024-09-21 07:00:00,2024-10-25 00:00:00,33
C-56-PL-607-CI-2400,Fire Point SheltersCCOHBSS301 (Deleted),24,P2543-R01-Oct24..4.3.1.1.1.12.1.7,C-56-PL-607-CI-1500,C-56-PL-607-CI-1500: FS,C-56-PL-607-CI-2000,C-56-PL-607-CI-2000: FF,2024-09-27 00:00:00,2024-10-25 00:00:00,28
C-56-EB2-CI-1000,"Site Survey, Preparation & Grading Works",10,P2543-R01-Oct24..4.3.1.1.2.12.1.1,"HE-SS-0030, ML1002, HE-CS-0170, ML1199-B24","HE-SS-0030: SS, ML1002: FS, HE-CS-0170: FS, ML1199-B24: FS 7","C-56-EB2-CI-1010, C-56-G-HT-CI-0100","C-56-EB2-CI-1010: FS, C-56-G-HT-CI-0100: SS 5",2024-08-13 07:00:00,2024-08-23 17:00:00,10
C-56-EB2-CI-1010,Earth Works for Ground Level,22,P2543-R01-Oct24..4.3.1.1.2.12.1.1,C-56-EB2-CI-1000,C-56-EB2-CI-1000: FS,C-56-EB2-CI-1020,C-56-EB2-CI-1020: SS 5,2024-08-25 07:00:00,2024-09-20 17:00:00,26
C-56-EB2-CI-1020,Compaction & Testing for Ground Level,23,P2543-R01-Oct24..4.3.1.1.2.12.1.1,C-56-EB2-CI-1010,C-56-EB2-CI-1010: SS 5,C-56-EB2-CI-1200,C-56-EB2-CI-1200: FS,2024-08-30 07:00:00,2024-09-26 17:00:00,27
C-56-EB2-CI-1200,Building Foundation Works (for Substructure),25,P2543-R01-Oct24..4.3.1.1.2.12.1.2,C-56-EB2-CI-1020,C-56-EB2-CI-1020: FS,C-56-EB2-CI-1400,C-56-EB2-CI-1400: FF,2024-09-26 07:00:00,2024-10-25 00:00:00,28
C-56-01HG-PL-CI-1000,Survey Marking,25,P2543-R01-Oct24..4.3.1.2.3.12.1.7,HE-PL-0170,HE-PL-0170: SS,"C-56-01HG-PL-CI-1200, C-56-01HG-PL-CI-1800","C-56-01HG-PL-CI-1200: FS, C-56-01HG-PL-CI-1800: FS",2024-03-30 07:00:00,2024-05-03 15:00:00,34
C-56-01HG-PL-CI-1200,Survey Marking,25,P2543-R01-Oct24..4.3.1.2.3.12.1.8,C-56-01HG-PL-CI-1000,C-56-01HG-PL-CI-1000: FS,"C-56-01HG-PL-CI-1800, C-56-01HG-PL-CI-1600","C-56-01HG-PL-CI-1800: FS 14, C-56-01HG-PL-CI-1600: FS",2024-05-03 15:00:00,2024-06-01 15:00:00,29
C-56-01HG-PL-CI-1600,Cut & Fill (@ Non-Sabkha),18,P2543-R01-Oct24..4.3.1.2.3.12.1.12,C-56-01HG-PL-CI-1200,C-56-01HG-PL-CI-1200: FS,"C-56-01HG-PL-CI-2400, C-56-01HG-PL-CI-2600, ML1569-E02, C-56-01HG-PL-CI-2400, C-56-01HG-PL-CI-2600, C-56-HC01-PL-CI-1400","C-56-01HG-PL-CI-2400: SS 5, C-56-01HG-PL-CI-2600: FF 5, ML1569-E02: FS, C-56-01HG-PL-CI-2400: FF 5, C-56-01HG-PL-CI-2600: SS 5, C-56-HC01-PL-CI-1400: FF",2024-07-29 07:30:00,2024-09-26 07:30:00,59
C-56-01HG-PL-CI-1800,Non-Sabka ROW/Grading,144,P2543-R01-Oct24..4.3.1.2.3.12.1.10,"C-56-01HG-PL-CI-1200, C-56-01HG-PL-CI-1000","C-56-01HG-PL-CI-1200: FS 14, C-56-01HG-PL-CI-1000: FS","C-56-01HG-PL-CI-2000, C-56-01HG-PL-CI-2400, C-56-01HG-PL-CI-2000, C-56-01HG-PL-CI-2400, C-56-01HG-PL-CI-2600, C-56-01HG-PL-CI-2600, ML1569-E02, C-56-01HG-PL-CI-1400, C-56-HC01-PL-CI-1800","C-56-01HG-PL-CI-2000: SS 30, C-56-01HG-PL-CI-2400: SS 5, C-56-01HG-PL-CI-2000: FF 30, C-56-01HG-PL-CI-2400: FF 3, C-56-01HG-PL-CI-2600: SS 5, C-56-01HG-PL-CI-2600: FF, ML1569-E02: FS, C-56-01HG-PL-CI-1400: FS, C-56-HC01-PL-CI-1800: FS 14",2024-03-27 00:00:00,2024-09-24 07:30:00,181
C-56-HC01-PL-CI-1000,Survey Marking,30,P2543-R01-Oct24..4.3.1.2.2.12.4.1.7,"CTF-1000, CTF-1010, CTF-1000, CTF-1010","CTF-1000: FS, CTF-1010: FS, CTF-1000: FF, CTF-1010: FF","C-56-HC01-PL-CI-1800, C-56-HC01-PL-CI-1800","C-56-HC01-PL-CI-1800: SS 7, C-56-HC01-PL-CI-1800: FF 7",2024-06-14 07:00:00,2024-07-23 17:00:00,39
C-52-HG01-PL-CI-1000,Survey Marking HGCP to BVS-01,106,P2543-R01-Oct24..4.3.1.3.20,"HE-PL-0200, CTF-1000, CTF-1010","HE-PL-0200: FS 5, CTF-1000: FS, CTF-1010: FS","C-52-HG01-CMA07-0970, C-52-HG01-PL-CI-1800, C-52-0102-PL-CI-1000, C-52-HG01-PL-CI-1800","C-52-HG01-CMA07-0970: FS, C-52-HG01-PL-CI-1800: SS 6, C-52-0102-PL-CI-1000: FS, C-52-HG01-PL-CI-1800: FF",2023-12-18 00:00:00,2024-04-30 00:00:00,134
C-52-0102-PL-CI-1000,Survey Marking BVS-01 to BVS-02,45,P2543-R01-Oct24..4.3.1.3.20,C-52-HG01-PL-CI-1000,C-52-HG01-PL-CI-1000: FS,"C-52-0102-PL-CI-1800, C-52-0203-PL-CI-1000, C-52-0102-PL-CI-1800","C-52-0102-PL-CI-1800: SS 1, C-52-0203-PL-CI-1000: FS, C-52-0102-PL-CI-1800: FF 1",2024-03-01 07:30:00,2024-05-02 07:30:00,62
C-52-0203-PL-CI-1000,Survey Marking BVS-02 to BVS-03,79,P2543-R01-Oct24..4.3.1.3.20,C-52-0102-PL-CI-1000,C-52-0102-PL-CI-1000: FS,"C-52-0203-PL-CI-1800, C-52-0304-PL-CI-1000","C-52-0203-PL-CI-1800: FS, C-52-0304-PL-CI-1000: FS",2024-01-26 07:30:00,2024-05-07 00:00:00,101
C-52-0304-PL-CI-1000,Survey Marking BVS-03 to BVS-04,49,P2543-R01-Oct24..4.3.1.3.20,C-52-0203-PL-CI-1000,C-52-0203-PL-CI-1000: FS,"C-52-0304-PL-CI-1800, C-52-0405-PL-CI-1000","C-52-0304-PL-CI-1800: FS, C-52-0405-PL-CI-1000: FS",2024-03-01 00:00:00,2024-05-07 00:00:00,67
C-52-0405-PL-CI-1000,Survey Marking BVS-04 to BVS-05,9,P2543-R01-Oct24..4.3.1.3.20,C-52-0304-PL-CI-1000,C-52-0304-PL-CI-1000: FS,"C-52-0405-PL-CI-1800, C-52-0506-PL-CI-1000","C-52-0405-PL-CI-1800: FS, C-52-0506-PL-CI-1000: FS",2024-04-26 00:00:00,2024-05-07 00:00:00,11
C-52-06CR-PL-CI-1000,Survey Marking BVS-06 to Sweihan CRS,40,P2543-R01-Oct24..4.3.1.3.20,C-52-0506-PL-CI-1000,C-52-0506-PL-CI-1000: FS,"C-52-06CR-PL-CI-1800, C-52-06CR-PL-CI-1400","C-52-06CR-PL-CI-1800: FS, C-52-06CR-PL-CI-1400: FS 3",2024-06-06 00:00:00,2024-07-26 00:00:00,50
C-52-0506-PL-CI-1000,Survey Marking BVS-05 to BVS-06,39,P2543-R01-Oct24..4.3.1.3.20,C-52-0405-PL-CI-1000,C-52-0405-PL-CI-1000: FS,"C-52-0506-PL-CI-1800, C-52-0506-PL-CI-1900, C-52-06CR-PL-CI-1000","C-52-0506-PL-CI-1800: SS 7, C-52-0506-PL-CI-1900: SS 3, C-52-06CR-PL-CI-1000: FS",2024-06-06 07:30:00,2024-07-26 07:30:00,50
C-52-HG01-PL-CI-1800,Sabka ROW/Grading,106,P2543-R01-Oct24..4.3.1.3.2.21.1.6,"C-52-HG01-PL-CI-1000, C-52-HG01-PL-CI-1000","C-52-HG01-PL-CI-1000: SS 6, C-52-HG01-PL-CI-1000: FF",C-52-HG01-PL-CI-2000,C-52-HG01-PL-CI-2000: SS 14,2023-12-18 00:00:00,2024-04-30 00:00:00,134
C-52-HG01-PL-CI-2000,Sabka Gatch Laying (Including ROW) - Layer 1,175,P2543-R01-Oct24..4.3.1.3.2.21.1.6,C-52-HG01-PL-CI-1800,C-52-HG01-PL-CI-1800: SS 14,"C-52-HG01-PL-CI-2200, C-52-HG01-PL-CI-2200","C-52-HG01-PL-CI-2200: SS 20, C-52-HG01-PL-CI-2200: FF 20",2023-12-20 00:00:00,2024-07-26 00:00:00,219
C-52-HG01-PL-CI-2010,Sabka Gatch Laying - Layer 2,161,P2543-R01-Oct24..4.3.1.3.2.21.1.6,"C-52-HG01-PL-CI-2200, C-52-HG01-PL-CI-2200","C-52-HG01-PL-CI-2200: SS 10, C-52-HG01-PL-CI-2200: FF 10","C-52-HG01-PL-CI-2210, ML1659-E11, C-52-HG01-PL-CI-2210","C-52-HG01-PL-CI-2210: SS 10, ML1659-E11: FS, C-52-HG01-PL-CI-2210: FF 10",2024-01-06 00:00:00,2024-07-26 00:00:00,202
C-52-HG01-PL-CI-2200,Sabka Gatch Compaction (Including ROW) - Layer 1,135,P2543-R01-Oct24..4.3.1.3.2.21.1.7,"C-52-HG01-PL-CI-2000, C-52-HG01-PL-CI-2000","C-52-HG01-PL-CI-2000: SS 20, C-52-HG01-PL-CI-2000: FF 20","C-52-HG01-PL-CI-2010, C-52-HG01-PL-CI-2010","C-52-HG01-PL-CI-2010: SS 10, C-52-HG01-PL-CI-2010: FF 10",2024-02-06 00:00:00,2024-07-26 00:00:00,171
C-52-HG01-PL-CI-2210,Sabka Gatch Compaction - Layer 2,155,P2543-R01-Oct24..4.3.1.3.2.21.1.7,"C-52-HG01-PL-CI-2010, C-52-HG01-PL-CI-2010","C-52-HG01-PL-CI-2010: SS 10, C-52-HG01-PL-CI-2010: FF 10","C-52-HG01-PL-CI-2020, C-52-HG01-PL-CI-2020, ML1659-E11","C-52-HG01-PL-CI-2020: SS 21, C-52-HG01-PL-CI-2020: FF 21, ML1659-E11: FS",2024-01-13 00:00:00,2024-07-26 00:00:00,195
C-52-HG01-PL-CI-2020,Sabka Gatch Laying - Layer 3,150,P2543-R01-Oct24..4.3.1.3.2.21.1.9,"C-52-HG01-PL-CI-2210, C-52-HG01-PL-CI-2210","C-52-HG01-PL-CI-2210: SS 21, C-52-HG01-PL-CI-2210: FF 21","C-52-HG01-PL-CI-2220, C-52-HG01-PL-CI-2220","C-52-HG01-PL-CI-2220: SS 7, C-52-HG01-PL-CI-2220: FF 7",2024-01-19 00:00:00,2024-07-26 00:00:00,189
C-52-HG01-PL-CI-2030,Sabka Gatch Laying - Layer 4,146,P2543-R01-Oct24..4.3.1.3.2.21.1.9,"C-52-HG01-PL-CI-2220, C-52-HG01-PL-CI-2220","C-52-HG01-PL-CI-2220: SS 10, C-52-HG01-PL-CI-2220: FF 10","C-52-HG01-PL-CI-2230, C-52-HG01-PL-CI-2230","C-52-HG01-PL-CI-2230: SS 10, C-52-HG01-PL-CI-2230: FF 10",2024-01-24 00:00:00,2024-07-26 00:00:00,184
C-52-HG01-PL-CI-2220,Sabka Gatch Compaction - Layer 3,146,P2543-R01-Oct24..4.3.1.3.2.21.1.12,"C-52-HG01-PL-CI-2020, C-52-HG01-PL-CI-2020","C-52-HG01-PL-CI-2020: SS 7, C-52-HG01-PL-CI-2020: FF 7","C-52-HG01-PL-CI-2030, C-52-HG01-PL-CI-2030","C-52-HG01-PL-CI-2030: SS 10, C-52-HG01-PL-CI-2030: FF 10",2024-01-24 00:00:00,2024-07-26 00:00:00,184
C-52-HG01-PL-CI-2230,Sabka Gatch Compaction - Layer 4,145,P2543-R01-Oct24..4.3.1.3.2.21.1.12,"C-52-HG01-PL-CI-2030, C-52-HG01-PL-CI-2030","C-52-HG01-PL-CI-2030: SS 10, C-52-HG01-PL-CI-2030: FF 10","C-52-HG01-CMA04-0970, C-52-HG01-PL-ME-2800, C-52-HG01-PL-CI-2400, C-52-HG01-PL-CI-2600, ML1659-E11, C-52-HG01-PL-ME-2800","C-52-HG01-CMA04-0970: FS, C-52-HG01-PL-ME-2800: SS 7, C-52-HG01-PL-CI-2400: FS, C-52-HG01-PL-CI-2600: FS, ML1659-E11: FS, C-52-HG01-PL-ME-2800: FF 3",2024-01-25 00:00:00,2024-07-26 00:00:00,183
C-52-HG01-PL-CI-2400,Trench Excavation-Lot1,28,P2543-R01-Oct24..4.3.1.3.2.21.1.8,"C-52-HG01-PL-CI-2230, C-52-HG01-PL-ME-2800, HE-SS-0030, ML1002, C-52-HG01-PL-ME-3600, C-52-HG01-PL-ME-2800","C-52-HG01-PL-CI-2230: FS, C-52-HG01-PL-ME-2800: SS 7, HE-SS-0030: SS, ML1002: FS, C-52-HG01-PL-ME-3600: FS 15, C-52-HG01-PL-ME-2800: FF 3","C-52-HG01-PL-CI-2410, C-52-HG01-CMA01-0970, C-52-HG01-PL-CI-2410, C-52-HG01-CMA02-0970, C-52-HG01-PL-CI-2600","C-52-HG01-PL-CI-2410: SS 7, C-52-HG01-CMA01-0970: FS 5, C-52-HG01-PL-CI-2410: FF 7, C-52-HG01-CMA02-0970: FS 50, C-52-HG01-PL-CI-2600: FS",2024-08-14 15:48:00,2024-09-18 00:00:00,34
C-52-HG01-PL-CI-2410,Bedding-Lot1,34,P2543-R01-Oct24..4.3.1.3.2.21.1.8,"C-52-HG01-PL-CI-2400, C-52-HG01-PL-CI-2400","C-52-HG01-PL-CI-2400: SS 7, C-52-HG01-PL-CI-2400: FF 7","C-52-HG01-PL-ME-4800, C-52-HG01-PL-CI-2610, C-52-HG01-PL-ME-4800","C-52-HG01-PL-ME-4800: FF 5, C-52-HG01-PL-CI-2610: FF, C-52-HG01-PL-ME-4800: SS 5",2024-08-19 15:48:00,2024-09-30 00:00:00,41
C-52-HG01-PL-ME-2800,Stringing-Lot1,30,P2543-R01-Oct24..4.3.1.3.2.21.1.11,"C-52-HG01-PL-CI-2230, HM-PL-0080, HM-PL-0090, C-52-HG01-PL-CI-2230","C-52-HG01-PL-CI-2230: SS 7, HM-PL-0080: FS, HM-PL-0090: FS, C-52-HG01-PL-CI-2230: FF 3","C-52-HG01-PL-ME-3200, C-52-HG01-PL-ME-3600, C-52-HG01-PL-CI-2400, C-52-HG01-PL-ME-3600, C-52-HG01-PL-CI-2400, C-52-HG01-PL-ME-3000","C-52-HG01-PL-ME-3200: FS, C-52-HG01-PL-ME-3600: SS, C-52-HG01-PL-CI-2400: SS 7, C-52-HG01-PL-ME-3600: FF, C-52-HG01-PL-CI-2400: FF 3, C-52-HG01-PL-ME-3000: FS",2024-06-19 00:00:00,2024-07-26 00:00:00,37
C-52-HG01-PL-ME-3600,Automatic Welding-Lot1,42,P2543-R01-Oct24..4.3.1.3.2.21.1.15,"C-52-HG01-PL-ME-2800, C-COM-1010, C-52-HG01-PL-ME-2800","C-52-HG01-PL-ME-2800: SS, C-COM-1010: SS, C-52-HG01-PL-ME-2800: FF","C-52-HG01-PL-ME-4000, C-52-HG01-PL-ME-4000, ML1689-E14, ML1699-E15, ML1709-E16, ML1719-E17, C-52-HG01-PL-CI-2400, C-52-HG01-PL-ME-4810, C-52-HG01-PL-ME-4810, C-52-HG01-PL-ME-3800","C-52-HG01-PL-ME-4000: SS 1, C-52-HG01-PL-ME-4000: FF 1, ML1689-E14: FS, ML1699-E15: FS, ML1709-E16: FS, ML1719-E17: FS, C-52-HG01-PL-CI-2400: FS 15, C-52-HG01-PL-ME-4810: FF, C-52-HG01-PL-ME-4810: SS, C-52-HG01-PL-ME-3800: FS",2024-07-18 00:00:00,2024-09-05 00:00:00,49
C-52-HG01-PL-ME-4000,NDT-Lot1,42,P2543-R01-Oct24..4.3.1.3.2.21.1.16,"C-52-HG01-PL-ME-3600, C-52-HG01-PL-ME-3600, HS-CN-0190","C-52-HG01-PL-ME-3600: SS 1, C-52-HG01-PL-ME-3600: FF 1, HS-CN-0190: FS","C-52-HG01-PL-ME-4400, C-52-HG01-PL-ME-4200, C-52-HG01-PL-ME-4400","C-52-HG01-PL-ME-4400: SS 2, C-52-HG01-PL-ME-4200: FS, C-52-HG01-PL-ME-4400: FF 2",2024-07-18 00:00:00,2024-09-05 00:00:00,49
C-52-HG01-PL-ME-3200,Cold Bends-Lot1,32,P2543-R01-Oct24..4.3.1.3.2.21.1.13,C-52-HG01-PL-ME-2800,C-52-HG01-PL-ME-2800: FS,"C-52-HG01-PL-ME-4810, C-52-HG01-PL-ME-3400","C-52-HG01-PL-ME-4810: FF, C-52-HG01-PL-ME-3400: FS",2024-07-18 00:00:00,2024-08-23 15:48:00,36
C-52-HG01-PL-ME-3400,Cold Bends-Lot2,28,P2543-R01-Oct24..4.3.1.3.2.21.1.13,C-52-HG01-PL-ME-3200,C-52-HG01-PL-ME-3200: FS,C-52-HG01-PL-ME-5010,C-52-HG01-PL-ME-5010: FF 2,2024-07-27 15:48:00,2024-08-29 15:48:00,33
C-52-HG01-PL-ME-4800,Lowering-Lot1,19,P2543-R01-Oct24..4.3.1.3.2.21.1.25,"C-52-HG01-PL-CI-2410, C-52-HG01-PL-ME-4400, C-52-HG01-PL-CI-2410, C-52-HG01-PL-ME-4400","C-52-HG01-PL-CI-2410: FF 5, C-52-HG01-PL-ME-4400: SS 3, C-52-HG01-PL-CI-2410: SS 5, C-52-HG01-PL-ME-4400: FF 3","C-52-HG01-PL-ME-4810, C-52-HG01-CME01-1000, C-52-HG01-PL-CA-5600, C-52-HG01-PL-ME-5000, C-52-HG01-CMA01-1020, ML1729-E18, ML1729-E18, C-52-HG01-PL-CA-5600, C-52-HG01-PL-ME-4810","C-52-HG01-PL-ME-4810: SS, C-52-HG01-CME01-1000: SS 2, C-52-HG01-PL-CA-5600: SS 7, C-52-HG01-PL-ME-5000: FS, C-52-HG01-CMA01-1020: FS, ML1729-E18: FS, ML1729-E18: FF, C-52-HG01-PL-CA-5600: FF, C-52-HG01-PL-ME-4810: FF",2024-09-13 00:00:00,2024-10-07 00:00:00,24
C-52-HG01-PL-ME-4810,Section Tie-in Welding -Lot1,19,P2543-R01-Oct24..4.3.1.3.2.21.1.25,"C-52-HG01-PL-ME-4800, C-52-HG01-PL-ME-3200, C-52-HG01-PL-ME-4800, C-52-HG01-PL-ME-3600, C-52-HG01-PL-ME-3600","C-52-HG01-PL-ME-4800: SS, C-52-HG01-PL-ME-3200: FF, C-52-HG01-PL-ME-4800: FF, C-52-HG01-PL-ME-3600: FF, C-52-HG01-PL-ME-3600: SS","C-52-HG01-PL-ME-4820, C-52-HG01-PL-ME-5010, C-52-HG01-PL-ME-4820","C-52-HG01-PL-ME-4820: SS 1, C-52-HG01-PL-ME-5010: FS, C-52-HG01-PL-ME-4820: FF 1",2024-09-13 00:00:00,2024-10-07 00:00:00,24
C-52-HG01-PL-ME-4820,NDT (Tie-in Joint)-Lot1,19,P2543-R01-Oct24..4.3.1.3.2.21.1.25,"C-52-HG01-PL-ME-4810, C-52-HG01-PL-ME-4810","C-52-HG01-PL-ME-4810: SS 1, C-52-HG01-PL-ME-4810: FF 1","C-52-HG01-PL-ME-4410, C-52-HG01-PL-ME-5020, C-52-HG01-PL-ME-4410","C-52-HG01-PL-ME-4410: SS 1, C-52-HG01-PL-ME-5020: FS, C-52-HG01-PL-ME-4410: FF 1",2024-09-13 00:00:00,2024-10-07 00:00:00,24
C-52-HG01-PL-ME-4830,Holiday Testing-Lot1,19,P2543-R01-Oct24..4.3.1.3.2.21.1.25,"C-52-HG01-PL-ME-4410, C-52-HG01-PL-ME-4410","C-52-HG01-PL-ME-4410: SS 1, C-52-HG01-PL-ME-4410: FF 1","C-52-HG01-PL-CI-6000, C-52-HG01-PL-ME-5030, C-52-HG01-PL-CI-6000","C-52-HG01-PL-CI-6000: SS 1, C-52-HG01-PL-ME-5030: FS, C-52-HG01-PL-CI-6000: FF 7",2024-09-13 00:00:00,2024-10-07 00:00:00,24
C-52-HG01-PL-ME-4400,Ext. Joint Coating-Lot1,37,P2543-R01-Oct24..4.3.1.3.2.21.1.18,"C-52-HG01-PL-ME-4000, C-52-HG01-PL-ME-4000","C-52-HG01-PL-ME-4000: SS 2, C-52-HG01-PL-ME-4000: FF 2","C-52-HG01-PL-ME-4800, C-52-HG01-PL-ME-4600, C-52-HG01-PL-ME-4800","C-52-HG01-PL-ME-4800: SS 3, C-52-HG01-PL-ME-4600: FS, C-52-HG01-PL-ME-4800: FF 3",2024-08-02 15:48:00,2024-09-17 00:00:00,45
C-52-HG01-PL-ME-4410,Ext. Joint Coating (Tie-in Joint)-Lot1,19,P2543-R01-Oct24..4.3.1.3.2.21.1.18,"C-52-HG01-PL-ME-4820, C-52-HG01-PL-ME-4820","C-52-HG01-PL-ME-4820: SS 1, C-52-HG01-PL-ME-4820: FF 1","C-52-HG01-PL-ME-4830, C-52-HG01-PL-ME-4610, C-52-HG01-PL-CI-6000, C-52-HG01-PL-ME-4830","C-52-HG01-PL-ME-4830: SS 1, C-52-HG01-PL-ME-4610: FS, C-52-HG01-PL-CI-6000: FF 7, C-52-HG01-PL-ME-4830: FF 1",2024-09-13 00:00:00,2024-10-07 00:00:00,24
C-52-HG01-CMA03-0970,Excavation (Manual-Trial Pit),5,P2543-R01-Oct24..4.3.1.3.2.21.1.20.6,ML1002,ML1002: FS,C-52-HG01-CMA03-0980,C-52-HG01-CMA03-0980: FS,2024-10-04 00:00:00,2024-10-09 00:00:00,5
C-52-HG01-CMA03-0980,Sabkha Gatch Laying,5,P2543-R01-Oct24..4.3.1.3.2.21.1.20.6,C-52-HG01-CMA03-0970,C-52-HG01-CMA03-0970: FS,C-52-HG01-CMA03-0990,C-52-HG01-CMA03-0990: SS 1,2024-10-05 00:00:00,2024-10-10 00:00:00,5
C-52-HG01-CMA03-0990,Sabka Gatch Compaction,5,P2543-R01-Oct24..4.3.1.3.2.21.1.20.6,C-52-HG01-CMA03-0980,C-52-HG01-CMA03-0980: SS 1,C-52-HG01-CMA03-1000,C-52-HG01-CMA03-1000: FS,2024-10-06 00:00:00,2024-10-11 00:00:00,5
C-52-HG01-CMA03-1000,Trench Excavation,5,P2543-R01-Oct24..4.3.1.3.2.21.1.20.6,C-52-HG01-CMA03-0990,C-52-HG01-CMA03-0990: FS,C-52-HG01-CMA03-1010,C-52-HG01-CMA03-1010: FF,2024-10-12 00:00:00,2024-10-18 00:00:00,6
C-52-HG01-CMA03-1010,Bedding,5,P2543-R01-Oct24..4.3.1.3.2.21.1.20.6,C-52-HG01-CMA03-1000,C-52-HG01-CMA03-1000: FF,"C-52-HG01-CMA03-1020, C-52-HG01-CMA03-1030","C-52-HG01-CMA03-1020: FS 30, C-52-HG01-CMA03-1030: FS",2024-10-12 00:00:00,2024-10-18 00:00:00,6
C-52-HG01-CMA03-1030,Section Tie-in Welding,6,P2543-R01-Oct24..4.3.1.3.2.21.1.20.6,C-52-HG01-CMA03-1010,C-52-HG01-CMA03-1010: FS,C-52-HG01-CMA03-1040,C-52-HG01-CMA03-1040: SS 1,2024-10-18 00:00:00,2024-10-25 00:00:00,7
C-52-HG01-CMA03-1040,NDT (Tie-in Joint),6,P2543-R01-Oct24..4.3.1.3.2.21.1.20.6,C-52-HG01-CMA03-1030,C-52-HG01-CMA03-1030: SS 1,C-52-HG01-CMA03-1050,C-52-HG01-CMA03-1050: SS 1,2024-10-18 00:00:00,2024-10-25 00:00:00,7
C-52-HG01-CMA03-1050,Ext. Joint Coating (Tie-in Joint),4,P2543-R01-Oct24..4.3.1.3.2.21.1.20.6,C-52-HG01-CMA03-1040,C-52-HG01-CMA03-1040: SS 1,C-52-HG01-CMA03-1060,C-52-HG01-CMA03-1060: FS,2024-10-20 00:00:00,2024-10-25 00:00:00,5
C-52-HG01-CMA03-1060,Holiday Testing,4,P2543-R01-Oct24..4.3.1.3.2.21.1.20.6,C-52-HG01-CMA03-1050,C-52-HG01-CMA03-1050: FS,C-52-HG01-CMA03-1070,C-52-HG01-CMA03-1070: FS,2024-10-20 00:00:00,2024-10-25 00:00:00,5
C-52-HG01-CMA04-0970,Excavation (Manual-Trial Pit),26,P2543-R01-Oct24..4.3.1.3.2.21.1.20.7,C-52-HG01-PL-CI-2230,C-52-HG01-PL-CI-2230: FS,"C-52-HG01-CMA04-0980, C-52-HG01-CMA06-0970","C-52-HG01-CMA04-0980: FS, C-52-HG01-CMA06-0970: FS",2024-07-19 00:00:00,2024-08-19 00:00:00,31
C-52-HG01-CMA04-0980,Sabkha Gatch Laying,26,P2543-R01-Oct24..4.3.1.3.2.21.1.20.7,C-52-HG01-CMA04-0970,C-52-HG01-CMA04-0970: FS,C-52-HG01-CMA04-0990,C-52-HG01-CMA04-0990: SS 1,2024-07-19 00:00:00,2024-08-19 00:00:00,31
C-52-HG01-CMA04-0990,Sabka Gatch Compaction,26,P2543-R01-Oct24..4.3.1.3.2.21.1.20.7,C-52-HG01-CMA04-0980,C-52-HG01-CMA04-0980: SS 1,C-52-HG01-CMA04-1000,C-52-HG01-CMA04-1000: FS,2024-07-19 00:00:00,2024-08-19 00:00:00,31
C-52-HG01-CMA04-1000,Trench Excavation,26,P2543-R01-Oct24..4.3.1.3.2.21.1.20.7,C-52-HG01-CMA04-0990,C-52-HG01-CMA04-0990: FS,C-52-HG01-CMA04-1010,C-52-HG01-CMA04-1010: FF,2024-07-19 00:00:00,2024-08-19 00:00:00,31
C-52-HG01-CMA04-1010,Bedding,26,P2543-R01-Oct24..4.3.1.3.2.21.1.20.7,C-52-HG01-CMA04-1000,C-52-HG01-CMA04-1000: FF,"C-52-HG01-CMA04-1020, C-52-HG01-CMA04-1030","C-52-HG01-CMA04-1020: FS 75, C-52-HG01-CMA04-1030: FS",2024-07-19 00:00:00,2024-08-19 00:00:00,31
C-52-HG01-CMA04-1030,Section Tie-in Welding,6,P2543-R01-Oct24..4.3.1.3.2.21.1.20.7,C-52-HG01-CMA04-1010,C-52-HG01-CMA04-1010: FS,C-52-HG01-CMA04-1040,C-52-HG01-CMA04-1040: SS 1,2024-10-18 00:00:00,2024-10-25 00:00:00,7
C-52-HG01-CMA04-1040,NDT (Tie-in Joint),6,P2543-R01-Oct24..4.3.1.3.2.21.1.20.7,C-52-HG01-CMA04-1030,C-52-HG01-CMA04-1030: SS 1,C-52-HG01-CMA04-1050,C-52-HG01-CMA04-1050: SS 1,2024-10-18 00:00:00,2024-10-25 00:00:00,7
C-52-HG01-CMA04-1050,Ext. Joint Coating (Tie-in Joint),4,P2543-R01-Oct24..4.3.1.3.2.21.1.20.7,C-52-HG01-CMA04-1040,C-52-HG01-CMA04-1040: SS 1,C-52-HG01-CMA04-1060,C-52-HG01-CMA04-1060: FS,2024-10-20 00:00:00,2024-10-25 00:00:00,5
C-52-HG01-CMA04-1060,Holiday Testing,4,P2543-R01-Oct24..4.3.1.3.2.21.1.20.7,C-52-HG01-CMA04-1050,C-52-HG01-CMA04-1050: FS,C-52-HG01-CMA04-1070,C-52-HG01-CMA04-1070: FS,2024-10-20 00:00:00,2024-10-25 00:00:00,5
C-52-HG01-CME01-1000,Trench Excavation,8,P2543-R01-Oct24..4.3.1.3.2.21.1.22.8,C-52-HG01-PL-ME-4800,C-52-HG01-PL-ME-4800: SS 2,"C-52-HG01-CME01-1010, C-52-HG01-CME02-1000","C-52-HG01-CME01-1010: FS, C-52-HG01-CME02-1000: FS 30",2024-09-27 00:00:00,2024-10-06 00:00:00,9
C-52-HG01-CME01-1010,Bedding,8,P2543-R01-Oct24..4.3.1.3.2.21.1.22.8,C-52-HG01-CME01-1000,C-52-HG01-CME01-1000: FS,C-52-HG01-CME01-1020,C-52-HG01-CME01-1020: FS,2024-09-27 00:00:00,2024-10-06 00:00:00,9
C-52-HG01-CME01-1020,Lowering,6,P2543-R01-Oct24..4.3.1.3.2.21.1.22.8,C-52-HG01-CME01-1010,C-52-HG01-CME01-1010: FS,C-52-HG01-CME01-1030,C-52-HG01-CME01-1030: FS,2024-10-01 00:00:00,2024-10-08 00:00:00,7
C-52-HG01-CME01-1030,Section Tie-in Welding,6,P2543-R01-Oct24..4.3.1.3.2.21.1.22.8,C-52-HG01-CME01-1020,C-52-HG01-CME01-1020: FS,C-52-HG01-CME01-1040,C-52-HG01-CME01-1040: FS,2024-10-10 00:00:00,2024-10-17 00:00:00,7
C-52-HG01-CME01-1040,NDT (Tie-in Joint),6,P2543-R01-Oct24..4.3.1.3.2.21.1.22.8,C-52-HG01-CME01-1030,C-52-HG01-CME01-1030: FS,C-52-HG01-CME01-1050,C-52-HG01-CME01-1050: FS,2024-10-10 00:00:00,2024-10-17 00:00:00,7
C-52-HG01-CME01-1050,Ext. Joint Coating (Tie-in Joint),7,P2543-R01-Oct24..4.3.1.3.2.21.1.22.8,C-52-HG01-CME01-1040,C-52-HG01-CME01-1040: FS,C-52-HG01-CME01-1060,C-52-HG01-CME01-1060: FS,2024-10-12 00:00:00,2024-10-20 00:00:00,8
C-52-HG01-CME01-1060,Holiday Testing,7,P2543-R01-Oct24..4.3.1.3.2.21.1.22.8,C-52-HG01-CME01-1050,C-52-HG01-CME01-1050: FS,C-52-HG01-CME01-1070,C-52-HG01-CME01-1070: FS 30,2024-10-12 00:00:00,2024-10-20 00:00:00,8
C-52-HG01-CMA06-0970,Excavation (Manual-Trial Pit),5,P2543-R01-Oct24..4.3.1.3.2.21.1.23.3,C-52-HG01-CMA04-0970,C-52-HG01-CMA04-0970: FS,C-52-HG01-CMA06-0980,C-52-HG01-CMA06-0980: FS,2024-09-27 00:00:00,2024-10-03 00:00:00,6
C-52-HG01-CMA06-0980,Sabkha Gatch Laying,5,P2543-R01-Oct24..4.3.1.3.2.21.1.23.3,C-52-HG01-CMA06-0970,C-52-HG01-CMA06-0970: FS,C-52-HG01-CMA06-0990,C-52-HG01-CMA06-0990: SS 1,2024-10-04 00:00:00,2024-10-09 00:00:00,5
C-52-HG01-CMA06-0990,Sabka Gatch Compaction,5,P2543-R01-Oct24..4.3.1.3.2.21.1.23.3,C-52-HG01-CMA06-0980,C-52-HG01-CMA06-0980: SS 1,C-52-HG01-CMA06-1000,C-52-HG01-CMA06-1000: FS,2024-10-05 00:00:00,2024-10-10 00:00:00,5
C-52-HG01-CMA06-1000,Trench Excavation,5,P2543-R01-Oct24..4.3.1.3.2.21.1.23.3,C-52-HG01-CMA06-0990,C-52-HG01-CMA06-0990: FS,C-52-HG01-CMA06-1010,C-52-HG01-CMA06-1010: FF,2024-10-12 00:00:00,2024-10-18 00:00:00,6
C-52-HG01-CMA06-1010,Bedding,5,P2543-R01-Oct24..4.3.1.3.2.21.1.23.3,C-52-HG01-CMA06-1000,C-52-HG01-CMA06-1000: FF,"C-52-HG01-CMA06-1020, C-52-HG01-CMA06-1030","C-52-HG01-CMA06-1020: FS 30, C-52-HG01-CMA06-1030: FS",2024-10-12 00:00:00,2024-10-18 00:00:00,6
C-52-HG01-CMA06-1030,Section Tie-in Welding,4,P2543-R01-Oct24..4.3.1.3.2.21.1.23.3,C-52-HG01-CMA06-1010,C-52-HG01-CMA06-1010: FS,C-52-HG01-CMA06-1040,C-52-HG01-CMA06-1040: SS 30,2024-10-19 00:00:00,2024-10-24 00:00:00,5
C-52-HG01-CMA06-1050,Ext. Joint Coating (Tie-in Joint),4,P2543-R01-Oct24..4.3.1.3.2.21.1.23.3,C-52-HG01-CMA06-1040,C-52-HG01-CMA06-1040: SS 1,C-52-HG01-CMA06-1060,C-52-HG01-CMA06-1060: FS,2024-10-20 00:00:00,2024-10-25 00:00:00,5
C-52-HG01-CMA07-0970,Excavation (Manual-Trial Pit),48,P2543-R01-Oct24..4.3.1.3.2.21.1.23.4,C-52-HG01-PL-CI-1000,C-52-HG01-PL-CI-1000: FS,C-52-HG01-CMA07-0980,C-52-HG01-CMA07-0980: FS,2024-05-15 00:00:00,2024-07-15 00:00:00,61
C-52-HG01-CMA07-0980,Sabkha Gatch Laying,48,P2543-R01-Oct24..4.3.1.3.2.21.1.23.4,C-52-HG01-CMA07-0970,C-52-HG01-CMA07-0970: FS,C-52-HG01-CMA07-0990,C-52-HG01-CMA07-0990: SS 1,2024-05-15 00:00:00,2024-07-15 00:00:00,61
C-52-HG01-CMA07-0990,Sabka Gatch Compaction,48,P2543-R01-Oct24..4.3.1.3.2.21.1.23.4,C-52-HG01-CMA07-0980,C-52-HG01-CMA07-0980: SS 1,C-52-HG01-CMA07-1000,C-52-HG01-CMA07-1000: FS,2024-05-15 00:00:00,2024-07-15 00:00:00,61
C-52-HG01-CMA07-1000,Trench Excavation,48,P2543-R01-Oct24..4.3.1.3.2.21.1.23.4,C-52-HG01-CMA07-0990,C-52-HG01-CMA07-0990: FS,C-52-HG01-CMA07-1010,C-52-HG01-CMA07-1010: FF,2024-05-15 00:00:00,2024-07-15 00:00:00,61
C-52-HG01-CMA07-1010,Bedding,48,P2543-R01-Oct24..4.3.1.3.2.21.1.23.4,C-52-HG01-CMA07-1000,C-52-HG01-CMA07-1000: FF,C-52-HG01-CMA07-1020,C-52-HG01-CMA07-1020: FS,2024-05-15 00:00:00,2024-07-15 00:00:00,61
C-52-HG01-CMA07-1020,Lowering,3,P2543-R01-Oct24..4.3.1.3.2.21.1.23.4,C-52-HG01-CMA07-1010,C-52-HG01-CMA07-1010: FS,C-52-HG01-CMA07-1030,C-52-HG01-CMA07-1030: SS,2024-09-27 00:00:00,2024-10-01 00:00:00,4
C-52-HG01-CMA07-1030,Section Tie-in Welding,7,P2543-R01-Oct24..4.3.1.3.2.21.1.23.4,C-52-HG01-CMA07-1020,C-52-HG01-CMA07-1020: SS,C-52-HG01-CMA07-1040,C-52-HG01-CMA07-1040: SS 1,2024-10-02 00:00:00,2024-10-10 00:00:00,8
C-52-HG01-CMA07-1040,NDT (Tie-in Joint),7,P2543-R01-Oct24..4.3.1.3.2.21.1.23.4,C-52-HG01-CMA07-1030,C-52-HG01-CMA07-1030: SS 1,C-52-HG01-CMA07-1050,C-52-HG01-CMA07-1050: SS 1,2024-10-02 00:00:00,2024-10-10 00:00:00,8
C-52-HG01-CMA07-1050,Ext. Joint Coating (Tie-in Joint),8,P2543-R01-Oct24..4.3.1.3.2.21.1.23.4,C-52-HG01-CMA07-1040,C-52-HG01-CMA07-1040: SS 1,C-52-HG01-CMA07-1060,C-52-HG01-CMA07-1060: FS,2024-10-03 00:00:00,2024-10-12 00:00:00,9
C-52-HG01-CMA07-1060,Holiday Testing,8,P2543-R01-Oct24..4.3.1.3.2.21.1.23.4,C-52-HG01-CMA07-1050,C-52-HG01-CMA07-1050: FS,C-52-HG01-CMA07-1070,C-52-HG01-CMA07-1070: FS 40,2024-10-03 00:00:00,2024-10-12 00:00:00,9
C-52-HG01-CNM04-1000,Sheet Piling for Driving & Receiving Pit,44,P2543-R01-Oct24..4.3.1.3.2.21.2.1.1,C-PER-1050,C-PER-1050: FS,"C-52-HG01-CNM04-1020, C-52-HG01-CNM04-1010","C-52-HG01-CNM04-1020: FS, C-52-HG01-CNM04-1010: SS 21",2024-04-01 00:00:00,2024-05-28 00:00:00,57
C-52-HG01-CNM04-1020,Installation of Dewatering System for Driving & Receiving Pit,25,P2543-R01-Oct24..4.3.1.3.2.21.2.1.1,C-52-HG01-CNM04-1000,C-52-HG01-CNM04-1000: FS,C-52-HG01-CNM04-1030,C-52-HG01-CNM04-1030: FS,2024-05-01 00:00:00,2024-05-30 00:00:00,29
C-52-HG01-CNM04-1030,Welding & Installation of Bracing in Driving & Receiving Pit,30,P2543-R01-Oct24..4.3.1.3.2.21.2.1.1,"C-52-HG01-CNM04-1010, C-52-HG01-CNM04-1020","C-52-HG01-CNM04-1010: SS 7, C-52-HG01-CNM04-1020: FS",C-52-HG01-CNM04-1040,C-52-HG01-CNM04-1040: FS,2024-05-16 00:00:00,2024-06-24 00:00:00,39
C-52-HG01-CNM04-1010,Driving & Receiving Pit Excavation,36,P2543-R01-Oct24..4.3.1.3.2.21.2.1.1,C-52-HG01-CNM04-1000,C-52-HG01-CNM04-1000: SS 21,C-52-HG01-CNM04-1030,C-52-HG01-CNM04-1030: SS 7,2024-05-29 07:00:00,2024-07-15 00:00:00,46
C-52-HG01-CNM04-1040,Floor Blinding & French Drain in Driving Pit,26,P2543-R01-Oct24..4.3.1.3.2.21.2.1.1,C-52-HG01-CNM04-1030,C-52-HG01-CNM04-1030: FS,C-52-HG01-CNM04-1050,C-52-HG01-CNM04-1050: FS,2024-06-25 07:00:00,2024-07-26 00:00:00,30
C-52-HG01-CNM04-1050,Construction of Front Wall & Thrust Wall in Driving Pit,34,P2543-R01-Oct24..4.3.1.3.2.21.2.1.1,C-52-HG01-CNM04-1040,C-52-HG01-CNM04-1040: FS,C-52-HG01-CNM04-1060,C-52-HG01-CNM04-1060: SS 7,2024-07-16 00:00:00,2024-08-24 00:00:00,39
C-52-HG01-CNM04-1060,Construction of Exit Wall with Ring,35,P2543-R01-Oct24..4.3.1.3.2.21.2.1.1,C-52-HG01-CNM04-1050,C-52-HG01-CNM04-1050: SS 7,C-52-HG01-CNM04-1200,C-52-HG01-CNM04-1200: FS,2024-07-16 00:00:00,2024-08-25 00:00:00,40
C-52-HG01-CNM04-1200,Jacking of MTBM & RC Sleeves,9,P2543-R01-Oct24..4.3.1.3.2.21.2.1.2,C-52-HG01-CNM04-1060,C-52-HG01-CNM04-1060: FS,C-52-HG01-CNM04-1210,C-52-HG01-CNM04-1210: FS,2024-08-25 00:00:00,2024-09-04 00:00:00,10
C-52-HG01-CNM04-1210,Filling of Grout between Earth Overcut & RC Sleeve,8,P2543-R01-Oct24..4.3.1.3.2.21.2.1.2,C-52-HG01-CNM04-1200,C-52-HG01-CNM04-1200: FS,"C-52-HG01-CNM04-1220, C-52-HG01-CNM04-1400","C-52-HG01-CNM04-1220: FS, C-52-HG01-CNM04-1400: FS",2024-09-04 00:00:00,2024-09-13 00:00:00,9
C-52-HG01-CNM04-1220,Inner Grout b/w Main & RC Pipe,8,P2543-R01-Oct24..4.3.1.3.2.21.2.1.2,C-52-HG01-CNM04-1210,C-52-HG01-CNM04-1210: FS,"C-52-HG01-CNM04-1800, C-52-HG01-PL-CA-5220","C-52-HG01-CNM04-1800: FS, C-52-HG01-PL-CA-5220: FF",2024-09-04 00:00:00,2024-09-13 00:00:00,9
C-52-HG01-CNM03-1000,Sheet Piling for Driving & Receiving Pit,37,P2543-R01-Oct24..4.3.1.3.2.21.2.2.1,C-PER-1040,C-PER-1040: FS,"C-52-HG01-CNM03-1020, C-52-HG01-CNM03-1010","C-52-HG01-CNM03-1020: FS, C-52-HG01-CNM03-1010: SS 21",2024-05-01 00:00:00,2024-06-13 00:00:00,43
C-52-HG01-CNM03-1020,Installation of Dewatering System for Driving & Receiving Pit,33,P2543-R01-Oct24..4.3.1.3.2.21.2.2.1,C-52-HG01-CNM03-1000,C-52-HG01-CNM03-1000: FS,C-52-HG01-CNM03-1030,C-52-HG01-CNM03-1030: FS,2024-05-05 00:00:00,2024-06-13 00:00:00,39
C-52-HG01-CNM03-1030,Welding & Installation of Bracing in Driving & Receiving Pit,43,P2543-R01-Oct24..4.3.1.3.2.21.2.2.1,"C-52-HG01-CNM03-1010, C-52-HG01-CNM03-1020","C-52-HG01-CNM03-1010: SS 7, C-52-HG01-CNM03-1020: FS",C-52-HG01-CNM03-1040,C-52-HG01-CNM03-1040: FS,2024-06-24 00:00:00,2024-08-14 00:00:00,51
C-52-HG01-CNM03-1010,Driving & Receiving Pit Excavation,85,P2543-R01-Oct24..4.3.1.3.2.21.2.2.1,C-52-HG01-CNM03-1000,C-52-HG01-CNM03-1000: SS 21,C-52-HG01-CNM03-1030,C-52-HG01-CNM03-1030: SS 7,2024-05-28 00:00:00,2024-09-09 00:00:00,104
C-52-HG01-CNM03-1040,Floor Blinding & French Drain in Driving Pit,25,P2543-R01-Oct24..4.3.1.3.2.21.2.2.1,C-52-HG01-CNM03-1030,C-52-HG01-CNM03-1030: FS,C-52-HG01-CNM03-1050,C-52-HG01-CNM03-1050: FS,2024-08-16 00:00:00,2024-09-14 00:00:00,29
C-52-HG01-CNM03-1050,Construction of Front Wall & Thrust Wall in Driving Pit,15,P2543-R01-Oct24..4.3.1.3.2.21.2.2.1,C-52-HG01-CNM03-1040,C-52-HG01-CNM03-1040: FS,C-52-HG01-CNM03-1060,C-52-HG01-CNM03-1060: SS 7,2024-08-28 00:00:00,2024-09-14 00:00:00,17
C-52-HG01-CNM03-1060,Construction of Exit Wall with Ring,2,P2543-R01-Oct24..4.3.1.3.2.21.2.2.1,C-52-HG01-CNM03-1050,C-52-HG01-CNM03-1050: SS 7,C-52-HG01-CNM03-1200,C-52-HG01-CNM03-1200: FS,2024-09-16 00:00:00,2024-09-19 00:00:00,3
C-52-HG01-CNM03-1200,Jacking of MTBM & RC Sleeves,6,P2543-R01-Oct24..4.3.1.3.2.21.2.2.2,C-52-HG01-CNM03-1060,C-52-HG01-CNM03-1060: FS,C-52-HG01-CNM03-1210,C-52-HG01-CNM03-1210: FS,2024-09-19 00:00:00,2024-09-26 00:00:00,7
C-52-HG01-CNM03-1210,Filling of Grout between Earth Overcut & RC Sleeve,4,P2543-R01-Oct24..4.3.1.3.2.21.2.2.2,C-52-HG01-CNM03-1200,C-52-HG01-CNM03-1200: FS,C-52-HG01-CNM03-1400,C-52-HG01-CNM03-1400: FS,2024-10-01 00:00:00,2024-10-05 00:00:00,4
C-52-0102-PL-CI-1800,Sabka ROW/Grading,138,P2543-R01-Oct24..4.3.1.3.8.21.1.6,"C-52-0102-PL-CI-1000, C-52-0102-PL-CI-1000","C-52-0102-PL-CI-1000: SS 1, C-52-0102-PL-CI-1000: FF 1","C-52-0102-CMA04-0970, C-52-0102-PL-CI-2000, C-52-0102-PL-CI-2000","C-52-0102-CMA04-0970: FF, C-52-0102-PL-CI-2000: SS 7, C-52-0102-PL-CI-2000: FF 7",2024-02-06 00:00:00,2024-07-29 16:47:00,174
C-52-0102-PL-CI-2000,Sabka Gatch Laying (Including ROW) - Layer 1,145,P2543-R01-Oct24..4.3.1.3.8.21.1.6,"C-52-0102-PL-CI-1800, C-52-0102-PL-CI-1800","C-52-0102-PL-CI-1800: SS 7, C-52-0102-PL-CI-1800: FF 7","C-52-0102-PL-CI-2200, C-52-0102-PL-CI-2200","C-52-0102-PL-CI-2200: SS 7, C-52-0102-PL-CI-2200: FF 7",2024-02-06 00:00:00,2024-08-06 16:47:00,182
C-52-0102-PL-CI-2010,Sabka Gatch Laying - Layer 2,140,P2543-R01-Oct24..4.3.1.3.8.21.1.6,"C-52-0102-PL-CI-2200, C-52-0102-PL-CI-2200","C-52-0102-PL-CI-2200: SS 7, C-52-0102-PL-CI-2200: FF 3","C-52-0102-PL-CI-2210, C-52-0102-PL-CI-2210","C-52-0102-PL-CI-2210: SS 14, C-52-0102-PL-CI-2210: FF 3",2024-02-20 00:00:00,2024-08-14 16:47:00,176
C-52-0102-PL-CI-2200,Sabka Gatch Compaction (Including ROW) - Layer 1,110,P2543-R01-Oct24..4.3.1.3.8.21.1.7,"C-52-0102-PL-CI-2000, C-52-0102-PL-CI-2000","C-52-0102-PL-CI-2000: SS 7, C-52-0102-PL-CI-2000: FF 7","C-52-0203-CME04-1000, C-52-0102-PL-CI-2010, C-52-0102-PL-CI-2010","C-52-0203-CME04-1000: FS, C-52-0102-PL-CI-2010: SS 7, C-52-0102-PL-CI-2010: FF 3",2024-03-28 00:00:00,2024-08-14 16:47:00,139
C-52-0102-PL-CI-2210,Sabka Gatch Compaction - Layer 2,140,P2543-R01-Oct24..4.3.1.3.8.21.1.7,"C-52-0102-PL-CI-2010, C-52-0102-PL-CI-2010","C-52-0102-PL-CI-2010: SS 14, C-52-0102-PL-CI-2010: FF 3","C-52-0102-PL-CI-2030, C-52-0102-PL-CI-2030","C-52-0102-PL-CI-2030: SS 7, C-52-0102-PL-CI-2030: FF 3",2024-02-27 00:00:00,2024-08-21 16:47:00,176
C-52-0102-PL-CI-2030,Sabka Gatch Laying - Layer 3,141,P2543-R01-Oct24..4.3.1.3.8.21.1.9,"C-52-0102-PL-CI-2210, C-52-0102-PL-CI-2210","C-52-0102-PL-CI-2210: SS 7, C-52-0102-PL-CI-2210: FF 3","C-52-0102-PL-CI-2220, C-52-0102-PL-CI-2220","C-52-0102-PL-CI-2220: SS 7, C-52-0102-PL-CI-2220: FF 3",2024-02-29 00:00:00,2024-08-24 16:47:00,177
C-52-0102-PL-CI-2040,Sabka Gatch Laying - Layer 4,141,P2543-R01-Oct24..4.3.1.3.8.21.1.9,"C-52-0102-PL-CI-2220, C-52-0102-PL-CI-2220","C-52-0102-PL-CI-2220: SS 7, C-52-0102-PL-CI-2220: FF 3","C-52-0102-PL-CI-2230, C-52-0102-PL-CI-2230","C-52-0102-PL-CI-2230: SS 7, C-52-0102-PL-CI-2230: FF 3",2024-03-06 00:00:00,2024-09-02 00:00:00,180
C-52-0102-PL-CI-2220,Sabka Gatch Compaction - Layer 3,140,P2543-R01-Oct24..4.3.1.3.8.21.1.10,"C-52-0102-PL-CI-2030, C-52-0102-PL-CI-2030","C-52-0102-PL-CI-2030: SS 7, C-52-0102-PL-CI-2030: FF 3","C-52-0102-PL-CI-2040, C-52-0102-PL-CI-2040","C-52-0102-PL-CI-2040: SS 7, C-52-0102-PL-CI-2040: FF 3",2024-03-04 00:00:00,2024-08-28 16:47:00,177
C-52-0102-PL-CI-2230,Sabka Gatch Compaction - Layer 4,132,P2543-R01-Oct24..4.3.1.3.8.21.1.10,"C-52-0102-PL-CI-2040, C-52-0102-PL-CI-2040","C-52-0102-PL-CI-2040: SS 7, C-52-0102-PL-CI-2040: FF 3","C-52-0102-PL-ME-2800, C-52-0102-PL-CI-2400, ML1659-E11, C-52-0102-PL-ME-2800","C-52-0102-PL-ME-2800: SS 7, C-52-0102-PL-CI-2400: FS 3, ML1659-E11: FS, C-52-0102-PL-ME-2800: FF 3",2024-03-18 00:00:00,2024-09-02 00:00:00,168
C-52-0102-CMA04-0970,Excavation (Manual-Trial Pit),22,P2543-R01-Oct24..4.3.1.3.8.21.1.15.1,C-52-0102-PL-CI-1800,C-52-0102-PL-CI-1800: FF,"C-52-0102-CMA04-0980, C-52-0102-CMA05-0970","C-52-0102-CMA04-0980: FS, C-52-0102-CMA05-0970: FS",2024-06-17 00:00:00,2024-07-17 00:00:00,30
C-52-0102-CMA04-0980,Sabkha Gatch Laying,22,P2543-R01-Oct24..4.3.1.3.8.21.1.15.1,C-52-0102-CMA04-0970,C-52-0102-CMA04-0970: FS,C-52-0102-CMA04-0990,C-52-0102-CMA04-0990: SS 1,2024-06-17 00:00:00,2024-07-17 00:00:00,30
C-52-0102-CMA04-0990,Sabka Gatch Compaction,22,P2543-R01-Oct24..4.3.1.3.8.21.1.15.1,C-52-0102-CMA04-0980,C-52-0102-CMA04-0980: SS 1,C-52-0102-CMA04-1000,C-52-0102-CMA04-1000: FS,2024-06-17 00:00:00,2024-07-17 00:00:00,30
C-52-0102-CMA04-1000,Trench Excavation,22,P2543-R01-Oct24..4.3.1.3.8.21.1.15.1,C-52-0102-CMA04-0990,C-52-0102-CMA04-0990: FS,C-52-0102-CMA04-1010,C-52-0102-CMA04-1010: FF,2024-06-17 00:00:00,2024-07-17 00:00:00,30
C-52-0102-CMA04-1010,Bedding,22,P2543-R01-Oct24..4.3.1.3.8.21.1.15.1,C-52-0102-CMA04-1000,C-52-0102-CMA04-1000: FF,C-52-0102-CMA04-1020,C-52-0102-CMA04-1020: FS,2024-06-17 00:00:00,2024-07-17 00:00:00,30
C-52-0102-CNM05-1000,Sheet Piling for Driving & Receiving Pit,40,P2543-R01-Oct24..4.3.1.3.8.21.2.6.1,C-PER-1060,C-PER-1060: FS,"C-52-0102-CNM05-1020, C-52-0102-CNM05-1010, C-52-0102-CNM05-1010","C-52-0102-CNM05-1020: FS, C-52-0102-CNM05-1010: SS 7, C-52-0102-CNM05-1010: FF 7",2024-09-04 00:00:00,2024-10-22 00:00:00,48
C-52-0102-CNM05-1020,Installation of Dewatering System for Driving & Receiving Pit,7,P2543-R01-Oct24..4.3.1.3.8.21.2.6.1,C-52-0102-CNM05-1000,C-52-0102-CNM05-1000: FS,C-52-0102-CNM05-1030,C-52-0102-CNM05-1030: FS,2024-10-15 00:00:00,2024-10-23 00:00:00,8
C-52-0102-CNH10-1000,Sheet Piling for Driving & Receiving Pit,23,P2543-R01-Oct24..4.3.1.3.8.21.3.1.1,C-PER-1110,C-PER-1110: FS,"C-52-0102-CNH10-1020, C-52-0102-CNH10-1010","C-52-0102-CNH10-1020: FS, C-52-0102-CNH10-1010: SS 21",2024-06-25 00:00:00,2024-07-23 00:00:00,28
C-52-0102-CNH10-1020,Installation of Dewatering System for Driving & Receiving Pit,9,P2543-R01-Oct24..4.3.1.3.8.21.3.1.1,C-52-0102-CNH10-1000,C-52-0102-CNH10-1000: FS,C-52-0102-CNH10-1030,C-52-0102-CNH10-1030: FF,2024-07-16 00:00:00,2024-07-26 09:24:00,10
C-52-0102-CNH10-1030,Welding & Installation of Bracing in Driving & Receiving Pit,27,P2543-R01-Oct24..4.3.1.3.8.21.3.1.1,"C-52-0102-CNH10-1010, C-52-0102-CNH10-1020","C-52-0102-CNH10-1010: SS 7, C-52-0102-CNH10-1020: FF",C-52-0102-CNH10-1040,C-52-0102-CNH10-1040: FS,2024-07-26 00:00:00,2024-08-27 00:00:00,32
C-52-0102-CNH10-1010,Driving & Receiving Pit Excavation,44,P2543-R01-Oct24..4.3.1.3.8.21.3.1.1,C-52-0102-CNH10-1000,C-52-0102-CNH10-1000: SS 21,C-52-0102-CNH10-1030,C-52-0102-CNH10-1030: SS 7,2024-07-26 00:00:00,2024-09-17 00:00:00,53
C-52-0102-CNH10-1040,Floor Blinding & French Drain in Driving Pit,10,P2543-R01-Oct24..4.3.1.3.8.21.3.1.1,C-52-0102-CNH10-1030,C-52-0102-CNH10-1030: FS,C-52-0102-CNH10-1050,C-52-0102-CNH10-1050: FS,2024-09-06 00:00:00,2024-09-19 00:00:00,13
C-52-0102-CNH10-1050,Construction of Front Wall & Thrust Wall in Driving Pit,15,P2543-R01-Oct24..4.3.1.3.8.21.3.1.1,C-52-0102-CNH10-1040,C-52-0102-CNH10-1040: FS,C-52-0102-CNH10-1060,C-52-0102-CNH10-1060: SS 7,2024-09-21 00:00:00,2024-10-09 00:00:00,18
C-52-0102-CNH10-1060,Construction of Exit Wall with Ring,9,P2543-R01-Oct24..4.3.1.3.8.21.3.1.1,C-52-0102-CNH10-1050,C-52-0102-CNH10-1050: SS 7,C-52-0102-CNH10-1200,C-52-0102-CNH10-1200: FS,2024-10-02 00:00:00,2024-10-12 00:00:00,10
C-52-0102-CNH09-1020,Installation of Dewatering System for Driving & Receiving Pit,25,P2543-R01-Oct24..4.3.1.3.8.21.3.2.1,C-52-0102-CNH09-1000,C-52-0102-CNH09-1000: FS,C-52-0102-CNH09-1030,C-52-0102-CNH09-1030: FS,2024-08-26 07:00:00,2024-09-25 00:00:00,29
C-52-0102-CNH09-1000,Sheet Piling for Driving & Receiving Pit,52,P2543-R01-Oct24..4.3.1.3.8.21.3.2.1,C-PER-1100,C-PER-1100: FS,"C-52-0102-CNH09-1020, C-52-0102-CNH09-1010","C-52-0102-CNH09-1020: FS, C-52-0102-CNH09-1010: SS 21",2024-07-27 07:00:00,2024-09-26 17:00:00,61
C-52-0102-CNH09-1030,Welding & Installation of Bracing in Driving & Receiving Pit,43,P2543-R01-Oct24..4.3.1.3.8.21.3.2.1,"C-52-0102-CNH09-1010, C-52-0102-CNH09-1020","C-52-0102-CNH09-1010: SS 7, C-52-0102-CNH09-1020: FS",C-52-0102-CNH09-1040,C-52-0102-CNH09-1040: FS,2024-09-03 00:00:00,2024-10-24 00:00:00,51
C-52-0102-CNH08-1000,Sheet Piling for Driving & Receiving Pit,44,P2543-R01-Oct24..4.3.1.3.8.21.3.3.1,C-PER-1090,C-PER-1090: FS,"C-52-0102-CNH08-1020, C-52-0102-CNH08-1010","C-52-0102-CNH08-1020: FS 1, C-52-0102-CNH08-1010: SS 23",2024-07-27 07:00:00,2024-09-18 00:00:00,52
C-52-0102-CNH08-1020,Installation of Dewatering System for Driving & Receiving Pit,15,P2543-R01-Oct24..4.3.1.3.8.21.3.3.1,C-52-0102-CNH08-1000,C-52-0102-CNH08-1000: FS 1,C-52-0102-CNH08-1030,C-52-0102-CNH08-1030: FS,2024-09-02 00:00:00,2024-09-20 00:00:00,18
C-52-0102-CNH08-1030,Welding & Installation of Bracing in Driving & Receiving Pit,12,P2543-R01-Oct24..4.3.1.3.8.21.3.3.1,"C-52-0102-CNH08-1010, C-52-0102-CNH08-1020","C-52-0102-CNH08-1010: SS 7, C-52-0102-CNH08-1020: FS",C-52-0102-CNH08-1040,C-52-0102-CNH08-1040: FS,2024-09-10 00:00:00,2024-09-25 00:00:00,15
C-52-0102-CNH08-1010,Driving & Receiving Pit Excavation,43,P2543-R01-Oct24..4.3.1.3.8.21.3.3.1,C-52-0102-CNH08-1000,C-52-0102-CNH08-1000: SS 23,C-52-0102-CNH08-1030,C-52-0102-CNH08-1030: SS 7,2024-09-04 00:00:00,2024-10-25 00:00:00,51
C-52-0102-CNH08-1040,Floor Blinding & French Drain in Driving Pit,6,P2543-R01-Oct24..4.3.1.3.8.21.3.3.1,C-52-0102-CNH08-1030,C-52-0102-CNH08-1030: FS,C-52-0102-CNH08-1050,C-52-0102-CNH08-1050: FS,2024-10-19 00:00:00,2024-10-25 00:00:00,6
C-52-0203-PL-CI-1800,Sabka ROW/Grading,109,P2543-R01-Oct24..4.3.1.3.15.21.1.6,C-52-0203-PL-CI-1000,C-52-0203-PL-CI-1000: FS,"C-52-0203-PL-CI-2000, C-52-0203-PL-CI-2000","C-52-0203-PL-CI-2000: SS 21, C-52-0203-PL-CI-2000: FF 21",2024-03-13 00:00:00,2024-08-01 14:30:00,141
C-52-0203-PL-CI-2000,Sabka Gatch Laying (Including ROW) - Layer 1,86,P2543-R01-Oct24..4.3.1.3.15.21.1.6,"C-52-0203-PL-CI-1800, C-52-0203-PL-CI-1800","C-52-0203-PL-CI-1800: SS 21, C-52-0203-PL-CI-1800: FF 21","C-52-0203-PL-CI-2200, C-52-0203-PL-CI-2200","C-52-0203-PL-CI-2200: SS 7, C-52-0203-PL-CI-2200: FF 7",2024-04-23 00:00:00,2024-08-05 14:30:00,104
C-52-0203-PL-CI-2200,Sabka Gatch Compaction (Including ROW) - Layer 1,89,P2543-R01-Oct24..4.3.1.3.15.21.1.6,"C-52-0203-PL-CI-2000, C-52-0203-PL-CI-2000","C-52-0203-PL-CI-2000: SS 7, C-52-0203-PL-CI-2000: FF 7","C-52-0203-PL-CI-2010, C-52-0203-PL-CI-2010","C-52-0203-PL-CI-2010: SS 7, C-52-0203-PL-CI-2010: FF 7",2024-04-24 00:00:00,2024-08-09 14:30:00,107
C-52-0203-PL-CI-2010,Sabka Gatch Laying - Layer 2,89,P2543-R01-Oct24..4.3.1.3.15.21.1.6,"C-52-0203-PL-CI-2200, C-52-0203-PL-CI-2200","C-52-0203-PL-CI-2200: SS 7, C-52-0203-PL-CI-2200: FF 7","C-52-0203-PL-CI-2210, C-52-0203-PL-CI-2210","C-52-0203-PL-CI-2210: SS 7, C-52-0203-PL-CI-2210: FF 7",2024-04-26 00:00:00,2024-08-12 14:30:00,108
C-52-0203-PL-CI-2210,Sabka Gatch Compaction - Layer 2,93,P2543-R01-Oct24..4.3.1.3.15.21.1.6,"C-52-0203-PL-CI-2010, C-52-0203-PL-CI-2010","C-52-0203-PL-CI-2010: SS 7, C-52-0203-PL-CI-2010: FF 7","C-52-0203-PL-CI-2020, C-52-0203-PL-CI-2020","C-52-0203-PL-CI-2020: SS 7, C-52-0203-PL-CI-2020: FF 7",2024-04-26 00:00:00,2024-08-16 14:30:00,112
C-52-0203-PL-CI-2020,Sabka Gatch Laying - Layer 3,84,P2543-R01-Oct24..4.3.1.3.15.21.1.6,"C-52-0203-PL-CI-2210, C-52-0203-PL-CI-2210","C-52-0203-PL-CI-2210: SS 7, C-52-0203-PL-CI-2210: FF 7","C-52-0203-PL-CI-2220, C-52-0203-PL-CI-2220","C-52-0203-PL-CI-2220: SS 7, C-52-0203-PL-CI-2220: FF 7",2024-05-09 00:00:00,2024-08-19 14:30:00,102
C-52-0203-PL-CI-2220,Sabka Gatch Compaction - Layer 3,88,P2543-R01-Oct24..4.3.1.3.15.21.1.6,"C-52-0203-PL-CI-2020, C-52-0203-PL-CI-2020","C-52-0203-PL-CI-2020: SS 7, C-52-0203-PL-CI-2020: FF 7","C-52-0203-PL-CI-2030, C-52-0203-PL-CI-2030","C-52-0203-PL-CI-2030: SS 7, C-52-0203-PL-CI-2030: FF 7",2024-05-09 00:00:00,2024-08-23 14:30:00,106
C-52-0203-PL-CI-2030,Sabka Gatch Laying - Layer 4,90,P2543-R01-Oct24..4.3.1.3.15.21.1.6,"C-52-0203-PL-CI-2220, C-52-0203-PL-CI-2220","C-52-0203-PL-CI-2220: SS 7, C-52-0203-PL-CI-2220: FF 7","C-52-0203-PL-CI-2230, C-52-0203-PL-CI-2230","C-52-0203-PL-CI-2230: SS 7, C-52-0203-PL-CI-2230: FF 7",2024-05-09 00:00:00,2024-08-26 14:30:00,109
C-52-0203-PL-CI-2230,Sabka Gatch Compaction - Layer 4,94,P2543-R01-Oct24..4.3.1.3.15.21.1.6,"C-52-0203-PL-CI-2030, C-52-0203-PL-CI-2030","C-52-0203-PL-CI-2030: SS 7, C-52-0203-PL-CI-2030: FF 7","C-52-0203-PL-ME-2800, C-52-0203-PL-CI-2400, C-52-0203-PL-ME-2800, ML1659-E11","C-52-0203-PL-ME-2800: SS 7, C-52-0203-PL-CI-2400: FS, C-52-0203-PL-ME-2800: FF 3, ML1659-E11: FS",2024-05-09 00:00:00,2024-08-30 14:30:00,113
C-52-0203-PL-ME-2800,Stringing (BVS-02 to BVS-03),68,P2543-R01-Oct24..4.3.1.3.15.21.1.8,"C-52-0203-PL-CI-2230, C-52-0203-PL-CI-2230, HM-PL-0100, C-52-HG01-PL-ME-3000","C-52-0203-PL-CI-2230: SS 7, C-52-0203-PL-CI-2230: FF 3, HM-PL-0100: FF 7, C-52-HG01-PL-ME-3000: SS","C-52-0304-CMA02-1000, C-52-0203-PL-ME-3600, C-52-0203-CMA01-1020, C-52-0203-CME01-1020, C-52-0203-PL-CI-2400, C-52-0203-PL-ME-3600, C-52-0203-PL-CI-2400, C-52-0203-PL-ME-4810, C-52-0203-PL-CA-5220, C-52-0203-PL-TE-8200, C-52-0203-PL-ME-7400, C-52-0203-PL-C","C-52-0304-CMA02-1000: FS, C-52-0203-PL-ME-3600: SS 1, C-52-0203-CMA01-1020: SS 5, C-52-0203-CME01-1020: SS 5, C-52-0203-PL-CI-2400: SS 3, C-52-0203-PL-ME-3600: FF 1, C-52-0203-PL-CI-2400: FF 3, C-52-0203-PL-ME-4810: SF, C-52-0203-PL-CA-5220: SF, C-52-0203-",2024-06-19 00:00:00,2024-09-08 09:30:00,81
C-52-0203-CME03-1000,Road Diversion & Trench Excavation,8,P2543-R01-Oct24..4.3.1.3.15.21.1.15.5,ML1002,ML1002: FS,C-52-0203-CME03-1010,C-52-0203-CME03-1010: FS 35,2024-09-27 00:00:00,2024-10-07 00:00:00,10
C-52-0203-CME04-1000,Trench Excavation,3,P2543-R01-Oct24..4.3.1.3.15.21.2.12.1,C-52-0102-PL-CI-2200,C-52-0102-PL-CI-2200: FS,"C-52-0203-CME04-1010, C-52-0203-CME04-1080","C-52-0203-CME04-1010: FS, C-52-0203-CME04-1080: FS 1",2024-08-14 15:00:00,2024-08-17 15:00:00,3
C-52-0203-CME04-1010,Bedding,3,P2543-R01-Oct24..4.3.1.3.15.21.2.12.2,C-52-0203-CME04-1000,C-52-0203-CME04-1000: FS,C-52-0203-CME04-1020,C-52-0203-CME04-1020: FS,2024-08-19 15:00:00,2024-08-22 15:00:00,3
C-52-0203-CME04-1020,Lowering,17,P2543-R01-Oct24..4.3.1.3.15.21.2.12.3,C-52-0203-CME04-1010,C-52-0203-CME04-1010: FS,C-52-0203-CME04-1030,C-52-0203-CME04-1030: FS,2024-08-26 15:00:00,2024-09-15 07:30:00,19
C-52-0304-PL-CI-1800,Non-Sabka ROW/Grading,151,P2543-R01-Oct24..4.3.1.3.16.21.1.8,"C-52-0304-PL-CI-1000, C-GOV-1300","C-52-0304-PL-CI-1000: FS, C-GOV-1300: SS","C-52-0304-CMA03-1000, C-52-0304-PL-CI-2000, C-52-0304-PL-CI-1400, C-52-0304-PL-CI-2000","C-52-0304-CMA03-1000: FS, C-52-0304-PL-CI-2000: SS, C-52-0304-PL-CI-1400: FS 45, C-52-0304-PL-CI-2000: FF",2024-03-01 00:00:00,2024-09-07 00:00:00,190
C-52-0304-CME06-1090,Trench Excavation,14,P2543-R01-Oct24..4.3.1.3.16.21.2.1.1,ML1002,ML1002: FS,"C-52-0304-CME06-1100, C-52-0304-CME06-1170","C-52-0304-CME06-1100: FS, C-52-0304-CME06-1170: FS 1",2024-09-27 00:00:00,2024-10-14 00:00:00,17
C-52-0304-CME06-1100,Bedding,14,P2543-R01-Oct24..4.3.1.3.16.21.2.1.2,C-52-0304-CME06-1090,C-52-0304-CME06-1090: FS,C-52-0304-CME06-1110,C-52-0304-CME06-1110: FS,2024-09-27 00:00:00,2024-10-14 00:00:00,17
C-52-0304-CME06-1110,Lowering,6,P2543-R01-Oct24..4.3.1.3.16.21.2.1.3,C-52-0304-CME06-1100,C-52-0304-CME06-1100: FS,C-52-0304-CME06-1120,C-52-0304-CME06-1120: FS 35,2024-10-14 00:00:00,2024-10-20 00:00:00,6
C-52-598-01-CI-1000,"Site Survey, Preparation & Grading Works",61,P2543-R01-Oct24..4.3.1.3.14.21.1.1,"HE-SS-0030, ML1002, HE-CS-0170","HE-SS-0030: SS, ML1002: FS, HE-CS-0170: FS",C-52-598-01-CI-1010,C-52-598-01-CI-1010: FS,2024-03-26 00:00:00,2024-06-12 00:00:00,78
C-52-598-02-CI-1000,"Site Survey, Preparation & Grading Works",58,P2543-R01-Oct24..4.3.1.3.13.21.1.1,"HE-SS-0030, ML1002, HE-CS-0170","HE-SS-0030: SS, ML1002: FS, HE-CS-0170: FS",C-52-598-02-CI-1010,C-52-598-02-CI-1010: FS,2024-05-15 00:00:00,2024-07-26 00:00:00,72
C-52-598-03-CI-1000,"Site Survey, Preparation & Grading Works",8,P2543-R01-Oct24..4.3.1.3.12.21.1.1,"HE-SS-0030, ML1002, HE-CS-0170","HE-SS-0030: SS, ML1002: FS, HE-CS-0170: FS",C-52-598-03-CI-1010,C-52-598-03-CI-1010: SS 4,2024-07-27 07:00:00,2024-08-05 17:00:00,9
C-52-598-04-CI-1000,"Site Survey, Preparation & Grading Works",34,P2543-R01-Oct24..4.3.1.3.11.21.1.1,"HE-SS-0030, ML1002, HE-CS-0170","HE-SS-0030: SS, ML1002: FS, HE-CS-0170: FS",C-52-598-04-CI-1010,C-52-598-04-CI-1010: SS 4,2024-05-27 00:00:00,2024-07-10 00:00:00,44
C-4N-H5HG-PIPEL-1000,Survey Marking,29,P2543-R01-Oct24..4.3.1.5.4.12.1.6,"HE-PL-0290, ML1159-A08, HE-PL-0290, C-PER-1000","HE-PL-0290: FF, ML1159-A08: FS, HE-PL-0290: FS, C-PER-1000: FS","C-4N-H5HG-PIPEL-1800, C-4N-H5HG-PIPEL-1400, C-4N-H5HG-PIPEL-1400","C-4N-H5HG-PIPEL-1800: FS, C-4N-H5HG-PIPEL-1400: SS 3, C-4N-H5HG-PIPEL-1400: FF",2024-06-14 00:00:00,2024-07-23 00:00:00,39
